# Cronograma_257_Tareas_VR_Bateria.xml

How a schedule from MS Project XML changed from version to version. A marks actual dates.

## Version 1 (saved 2026-09-12, file Cronograma_257_ProjectLibre.xml)

Note of the change: chore: inicializar repositorio con estructura del proyecto Unity

| ID | WBS | Task | Duration | Start | Finish | Predecessors |
| --- | --- | --- | --- | --- | --- | --- |
| 1 | 1 | **D. Desarrollo VR y batería** | 10.25d | 2026-09-07 | 2026-09-22 |  |
| 2 |  | DP.1 — Crear el proyecto base en Unity y definir la versión que utilizará todo el equipo | 0.38d | 2026-09-07 | 2026-09-07 |  |
| 3 |  | DP.2 — Configurar repositorio y estructura inicial de carpetas del proyecto | 0.38d | 2026-09-07 | 2026-09-07 | 2 |
| 4 |  | DP.3 — Configurar control de versiones y reglas para evitar conflictos entre desarrolladores | 0.5d | 2026-09-07 | 2026-09-08 | 3 |
| 5 |  | DX.1 — Instalar y configurar paquetes XR necesarios para realidad virtual | 0.62d | 2026-09-07 | 2026-09-07 | 2 |
| 6 |  | DX.2 — Configurar OpenXR y compatibilidad con el visor VR seleccionado | 0.62d | 2026-09-08 | 2026-09-08 | 5 |
| 7 |  | DX.3 — Crear escena técnica inicial para realizar pruebas de VR | 0.38d | 2026-09-08 | 2026-09-08 | 6 |
| 8 |  | DX.4 — Configurar XR Origin, cámara y seguimiento de cabeza | 0.5d | 2026-09-09 | 2026-09-09 | 7 |
| 9 |  | DX.5 — Configurar seguimiento de los controles derecho e izquierdo | 0.5d | 2026-09-09 | 2026-09-09 | 8 |
| 10 |  | DX.6 — Comprobar escala, altura y posición del jugador dentro del entorno VR | 0.5d | 2026-09-09 | 2026-09-09 | 8 |
| 11 |  | DO — Implementar sistema para agarrar y soltar objetos con los controles | 1d | 2026-09-10 | 2026-09-10 | 9 |
| 12 |  | DB.1 — Crear versión provisional de las baquetas para pruebas | 0.38d | 2026-09-09 | 2026-09-09 | 7 |
| 13 |  | DB.2 — Configurar las baquetas como objetos interactuables | 0.62d | 2026-09-11 | 2026-09-11 | 11, 12 |
| 14 |  | DB.3 — Ajustar posición de agarre de cada baqueta en los controles VR | 0.5d | 2026-09-11 | 2026-09-14 | 13 |
| 15 |  | DT.1 — Crear batería provisional con objetos simples para comenzar pruebas | 0.62d | 2026-09-09 | 2026-09-09 | 7 |
| 16 |  | DT.2 — Definir todos los componentes interactivos de la batería: snare, kick, toms, hi-hat, crash y ride | 0.5d | 2026-09-09 | 2026-09-10 | 15 |
| 17 |  | DT.3 — Configurar colliders para cada componente de la batería | 1d | 2026-09-10 | 2026-09-11 | 16 |
| 18 |  | DG.1 — Crear sistema general de detección de golpe entre baqueta y batería | 1d | 2026-09-11 | 2026-09-14 | 13, 17 |
| 19 |  | DG.2 — Identificar automáticamente qué pieza de la batería fue golpeada | 1d | 2026-09-14 | 2026-09-15 | 18 |
| 20 |  | DG.3 — Detectar velocidad de movimiento de la baqueta antes del impacto | 1d | 2026-09-14 | 2026-09-15 | 18 |
| 21 |  | DG.4 — Convertir la velocidad de la baqueta en un valor de intensidad de golpe | 1d | 2026-09-15 | 2026-09-16 | 20 |
| 22 |  | DG.5 — Establecer niveles de intensidad suave, media y fuerte | 0.62d | 2026-09-16 | 2026-09-17 | 21 |
| 23 |  | DG.6 — Implementar sistema para evitar golpes duplicados provocados por una misma colisión | 1d | 2026-09-14 | 2026-09-15 | 18 |
| 24 |  | DH.1 — Configurar vibración háptica del controlador al golpear la batería | 0.62d | 2026-09-14 | 2026-09-15 | 18 |
| 25 |  | DH.2 — Ajustar la intensidad háptica de acuerdo con la fuerza del golpe | 0.5d | 2026-09-16 | 2026-09-17 | 21, 24 |
| 26 |  | DG.7 — Crear evento general DrumHit que informe instrumento, intensidad y tiempo del golpe | 1d | 2026-09-16 | 2026-09-17 | 19, 21 |
| 27 |  | DG.8 — Implementar soporte independiente para golpe con baqueta izquierda y derecha | 0.62d | 2026-09-17 | 2026-09-18 | 26 |
| 28 |  | DB.4 — Ajustar física de las baquetas para evitar vibraciones o movimientos extraños | 1d | 2026-09-14 | 2026-09-15 | 18 |
| 29 |  | DG.9 — Ajustar sensibilidad de las colisiones de batería | 1d | 2026-09-15 | 2026-09-16 | 28 |
| 30 |  | DT.4 — Incorporar modelo 3D definitivo de la batería | 1d | 2026-09-21 | 2026-09-22 | 186, 29, 188 |
| 31 |  | DT.5 — Reconfigurar colliders utilizando el modelo definitivo | 1d | 2026-09-07 | 2026-09-07 | 30 |
| 32 |  | DT.6 — Ajustar posición y dimensiones de batería para una postura cómoda en VR | 0.62d | 2026-09-14 | 2026-09-14 | 31, 87 |
| 33 |  | DR.1 — Realizar primera prueba completa de interacción física de la batería | 1d | 2026-09-18 | 2026-09-21 | 32, 4, 10, 14, 23, 25, 27, 185 |
| 34 |  | DR.2 — Corregir errores detectados durante la primera prueba de batería | 1d | 2026-09-21 | 2026-09-22 | 33 |
| 35 | 2 | **J. Juego de ritmo** | 17.88d | 2026-09-07 | 2026-10-01 |  |
| 36 |  | JA.1 — Definir técnicamente cómo funcionará el juego de ritmo | 1d | 2026-09-07 | 2026-09-07 |  |
| 37 |  | JA.2 — Definir los datos necesarios para representar una nota musical dentro del juego | 0.62d | 2026-09-08 | 2026-09-08 | 36 |
| 38 |  | JA.3 — Diseñar estructura de datos para canciones y beatmaps | 1d | 2026-09-08 | 2026-09-09 | 37 |
| 39 |  | JT.1 — Crear sistema de reloj musical independiente de los FPS | 1d | 2026-09-08 | 2026-09-08 | 36 |
| 40 |  | JT.2 — Implementar cálculo de BPM y duración de cada beat | 0.62d | 2026-09-09 | 2026-09-09 | 39 |
| 41 |  | JT.3 — Implementar cálculo de compases y subdivisiones rítmicas | 0.62d | 2026-09-09 | 2026-09-10 | 40 |
| 42 |  | JK — Crear sistema provisional de golpes utilizando teclado para desarrollar sin depender del VR | 0.62d | 2026-09-08 | 2026-09-09 | 37 |
| 43 |  | JB.1 — Crear prototipo de beatmap manual | 1d | 2026-09-09 | 2026-09-10 | 38 |
| 44 |  | JB.2 — Crear sistema que cargue un beatmap | 1d | 2026-09-09 | 2026-09-10 | 38 |
| 45 |  | JB.3 — Sincronizar beatmap con reproducción de música | 1d | 2026-09-10 | 2026-09-11 | 39, 44, 43 |
| 46 |  | JN.1 — Crear representación visual provisional de las notas | 1d | 2026-09-11 | 2026-09-14 | 45 |
| 47 |  | JN.2 — Crear sistema que indique qué componente de la batería debe golpearse | 1d | 2026-09-14 | 2026-09-15 | 46 |
| 48 |  | JW.1 — Definir ventanas temporales Perfect, Good y Miss | 0.62d | 2026-09-11 | 2026-09-14 | 45 |
| 49 |  | JW.2 — Programar detección de golpes correctos | 1d | 2026-09-14 | 2026-09-15 | 48, 42 |
| 50 |  | JW.3 — Programar detección de golpes anticipados | 0.62d | 2026-09-15 | 2026-09-15 | 49 |
| 51 |  | JW.4 — Programar detección de golpes atrasados | 0.62d | 2026-09-15 | 2026-09-15 | 49 |
| 52 |  | JW.5 — Programar detección de notas no golpeadas | 0.62d | 2026-09-15 | 2026-09-15 | 49 |
| 53 |  | JP.1 — Crear sistema básico de puntuación | 1d | 2026-09-15 | 2026-09-16 | 49, 50, 51, 52 |
| 54 |  | JP.2 — Crear sistema de combo o golpes consecutivos | 0.62d | 2026-09-16 | 2026-09-17 | 53 |
| 55 |  | JP.3 — Crear cálculo de precisión porcentual del usuario | 0.62d | 2026-09-16 | 2026-09-17 | 53 |
| 56 |  | JP.4 — Crear resumen de resultados al terminar una canción | 1d | 2026-09-23 | 2026-09-24 | 53, 154, 54, 55 |
| 57 |  | JI.1 — Integrar evento DrumHit de la batería VR con el juego de ritmo | 1d | 2026-09-17 | 2026-09-18 | 26, 49 |
| 58 |  | JI.2 — Sustituir controles provisionales de teclado por interacción VR | 0.62d | 2026-09-18 | 2026-09-21 | 57 |
| 59 |  | JI.3 — Implementar detección de intensidad del golpe dentro del juego | 1d | 2026-09-18 | 2026-09-21 | 21, 57 |
| 60 |  | JI.4 — Diseñar mecánicas en las que determinados golpes requieran distinta intensidad | 1d | 2026-09-25 | 2026-09-28 | 59, 107 |
| 61 |  | JF.1 — Crear feedback visual inmediato de acierto o error | 1d | 2026-09-15 | 2026-09-16 | 49, 156 |
| 62 |  | JF.2 — Crear feedback auditivo para aciertos, errores e interacción | 0.62d | 2026-09-15 | 2026-09-15 | 135, 49 |
| 63 |  | JC.1 — Implementar cuenta regresiva antes de iniciar una canción | 0.62d | 2026-09-11 | 2026-09-14 | 45 |
| 64 |  | JC.2 — Crear sistema de pausa y reanudación | 1d | 2026-09-22 | 2026-09-23 | 45, 152 |
| 65 |  | JC.3 — Crear sistema para reiniciar una actividad | 0.62d | 2026-09-23 | 2026-09-24 | 64 |
| 66 |  | JC.4 — Crear sistema para abandonar una actividad y regresar al menú | 0.62d | 2026-09-23 | 2026-09-24 | 64 |
| 67 |  | JL.1 — Crear diferentes niveles de dificultad | 1d | 2026-09-28 | 2026-09-29 | 108, 53 |
| 68 |  | JL.2 — Programar selección de dificultad antes de iniciar | 0.62d | 2026-09-29 | 2026-09-29 | 67, 149 |
| 69 |  | JM.1 — Crear modo libre sin puntuación ni notas obligatorias | 1d | 2026-09-17 | 2026-09-18 | 26 |
| 70 |  | JM.2 — Permitir seleccionar música de fondo en modo libre | 0.62d | 2026-09-18 | 2026-09-21 | 69, 113 |

| ID | WBS | Task | Duration | Start | Finish | Predecessors |
| --- | --- | --- | --- | --- | --- | --- |
| 71 |  | JM.3 — Permitir tocar sin música en modo libre | 0.38d | 2026-09-18 | 2026-09-18 | 69 |
| 72 |  | JY — Crear sistema de calibración de latencia entre golpe y música | 1d | 2026-09-21 | 2026-09-22 | 57, 134 |
| 73 |  | JW.6 — Ajustar ventanas de precisión después de pruebas de usuarios | 1d | 2026-09-09 | 2026-09-09 | 229 |
| 74 |  | JI.5 — Integrar juego de ritmo completo con flujo general de la experiencia | 2d | 2026-09-29 | 2026-10-01 | 68, 91, 162, 41, 47, 58, 60, 61, 62, 63, 65, 66 |
| 75 | 3 | **E. Experiencia emocional** | 10d | 2026-09-07 | 2026-09-18 |  |
| 76 |  | EO.1 — Definir objetivo general de la experiencia emocional | 0.5d | 2026-09-07 | 2026-09-07 |  |
| 77 |  | EO.2 — Definir alcance y límites del proyecto respecto al concepto de terapia | 0.5d | 2026-09-07 | 2026-09-07 | 76 |
| 78 |  | EB.1 — Buscar bibliografía científica sobre música y regulación emocional | 2d | 2026-09-07 | 2026-09-08 |  |
| 79 |  | EB.2 — Buscar bibliografía científica sobre percusión y expresión emocional | 2d | 2026-09-07 | 2026-09-08 |  |
| 80 |  | EB.3 — Buscar investigaciones sobre juegos de ritmo relacionados con bienestar y expresión emocional | 1d | 2026-09-07 | 2026-09-07 |  |
| 81 |  | EB.4 — Seleccionar estudios científicos que realmente sustentarán el proyecto | 1d | 2026-09-09 | 2026-09-09 | 78, 79, 80 |
| 82 |  | EB.5 — Crear matriz bibliográfica de artículos, objetivo, metodología y resultados | 2d | 2026-09-10 | 2026-09-11 | 81 |
| 83 |  | EE.1 — Definir qué emociones serán abordadas dentro de la simulación | 1d | 2026-09-10 | 2026-09-10 | 81 |
| 84 |  | EE.2 — Definir qué actividades se relacionarán con cada emoción | 1d | 2026-09-11 | 2026-09-11 | 83 |
| 85 |  | EE.3 — Determinar duración aproximada de una sesión | 0.62d | 2026-09-14 | 2026-09-14 | 84 |
| 86 |  | ER — Investigar postura, comodidad y ergonomía durante actividades de percusión VR | 1d | 2026-09-10 | 2026-09-10 | 81 |
| 87 |  | EG.1 — Redactar el guion de introducción general de la terapia | 1d | 2026-09-11 | 2026-09-11 | 77, 83 |
| 88 |  | EG.2 — Redactar las instrucciones específicas de la actividad terapéutica | 1d | 2026-09-14 | 2026-09-14 | 84, 87 |
| 89 |  | EF — Diseñar flujo completo de experiencia desde ingreso hasta finalización | 2d | 2026-09-15 | 2026-09-16 | 84, 87, 88, 85 |
| 90 |  | EG.3 — Redactar el guion del tutorial introductorio | 1d | 2026-09-17 | 2026-09-17 | 88, 89 |
| 91 |  | EI — Definir cómo se utilizarán el ritmo y la intensidad de los golpes para expresar las emociones seleccionadas | 1d | 2026-09-14 | 2026-09-14 | 83, 84 |
| 92 |  | EG.4 — Redactar el guion de cierre de la experiencia terapéutica | 0.62d | 2026-09-17 | 2026-09-17 | 89 |
| 93 |  | ET.1 — Redactar la fundamentación teórica de la propuesta terapéutica | 3d | 2026-09-15 | 2026-09-17 | 82, 91 |
| 94 |  | ET.2 — Revisar y actualizar la fundamentación según el funcionamiento final del prototipo | 1d | 2026-09-18 | 2026-09-18 | 93, 229 |
| 95 | 4 | **M. Música** | 22.25d | 2026-09-07 | 2026-10-08 |  |
| 96 |  | MR.1 — Investigar características musicales adecuadas para la experiencia planteada | 2d | 2026-09-14 | 2026-09-15 | 82 |
| 97 |  | MR.2 — Analizar BPM utilizados en las referencias encontradas | 1d | 2026-09-16 | 2026-09-16 | 96 |
| 98 |  | MR.3 — Analizar compases y patrones rítmicos apropiados para principiantes | 1d | 2026-09-16 | 2026-09-16 | 96 |
| 99 |  | MR.4 — Definir estilos musicales que utilizará el proyecto | 1d | 2026-09-17 | 2026-09-17 | 96, 97, 98 |
| 100 |  | MR.5 — Definir duración de las pistas musicales | 0.62d | 2026-09-18 | 2026-09-18 | 86, 99 |
| 101 |  | ML.1 — Determinar si se utilizará música original, libre de derechos o licenciada | 0.5d | 2026-09-07 | 2026-09-07 |  |
| 102 |  | ML.2 — Investigar licencias de las pistas o recursos musicales considerados | 1d | 2026-09-07 | 2026-09-08 | 101 |
| 103 |  | MP.1 — Crear o seleccionar primera pista musical de prueba | 2d | 2026-09-18 | 2026-09-22 | 99, 101, 100 |
| 104 |  | MP.2 — Determinar BPM exacto de la primera pista | 0.38d | 2026-09-22 | 2026-09-22 | 103 |
| 105 |  | MP.3 — Identificar estructura musical de la primera pista | 0.62d | 2026-09-22 | 2026-09-23 | 103 |
| 106 |  | MB.1 — Crear patrón básico de batería para la primera pista | 1d | 2026-09-23 | 2026-09-24 | 105 |
| 107 |  | MB.2 — Definir momentos donde se utilizarán golpes suaves, medios o fuertes | 1d | 2026-09-24 | 2026-09-25 | 106 |
| 108 |  | MB.3 — Crear versiones de dificultad Tutorial, Fácil e Intermedio del patrón | 2d | 2026-09-24 | 2026-09-28 | 106 |
| 109 |  | MB.4 — Convertir patrón rítmico en información utilizable para el beatmap | 1d | 2026-09-28 | 2026-09-29 | 108, 104 |
| 110 |  | MB.5 — Probar primer beatmap junto con el desarrollador | 1d | 2026-09-29 | 2026-09-30 | 45, 109 |
| 111 |  | MB.6 — Corregir patrones que resulten poco cómodos o confusos | 1d | 2026-09-30 | 2026-10-01 | 110 |
| 112 |  | MA.1 — Crear o seleccionar pistas adicionales | 3d | 2026-10-01 | 2026-10-06 | 111 |
| 113 |  | MA.2 — Preparar pistas para modo libre | 1d | 2026-09-07 | 2026-09-07 |  |
| 114 |  | MN.1 — Normalizar formato, frecuencia de muestreo y volumen de todas las pistas | 1d | 2026-10-06 | 2026-10-07 | 112 |
| 115 |  | MN.2 — Documentar BPM, duración, compás y finalidad de cada pista | 1d | 2026-10-07 | 2026-10-08 | 114 |
| 116 | 5 | **S. Sonido** | 13.88d | 2026-09-07 | 2026-09-25 |  |
| 117 |  | SP.1 — Crear lista de todos los sonidos necesarios para el proyecto | 0.62d | 2026-09-07 | 2026-09-07 |  |
| 118 |  | SP.2 — Investigar bancos de sonidos compatibles con la licencia del proyecto | 1d | 2026-09-07 | 2026-09-08 | 117 |
| 119 |  | SB.1 — Buscar sonido de kick | 0.38d | 2026-09-08 | 2026-09-08 | 118 |
| 120 |  | SB.2 — Buscar sonido de snare | 0.38d | 2026-09-08 | 2026-09-08 | 118 |
| 121 |  | SB.3 — Buscar sonidos de toms | 0.5d | 2026-09-08 | 2026-09-09 | 118 |
| 122 |  | SB.4 — Buscar sonidos de hi-hat abierto y cerrado | 0.5d | 2026-09-08 | 2026-09-09 | 118 |
| 123 |  | SB.5 — Buscar sonidos de crash y ride | 0.5d | 2026-09-08 | 2026-09-09 | 118 |
| 124 |  | SB.6 — Seleccionar tres niveles de intensidad para cada componente principal | 2d | 2026-09-09 | 2026-09-11 | 119, 120, 121, 122, 123 |
| 125 |  | SE.1 — Editar inicio y final de cada muestra para evitar retrasos | 1d | 2026-09-11 | 2026-09-14 | 124 |
| 126 |  | SE.2 — Eliminar ruidos innecesarios de las muestras | 1d | 2026-09-11 | 2026-09-14 | 124 |
| 127 |  | SE.3 — Normalizar volumen de las muestras de batería | 1d | 2026-09-14 | 2026-09-15 | 125 |
| 128 |  | SE.4 — Exportar sonidos en formato apropiado para Unity | 0.62d | 2026-09-15 | 2026-09-15 | 127, 126 |
| 129 |  | SM.1 — Crear Audio Mixer dentro de Unity | 0.62d | 2026-09-15 | 2026-09-16 | 128 |
| 130 |  | SM.2 — Separar canales de batería, música, ambiente e interfaz | 0.62d | 2026-09-16 | 2026-09-16 | 129 |
| 131 |  | SI.1 — Integrar sonidos de batería con sistema DrumHit | 1d | 2026-09-17 | 2026-09-18 | 26, 128 |
| 132 |  | SI.2 — Asignar sonidos diferentes según intensidad del golpe | 1d | 2026-09-18 | 2026-09-21 | 22, 131 |
| 133 |  | SI.3 — Configurar volumen espacial de la batería dentro del entorno VR | 1d | 2026-09-18 | 2026-09-21 | 131 |
| 134 |  | SI.4 — Medir retraso perceptible entre impacto y reproducción del sonido | 1d | 2026-09-18 | 2026-09-21 | 131 |
| 135 |  | SU — Buscar y preparar sonidos para botones, aciertos y errores | 1d | 2026-09-08 | 2026-09-09 | 118 |
| 136 |  | SA.1 — Buscar o producir sonidos ambientales para el escenario | 1d | 2026-09-15 | 2026-09-16 | 179 |
| 137 |  | SA.2 — Integrar ambiente sonoro con escenario final | 1d | 2026-09-23 | 2026-09-24 | 136, 190 |
| 138 |  | SC.1 — Crear controles independientes de volumen para música, batería y ambiente | 1d | 2026-09-23 | 2026-09-24 | 130, 151 |
| 139 |  | SC.2 — Realizar mezcla general de audio | 1d | 2026-09-24 | 2026-09-25 | 137, 138, 133 |
| 140 | 6 | **I. Interfaz / UX/UI** | 13.62d | 2026-09-09 | 2026-09-29 |  |

| ID | WBS | Task | Duration | Start | Finish | Predecessors |
| --- | --- | --- | --- | --- | --- | --- |
| 141 |  | IM.1 — Definir mapa completo de pantallas de la aplicación | 1d | 2026-09-17 | 2026-09-18 | 91, 92 |
| 142 |  | IM.2 — Definir navegación entre menú, experiencia guiada, juego y modo libre | 1d | 2026-09-18 | 2026-09-21 | 141 |
| 143 |  | IW.1 — Crear wireframe del menú principal | 0.62d | 2026-09-21 | 2026-09-22 | 142 |
| 144 |  | IW.2 — Crear wireframe de selección de modo | 0.5d | 2026-09-21 | 2026-09-22 | 142 |
| 145 |  | IW.3 — Crear wireframe de selección emocional | 0.62d | 2026-09-21 | 2026-09-22 | 88, 142 |
| 146 |  | IW.4 — Crear wireframe del tutorial | 1d | 2026-09-21 | 2026-09-22 | 89, 142 |
| 147 |  | IW.5 — Crear wireframe de pantalla previa al juego | 0.5d | 2026-09-21 | 2026-09-22 | 142 |
| 148 |  | IW.6 — Crear wireframe de resultados | 0.5d | 2026-09-21 | 2026-09-22 | 142 |
| 149 |  | IS.1 — Crear interfaz para selección de canción y dificultad | 1d | 2026-09-22 | 2026-09-23 | 143 |
| 150 |  | IS.2 — Diseñar menú de configuración | 1d | 2026-09-22 | 2026-09-23 | 143 |
| 151 |  | IS.3 — Diseñar controles para volumen de música, batería y ambiente | 0.62d | 2026-09-23 | 2026-09-23 | 150 |
| 152 |  | IS.4 — Diseñar menú de pausa | 0.62d | 2026-09-22 | 2026-09-22 | 143 |
| 153 |  | IS.5 — Diseñar pantalla de confirmación para salir o reiniciar | 0.5d | 2026-09-22 | 2026-09-23 | 152 |
| 154 |  | IS.6 — Diseñar presentación de resultados finales | 1d | 2026-09-22 | 2026-09-23 | 148 |
| 155 |  | IE — Definir estilo visual general de la interfaz | 1d | 2026-09-09 | 2026-09-09 | 175 |
| 156 |  | IG.1 — Diseñar indicadores visuales de Perfect, Good y Miss | 1d | 2026-09-10 | 2026-09-10 | 155 |
| 157 |  | IG.2 — Diseñar representación definitiva de las notas del juego | 1d | 2026-09-14 | 2026-09-15 | 155, 46 |
| 158 |  | IG.3 — Diseñar indicadores para señalar el tambor que debe golpearse | 1d | 2026-09-15 | 2026-09-16 | 157 |
| 159 |  | IT.1 — Diseñar tutorial visual sobre cómo sujetar las baquetas | 1d | 2026-09-11 | 2026-09-14 | 13 |
| 160 |  | IT.2 — Diseñar tutorial para explicar cómo seguir el ritmo | 1d | 2026-09-15 | 2026-09-16 | 49 |
| 161 |  | IT.3 — Diseñar tutorial para explicar la intensidad de los golpes | 1d | 2026-09-17 | 2026-09-18 | 22 |
| 162 |  | IT.4 — Implementar flujo del tutorial completo | 2d | 2026-09-18 | 2026-09-22 | 159, 161, 90 |
| 163 |  | II.1 — Importar recursos gráficos de Canva/Figma a Unity | 1d | 2026-09-22 | 2026-09-23 | 155, 144, 145, 146, 147 |
| 164 |  | II.2 — Implementar menú principal dentro de Unity | 1d | 2026-09-23 | 2026-09-24 | 163 |
| 165 |  | II.3 — Implementar interacción con botones utilizando controlador VR | 1d | 2026-09-24 | 2026-09-25 | 9, 164 |
| 166 |  | II.4 — Implementar configuración de volumen | 1d | 2026-09-25 | 2026-09-28 | 138, 165 |
| 167 |  | II.5 — Implementar menú de pausa | 1d | 2026-09-25 | 2026-09-28 | 152, 165, 153 |
| 168 |  | II.6 — Implementar pantalla de resultados | 1d | 2026-09-23 | 2026-09-24 | 56, 154 |
| 169 |  | IR.1 — Revisar legibilidad de textos dentro del visor VR | 1d | 2026-09-25 | 2026-09-28 | 165 |
| 170 |  | IR.2 — Revisar tamaño, distancia y posición de paneles | 1d | 2026-09-28 | 2026-09-29 | 169 |
| 171 |  | IR.3 — Corregir problemas de navegación encontrados en pruebas | 1d | 2026-09-09 | 2026-09-09 | 229 |
| 172 | 7 | **A. Entorno 3D y assets** | 18.25d | 2026-09-07 | 2026-10-02 |  |
| 173 |  | AE.1 — Investigar qué tipo de entorno puede favorecer la experiencia propuesta | 2d | 2026-09-14 | 2026-09-15 | 82 |
| 174 |  | AE.2 — Comparar posibles ambientes: naturaleza, estudio musical, espacio minimalista y otros | 1d | 2026-09-07 | 2026-09-07 | 173 |
| 175 |  | AE.3 — Definir dirección artística general del escenario | 1d | 2026-09-08 | 2026-09-08 | 174 |
| 176 |  | AC.1 — Investigar teoría del color y su relación con la percepción emocional, concentración y confort visual dentro de entornos virtuales | 1d | 2026-09-10 | 2026-09-10 | 81 |
| 177 |  | AC.2 — Definir paleta de colores y criterios para aplicarla en los modelos 3D y el entorno según la experiencia emocional propuesta | 0.62d | 2026-09-11 | 2026-09-11 | 175, 176, 83 |
| 178 |  | AC.3 — Crear moodboard visual del escenario incorporando la dirección artística y la paleta de colores seleccionada | 1d | 2026-09-11 | 2026-09-14 | 175, 177 |
| 179 |  | AA.1 — Crear lista de todos los assets 3D necesarios | 0.62d | 2026-09-14 | 2026-09-15 | 178 |
| 180 |  | AA.2 — Definir límites de polígonos y rendimiento adecuados para VR | 1d | 2026-09-08 | 2026-09-09 | 6 |
| 181 |  | AA.3 — Buscar assets de entorno compatibles con el estilo elegido | 2d | 2026-09-15 | 2026-09-17 | 179, 180 |
| 182 |  | AA.4 — Revisar licencias de los assets seleccionados | 1d | 2026-09-17 | 2026-09-18 | 181 |
| 183 |  | AB.1 — Buscar modelo de batería adecuado | 1d | 2026-09-15 | 2026-09-16 | 179 |
| 184 |  | AB.2 — Revisar licencia del modelo de batería | 0.38d | 2026-09-16 | 2026-09-16 | 183 |
| 185 |  | AB.3 — Buscar o crear modelos definitivos de baquetas | 0.62d | 2026-09-15 | 2026-09-15 | 179 |
| 186 |  | AB.4 — Optimizar modelo de batería para VR | 1d | 2026-09-16 | 2026-09-17 | 183, 184 |
| 187 |  | AB.5 — Optimizar materiales y texturas de la batería considerando la paleta de colores establecida | 1d | 2026-09-17 | 2026-09-18 | 186, 177 |
| 188 |  | AB.6 — Preparar batería definitiva para integración en Unity | 0.62d | 2026-09-18 | 2026-09-21 | 187 |
| 189 |  | AP.1 — Crear primera composición del escenario en Unity | 2d | 2026-09-18 | 2026-09-22 | 181, 182 |
| 190 |  | AP.2 — Determinar posición del jugador y batería dentro del escenario | 1d | 2026-09-22 | 2026-09-23 | 189, 86 |
| 191 |  | AP.3 — Aplicar la paleta de colores seleccionada a modelos, materiales y elementos principales del escenario | 1d | 2026-09-22 | 2026-09-23 | 177, 189 |
| 192 |  | AL.1 — Configurar iluminación inicial considerando la paleta de colores establecida | 1d | 2026-09-23 | 2026-09-24 | 189, 191 |
| 193 |  | AL.2 — Configurar iluminación definitiva y ambiente visual | 1d | 2026-09-24 | 2026-09-25 | 192 |
| 194 |  | AD.1 — Añadir elementos ambientales secundarios | 1d | 2026-09-25 | 2026-09-28 | 193 |
| 195 |  | AD.2 — Reducir objetos que puedan distraer al usuario | 0.62d | 2026-09-28 | 2026-09-28 | 194 |
| 196 |  | AS — Crear límites visuales de seguridad del espacio de interacción | 1d | 2026-09-23 | 2026-09-24 | 190 |
| 197 |  | AO.1 — Optimizar texturas del escenario para VR | 1d | 2026-09-28 | 2026-09-29 | 194 |
| 198 |  | AO.2 — Configurar LOD en objetos que lo requieran | 1d | 2026-09-29 | 2026-09-30 | 197 |
| 199 |  | AO.3 — Revisar cantidad de luces en tiempo real | 0.62d | 2026-09-25 | 2026-09-25 | 193 |
| 200 |  | AO.4 — Preparar iluminación horneada cuando sea conveniente | 1d | 2026-09-25 | 2026-09-28 | 199 |
| 201 |  | AO.5 — Evaluar FPS del escenario en el visor objetivo | 1d | 2026-09-30 | 2026-10-01 | 200, 198 |
| 202 |  | AO.6 — Optimizar escenario hasta cumplir rendimiento esperado | 1d | 2026-10-01 | 2026-10-02 | 201 |
| 203 |  | AR.1 — Revisar ambiente visual con el responsable de experiencia emocional para comprobar que colores, iluminación y escenario sean coherentes con la experiencia propuesta | 0.62d | 2026-09-25 | 2026-09-25 | 193, 89, 91 |
| 204 |  | AR.2 — Realizar ajustes finales de ambientación | 1d | 2026-09-28 | 2026-09-29 | 203, 195 |
| 205 | 8 | **Q. QA, documentación y gestión** | 29.25d | 2026-09-07 | 2026-10-19 |  |
| 206 |  | QP.1 — Definir alcance general del proyecto | 1d | 2026-09-07 | 2026-09-07 |  |
| 207 |  | QP.2 — Definir objetivos generales y específicos | 1d | 2026-09-08 | 2026-09-08 | 206 |
| 208 |  | QP.3 — Identificar entregables principales del proyecto | 0.62d | 2026-09-09 | 2026-09-09 | 206, 207 |
| 209 |  | QP.4 — Elaborar EDT/WBS completa de tareas | 2d | 2026-09-09 | 2026-09-11 | 208 |
| 210 |  | QP.5 — Asignar responsables principales para cada tarea | 1d | 2026-09-11 | 2026-09-14 | 209 |

| ID | Task | Duration | Start | Finish | Predecessors |
| --- | --- | --- | --- | --- | --- |
| 211 | QP.6 — Establecer dependencias entre tareas | 1d | 2026-09-11 | 2026-09-14 | 209 |
| 212 | QP.7 — Crear cronograma inicial del proyecto | 1d | 2026-09-14 | 2026-09-15 | 209, 211, 210 |
| 213 | QP.8 — Crear diagrama de Gantt | 1d | 2026-09-15 | 2026-09-16 | 212 |
| 214 | QP.9 — Identificar ruta crítica del proyecto | 1d | 2026-09-16 | 2026-09-17 | 213 |
| 215 | QG.1 — Crear lista de riesgos técnicos, académicos y de tiempo | 1d | 2026-09-17 | 2026-09-18 | 212, 214 |
| 216 | QG.2 — Definir acciones de mitigación para cada riesgo | 1d | 2026-09-18 | 2026-09-21 | 215 |
| 217 | QR.1 — Definir requisitos funcionales de la simulación | 2d | 2026-09-08 | 2026-09-09 | 206 |
| 218 | QR.2 — Definir requisitos no funcionales | 1d | 2026-09-10 | 2026-09-10 | 217 |
| 219 | QR.3 — Crear criterios de aceptación para cada requisito | 2d | 2026-09-11 | 2026-09-14 | 217, 218 |
| 220 | QR.4 — Crear matriz de trazabilidad entre requisitos y funcionalidades | 1d | 2026-09-15 | 2026-09-15 | 219 |
| 221 | QE.1 — Establecer formato para documentar errores | 0.62d | 2026-09-07 | 2026-09-07 |  |
| 222 | QT.1 — Crear plan de pruebas de batería VR | 1d | 2026-09-16 | 2026-09-16 | 16, 220 |
| 223 | QT.2 — Crear plan de pruebas del juego de ritmo | 1d | 2026-09-16 | 2026-09-16 | 36, 220 |
| 224 | QT.3 — Crear plan de pruebas de interfaz | 1d | 2026-09-18 | 2026-09-21 | 141, 220 |
| 225 | QT.4 — Crear plan de pruebas de audio | 0.62d | 2026-09-16 | 2026-09-16 | 117, 220 |
| 226 | QT.5 — Crear plan de pruebas de rendimiento VR | 1d | 2026-09-16 | 2026-09-16 | 178, 220 |
| 227 | QT.6 — Realizar pruebas unitarias de batería | 1d | 2026-09-21 | 2026-09-22 | 33, 222 |
| 228 | QT.7 — Realizar pruebas del sistema de ritmo | 1d | 2026-10-01 | 2026-10-02 | 74, 223 |
| 229 | QT.8 — Realizar pruebas con usuarios del prototipo integrado | 2d | 2026-09-07 | 2026-09-08 |  |
| 230 | QE.2 — Registrar errores, observaciones y sugerencias de usuarios | 1d | 2026-09-09 | 2026-09-09 | 229, 221 |
| 231 | QE.3 — Clasificar errores por gravedad y prioridad | 0.62d | 2026-09-10 | 2026-09-10 | 230 |
| 232 | QE.4 — Asignar errores a las áreas correspondientes | 0.38d | 2026-09-10 | 2026-09-10 | 231 |
| 233 | QE.5 — Verificar corrección de errores críticos | 1d | 2026-09-11 | 2026-09-11 | 232, 73, 171 |
| 234 | QV.1 — Realizar prueba completa desde inicio hasta final de una sesión | 1d | 2026-09-14 | 2026-09-14 | 233 |
| 235 | QV.2 — Evaluar estabilidad y presencia de cierres inesperados | 1d | 2026-09-15 | 2026-09-15 | 234 |
| 236 | QV.3 — Medir FPS del proyecto en el visor objetivo | 0.62d | 2026-09-25 | 2026-09-28 | 199, 234 |
| 237 | QV.4 — Evaluar latencia entre golpe físico, sonido y detección | 1d | 2026-09-22 | 2026-09-23 | 34, 134, 72 |
| 238 | QV.5 — Evaluar comodidad de la experiencia VR | 1d | 2026-09-09 | 2026-09-09 | 229 |
| 239 | QC.1 — Registrar versiones importantes del proyecto | 0d | 2026-09-07 | 2026-09-07 | 3 |
| 240 | QC.2 — Documentar avances semanales | 0.25d | 2026-09-07 | 2026-09-07 |  |
| 241 | QC.3 — Mantener actualizada la bibliografía del proyecto | 0.25d | 2026-09-09 | 2026-09-09 | 78 |
| 242 | QC.4 — Mantener registro de assets y sus licencias | 0.38d | 2026-09-09 | 2026-09-09 | 180 |
| 243 | QC.5 — Mantener registro de música y licencias utilizadas | 0.25d | 2026-09-08 | 2026-09-08 | 102 |
| 244 | QD.1 — Crear documentación de arquitectura del software | 2d | 2026-10-01 | 2026-10-05 | 26, 74 |
| 245 | QD.2 — Crear diagrama del flujo general de la aplicación | 1d | 2026-09-21 | 2026-09-22 | 91, 142 |
| 246 | QD.3 — Documentar funcionamiento del sistema de detección de golpes | 1d | 2026-09-17 | 2026-09-18 | 26 |
| 247 | QD.4 — Documentar funcionamiento del juego de ritmo | 1d | 2026-10-01 | 2026-10-02 | 74 |
| 248 | QD.5 — Documentar sistema de intensidad de los golpes | 0.62d | 2026-09-21 | 2026-09-22 | 21, 132 |
| 249 | QD.6 — Documentar selección y fundamentación del entorno virtual | 1d | 2026-10-01 | 2026-10-02 | 201 |
| 250 | QD.7 — Documentar fundamentación de la música utilizada | 1d | 2026-10-08 | 2026-10-09 | 115 |
| 251 | QD.8 — Documentar diseño y funcionamiento de la interfaz | 1d | 2026-09-29 | 2026-09-30 | 170 |
| 252 | QM.1 — Elaborar manual básico de usuario | 2d | 2026-09-15 | 2026-09-16 | 234 |
| 253 | QM.2 — Elaborar manual técnico de instalación y ejecución | 1d | 2026-09-15 | 2026-09-15 | 234 |
| 254 | QF.1 — Preparar capturas de pantalla del proyecto | 0.62d | 2026-09-15 | 2026-09-15 | 234 |
| 255 | QF.2 — Grabar evidencia en video del funcionamiento | 1d | 2026-09-15 | 2026-09-15 | 234 |
| 256 | QI.1 — Analizar resultados obtenidos durante las pruebas | 2d | 2026-09-10 | 2026-09-11 | 229, 230 |
| 257 | QI.2 — Redactar apartado de resultados del proyecto | 2d | 2026-09-14 | 2026-09-15 | 256 |
| 258 | QI.3 — Redactar conclusiones y limitaciones | 1d | 2026-09-16 | 2026-09-16 | 257 |
| 259 | QI.4 — Integrar todas las secciones del informe final | 2d | 2026-10-09 | 2026-10-13 | 93, 244, 257, 258, 94, 216, 240, 245, 246, 247, 248, 249, 250, 251 |
| 260 | QI.5 — Revisar redacción, ortografía, referencias y formato | 2d | 2026-10-13 | 2026-10-15 | 259, 241, 242, 243 |
| 261 | QB.1 — Generar build candidata a versión final | 1d | 2026-09-28 | 2026-09-29 | 233, 235, 236, 237, 238, 239 |
| 262 | QB.2 — Probar build final en el visor VR objetivo | 1d | 2026-09-29 | 2026-09-30 | 261 |
| 263 | QB.3 — Corregir errores críticos encontrados en build final | 1d | 2026-09-30 | 2026-10-01 | 262 |
| 264 | QB.4 — Generar versión definitiva del videojuego | 1d | 2026-10-01 | 2026-10-02 | 263 |
| 265 | QX — Preparar presentación y demostración final del proyecto | 2d | 2026-10-15 | 2026-10-19 | 259, 264, 252, 253, 254, 255, 260 |

## Version 2 (saved 2026-09-19, file Cronograma_257_ProjectLibre.xml)

Note of the change: docs: planes integrados de costos, calidad y riesgos

Last finish stays 2026-10-19.

Changed:

| ID | Task | Other |
| --- | --- | --- |
| 2 | DP.1 — Crear el proyecto base en Unity y definir la versión que utilizará todo el equipo | resources Misael → Misael — Desarrollador de realidad virtual |
| 3 | DP.2 — Configurar repositorio y estructura inicial de carpetas del proyecto | resources Misael → Misael — Desarrollador de realidad virtual |
| 4 | DP.3 — Configurar control de versiones y reglas para evitar conflictos entre desarrolladores | resources Misael → Misael — Desarrollador de realidad virtual |
| 5 | DX.1 — Instalar y configurar paquetes XR necesarios para realidad virtual | resources Misael → Misael — Desarrollador de realidad virtual |
| 6 | DX.2 — Configurar OpenXR y compatibilidad con el visor VR seleccionado | resources Misael → Misael — Desarrollador de realidad virtual |
| 7 | DX.3 — Crear escena técnica inicial para realizar pruebas de VR | resources Misael → Misael — Desarrollador de realidad virtual |
| 8 | DX.4 — Configurar XR Origin, cámara y seguimiento de cabeza | resources Misael → Misael — Desarrollador de realidad virtual |
| 9 | DX.5 — Configurar seguimiento de los controles derecho e izquierdo | resources Misael → Misael — Desarrollador de realidad virtual |
| 10 | DX.6 — Comprobar escala, altura y posición del jugador dentro del entorno VR | resources Misael → Misael — Desarrollador de realidad virtual |
| 11 | DO — Implementar sistema para agarrar y soltar objetos con los controles | resources Misael → Misael — Desarrollador de realidad virtual |
| 12 | DB.1 — Crear versión provisional de las baquetas para pruebas | resources Misael → Misael — Desarrollador de realidad virtual |
| 13 | DB.2 — Configurar las baquetas como objetos interactuables | resources Misael → Misael — Desarrollador de realidad virtual |
| 14 | DB.3 — Ajustar posición de agarre de cada baqueta en los controles VR | resources Misael → Misael — Desarrollador de realidad virtual |
| 15 | DT.1 — Crear batería provisional con objetos simples para comenzar pruebas | resources Misael → Misael — Desarrollador de realidad virtual |
| 16 | DT.2 — Definir todos los componentes interactivos de la batería: snare, kick, toms, hi-hat, crash y ride | resources Misael → Misael — Desarrollador de realidad virtual |
| 17 | DT.3 — Configurar colliders para cada componente de la batería | resources Misael → Misael — Desarrollador de realidad virtual |
| 18 | DG.1 — Crear sistema general de detección de golpe entre baqueta y batería | resources Misael → Misael — Desarrollador de realidad virtual |
| 19 | DG.2 — Identificar automáticamente qué pieza de la batería fue golpeada | resources Misael → Misael — Desarrollador de realidad virtual |
| 20 | DG.3 — Detectar velocidad de movimiento de la baqueta antes del impacto | resources Misael → Misael — Desarrollador de realidad virtual |
| 21 | DG.4 — Convertir la velocidad de la baqueta en un valor de intensidad de golpe | resources Misael → Misael — Desarrollador de realidad virtual |
| 22 | DG.5 — Establecer niveles de intensidad suave, media y fuerte | resources Misael → Misael — Desarrollador de realidad virtual |
| 23 | DG.6 — Implementar sistema para evitar golpes duplicados provocados por una misma colisión | resources Misael → Misael — Desarrollador de realidad virtual |
| 24 | DH.1 — Configurar vibración háptica del controlador al golpear la batería | resources Misael → Misael — Desarrollador de realidad virtual |
| 25 | DH.2 — Ajustar la intensidad háptica de acuerdo con la fuerza del golpe | resources Misael → Misael — Desarrollador de realidad virtual |
| 26 | DG.7 — Crear evento general DrumHit que informe instrumento, intensidad y tiempo del golpe | resources Misael → Misael — Desarrollador de realidad virtual |
| 27 | DG.8 — Implementar soporte independiente para golpe con baqueta izquierda y derecha | resources Misael → Misael — Desarrollador de realidad virtual |
| 28 | DB.4 — Ajustar física de las baquetas para evitar vibraciones o movimientos extraños | resources Misael → Misael — Desarrollador de realidad virtual |
| 29 | DG.9 — Ajustar sensibilidad de las colisiones de batería | resources Misael → Misael — Desarrollador de realidad virtual |
| 30 | DT.4 — Incorporar modelo 3D definitivo de la batería | resources Misael → Misael — Desarrollador de realidad virtual |
| 31 | DT.5 — Reconfigurar colliders utilizando el modelo definitivo | resources Misael → Misael — Desarrollador de realidad virtual |
| 32 | DT.6 — Ajustar posición y dimensiones de batería para una postura cómoda en VR | resources Misael → Misael — Desarrollador de realidad virtual |
| 33 | DR.1 — Realizar primera prueba completa de interacción física de la batería | resources Misael → Misael — Desarrollador de realidad virtual |
| 34 | DR.2 — Corregir errores detectados durante la primera prueba de batería | resources Misael → Misael — Desarrollador de realidad virtual |
| 36 | JA.1 — Definir técnicamente cómo funcionará el juego de ritmo | resources Benjamín → Benjamín — Desarrollador de gameplay |
| 37 | JA.2 — Definir los datos necesarios para representar una nota musical dentro del juego | resources Benjamín → Benjamín — Desarrollador de gameplay |
| 38 | JA.3 — Diseñar estructura de datos para canciones y beatmaps | resources Benjamín → Benjamín — Desarrollador de gameplay |
| 39 | JT.1 — Crear sistema de reloj musical independiente de los FPS | resources Benjamín → Benjamín — Desarrollador de gameplay |
| 40 | JT.2 — Implementar cálculo de BPM y duración de cada beat | resources Benjamín → Benjamín — Desarrollador de gameplay |
| 41 | JT.3 — Implementar cálculo de compases y subdivisiones rítmicas | resources Benjamín → Benjamín — Desarrollador de gameplay |
| 42 | JK — Crear sistema provisional de golpes utilizando teclado para desarrollar sin depender del VR | resources Benjamín → Benjamín — Desarrollador de gameplay |
| 43 | JB.1 — Crear prototipo de beatmap manual | resources Benjamín → Benjamín — Desarrollador de gameplay |
| 44 | JB.2 — Crear sistema que cargue un beatmap | resources Benjamín → Benjamín — Desarrollador de gameplay |
| 45 | JB.3 — Sincronizar beatmap con reproducción de música | resources Benjamín → Benjamín — Desarrollador de gameplay |
| 46 | JN.1 — Crear representación visual provisional de las notas | resources Benjamín → Benjamín — Desarrollador de gameplay |
| 47 | JN.2 — Crear sistema que indique qué componente de la batería debe golpearse | resources Benjamín → Benjamín — Desarrollador de gameplay |
| 48 | JW.1 — Definir ventanas temporales Perfect, Good y Miss | resources Benjamín → Benjamín — Desarrollador de gameplay |
| 49 | JW.2 — Programar detección de golpes correctos | resources Benjamín → Benjamín — Desarrollador de gameplay |
| 50 | JW.3 — Programar detección de golpes anticipados | resources Benjamín → Benjamín — Desarrollador de gameplay |
| 51 | JW.4 — Programar detección de golpes atrasados | resources Benjamín → Benjamín — Desarrollador de gameplay |
| 52 | JW.5 — Programar detección de notas no golpeadas | resources Benjamín → Benjamín — Desarrollador de gameplay |
| 53 | JP.1 — Crear sistema básico de puntuación | resources Benjamín → Benjamín — Desarrollador de gameplay |
| 54 | JP.2 — Crear sistema de combo o golpes consecutivos | resources Benjamín → Benjamín — Desarrollador de gameplay |
| 55 | JP.3 — Crear cálculo de precisión porcentual del usuario | resources Benjamín → Benjamín — Desarrollador de gameplay |
| 56 | JP.4 — Crear resumen de resultados al terminar una canción | resources Benjamín → Benjamín — Desarrollador de gameplay |
| 57 | JI.1 — Integrar evento DrumHit de la batería VR con el juego de ritmo | resources Benjamín → Benjamín — Desarrollador de gameplay |
| 58 | JI.2 — Sustituir controles provisionales de teclado por interacción VR | resources Benjamín → Benjamín — Desarrollador de gameplay |
| 59 | JI.3 — Implementar detección de intensidad del golpe dentro del juego | resources Benjamín → Benjamín — Desarrollador de gameplay |
| 60 | JI.4 — Diseñar mecánicas en las que determinados golpes requieran distinta intensidad | resources Benjamín → Benjamín — Desarrollador de gameplay |
| 61 | JF.1 — Crear feedback visual inmediato de acierto o error | resources Benjamín → Benjamín — Desarrollador de gameplay |
| 62 | JF.2 — Crear feedback auditivo para aciertos, errores e interacción | resources Benjamín → Benjamín — Desarrollador de gameplay |
| 63 | JC.1 — Implementar cuenta regresiva antes de iniciar una canción | resources Benjamín → Benjamín — Desarrollador de gameplay |
| 64 | JC.2 — Crear sistema de pausa y reanudación | resources Benjamín → Benjamín — Desarrollador de gameplay |
| 65 | JC.3 — Crear sistema para reiniciar una actividad | resources Benjamín → Benjamín — Desarrollador de gameplay |
| 66 | JC.4 — Crear sistema para abandonar una actividad y regresar al menú | resources Benjamín → Benjamín — Desarrollador de gameplay |
| 67 | JL.1 — Crear diferentes niveles de dificultad | resources Benjamín → Benjamín — Desarrollador de gameplay |
| 68 | JL.2 — Programar selección de dificultad antes de iniciar | resources Benjamín → Benjamín — Desarrollador de gameplay |
| 69 | JM.1 — Crear modo libre sin puntuación ni notas obligatorias | resources Benjamín → Benjamín — Desarrollador de gameplay |
| 70 | JM.2 — Permitir seleccionar música de fondo en modo libre | resources Benjamín → Benjamín — Desarrollador de gameplay |
| 71 | JM.3 — Permitir tocar sin música en modo libre | resources Benjamín → Benjamín — Desarrollador de gameplay |
| 72 | JY — Crear sistema de calibración de latencia entre golpe y música | resources Benjamín → Benjamín — Desarrollador de gameplay |

| ID | Task | Other |
| --- | --- | --- |
| 73 | JW.6 — Ajustar ventanas de precisión después de pruebas de usuarios | resources Benjamín → Benjamín — Desarrollador de gameplay |
| 74 | JI.5 — Integrar juego de ritmo completo con flujo general de la experiencia | resources Benjamín → Benjamín — Desarrollador de gameplay |
| 76 | EO.1 — Definir objetivo general de la experiencia emocional | resources María → María — Analista e investigador |
| 77 | EO.2 — Definir alcance y límites del proyecto respecto al concepto de terapia | resources María → María — Analista e investigador |
| 78 | EB.1 — Buscar bibliografía científica sobre música y regulación emocional | resources María → María — Analista e investigador |
| 79 | EB.2 — Buscar bibliografía científica sobre percusión y expresión emocional | resources María → María — Analista e investigador |
| 80 | EB.3 — Buscar investigaciones sobre juegos de ritmo relacionados con bienestar y expresión emocional | resources María → María — Analista e investigador |
| 81 | EB.4 — Seleccionar estudios científicos que realmente sustentarán el proyecto | resources María → María — Analista e investigador |
| 82 | EB.5 — Crear matriz bibliográfica de artículos, objetivo, metodología y resultados | resources María → María — Analista e investigador |
| 83 | EE.1 — Definir qué emociones serán abordadas dentro de la simulación | resources María → María — Analista e investigador |
| 84 | EE.2 — Definir qué actividades se relacionarán con cada emoción | resources María → María — Analista e investigador |
| 85 | EE.3 — Determinar duración aproximada de una sesión | resources María → María — Analista e investigador |
| 86 | ER — Investigar postura, comodidad y ergonomía durante actividades de percusión VR | resources María → María — Analista e investigador |
| 87 | EG.1 — Redactar el guion de introducción general de la terapia | resources María → María — Analista e investigador |
| 88 | EG.2 — Redactar las instrucciones específicas de la actividad terapéutica | resources María → María — Analista e investigador |
| 89 | EF — Diseñar flujo completo de experiencia desde ingreso hasta finalización | resources María → María — Analista e investigador |
| 90 | EG.3 — Redactar el guion del tutorial introductorio | resources María → María — Analista e investigador |
| 91 | EI — Definir cómo se utilizarán el ritmo y la intensidad de los golpes para expresar las emociones seleccionadas | resources María → María — Analista e investigador |
| 92 | EG.4 — Redactar el guion de cierre de la experiencia terapéutica | resources María → María — Analista e investigador |
| 93 | ET.1 — Redactar la fundamentación teórica de la propuesta terapéutica | resources María → María — Analista e investigador |
| 94 | ET.2 — Revisar y actualizar la fundamentación según el funcionamiento final del prototipo | resources María → María — Analista e investigador |
| 96 | MR.1 — Investigar características musicales adecuadas para la experiencia planteada | resources Javier → Javier — Compositor y diseñador musical |
| 97 | MR.2 — Analizar BPM utilizados en las referencias encontradas | resources Javier → Javier — Compositor y diseñador musical |
| 98 | MR.3 — Analizar compases y patrones rítmicos apropiados para principiantes | resources Javier → Javier — Compositor y diseñador musical |
| 99 | MR.4 — Definir estilos musicales que utilizará el proyecto | resources Javier → Javier — Compositor y diseñador musical |
| 100 | MR.5 — Definir duración de las pistas musicales | resources Javier → Javier — Compositor y diseñador musical |
| 101 | ML.1 — Determinar si se utilizará música original, libre de derechos o licenciada | resources Javier → Javier — Compositor y diseñador musical |
| 102 | ML.2 — Investigar licencias de las pistas o recursos musicales considerados | resources Javier → Javier — Compositor y diseñador musical |
| 103 | MP.1 — Crear o seleccionar primera pista musical de prueba | resources Javier → Javier — Compositor y diseñador musical |
| 104 | MP.2 — Determinar BPM exacto de la primera pista | resources Javier → Javier — Compositor y diseñador musical |
| 105 | MP.3 — Identificar estructura musical de la primera pista | resources Javier → Javier — Compositor y diseñador musical |
| 106 | MB.1 — Crear patrón básico de batería para la primera pista | resources Javier → Javier — Compositor y diseñador musical |
| 107 | MB.2 — Definir momentos donde se utilizarán golpes suaves, medios o fuertes | resources Javier → Javier — Compositor y diseñador musical |
| 108 | MB.3 — Crear versiones de dificultad Tutorial, Fácil e Intermedio del patrón | resources Javier → Javier — Compositor y diseñador musical |
| 109 | MB.4 — Convertir patrón rítmico en información utilizable para el beatmap | resources Javier → Javier — Compositor y diseñador musical |
| 110 | MB.5 — Probar primer beatmap junto con el desarrollador | resources Javier → Javier — Compositor y diseñador musical |
| 111 | MB.6 — Corregir patrones que resulten poco cómodos o confusos | resources Javier → Javier — Compositor y diseñador musical |
| 112 | MA.1 — Crear o seleccionar pistas adicionales | resources Javier → Javier — Compositor y diseñador musical |
| 113 | MA.2 — Preparar pistas para modo libre | resources Javier → Javier — Compositor y diseñador musical |
| 114 | MN.1 — Normalizar formato, frecuencia de muestreo y volumen de todas las pistas | resources Javier → Javier — Compositor y diseñador musical |
| 115 | MN.2 — Documentar BPM, duración, compás y finalidad de cada pista | resources Javier → Javier — Compositor y diseñador musical |
| 117 | SP.1 — Crear lista de todos los sonidos necesarios para el proyecto | resources Christian → Christian — Diseñador de audio |
| 118 | SP.2 — Investigar bancos de sonidos compatibles con la licencia del proyecto | resources Christian → Christian — Diseñador de audio |
| 119 | SB.1 — Buscar sonido de kick | resources Christian → Christian — Diseñador de audio |
| 120 | SB.2 — Buscar sonido de snare | resources Christian → Christian — Diseñador de audio |
| 121 | SB.3 — Buscar sonidos de toms | resources Christian → Christian — Diseñador de audio |
| 122 | SB.4 — Buscar sonidos de hi-hat abierto y cerrado | resources Christian → Christian — Diseñador de audio |
| 123 | SB.5 — Buscar sonidos de crash y ride | resources Christian → Christian — Diseñador de audio |
| 124 | SB.6 — Seleccionar tres niveles de intensidad para cada componente principal | resources Christian → Christian — Diseñador de audio |
| 125 | SE.1 — Editar inicio y final de cada muestra para evitar retrasos | resources Christian → Christian — Diseñador de audio |
| 126 | SE.2 — Eliminar ruidos innecesarios de las muestras | resources Christian → Christian — Diseñador de audio |
| 127 | SE.3 — Normalizar volumen de las muestras de batería | resources Christian → Christian — Diseñador de audio |
| 128 | SE.4 — Exportar sonidos en formato apropiado para Unity | resources Christian → Christian — Diseñador de audio |
| 129 | SM.1 — Crear Audio Mixer dentro de Unity | resources Christian → Christian — Diseñador de audio |
| 130 | SM.2 — Separar canales de batería, música, ambiente e interfaz | resources Christian → Christian — Diseñador de audio |
| 131 | SI.1 — Integrar sonidos de batería con sistema DrumHit | resources Christian → Christian — Diseñador de audio |
| 132 | SI.2 — Asignar sonidos diferentes según intensidad del golpe | resources Christian → Christian — Diseñador de audio |
| 133 | SI.3 — Configurar volumen espacial de la batería dentro del entorno VR | resources Christian → Christian — Diseñador de audio |
| 134 | SI.4 — Medir retraso perceptible entre impacto y reproducción del sonido | resources Christian → Christian — Diseñador de audio |
| 135 | SU — Buscar y preparar sonidos para botones, aciertos y errores | resources Christian → Christian — Diseñador de audio |
| 136 | SA.1 — Buscar o producir sonidos ambientales para el escenario | resources Christian → Christian — Diseñador de audio |
| 137 | SA.2 — Integrar ambiente sonoro con escenario final | resources Christian → Christian — Diseñador de audio |
| 138 | SC.1 — Crear controles independientes de volumen para música, batería y ambiente | resources Christian → Christian — Diseñador de audio |
| 139 | SC.2 — Realizar mezcla general de audio | resources Christian → Christian — Diseñador de audio |
| 141 | IM.1 — Definir mapa completo de pantallas de la aplicación | resources Sarai → Sarai — Diseñador de interacción UX-XR |
| 142 | IM.2 — Definir navegación entre menú, experiencia guiada, juego y modo libre | resources Sarai → Sarai — Diseñador de interacción UX-XR |
| 143 | IW.1 — Crear wireframe del menú principal | resources Sarai → Sarai — Diseñador de interacción UX-XR |
| 144 | IW.2 — Crear wireframe de selección de modo | resources Sarai → Sarai — Diseñador de interacción UX-XR |
| 145 | IW.3 — Crear wireframe de selección emocional | resources Sarai → Sarai — Diseñador de interacción UX-XR |
| 146 | IW.4 — Crear wireframe del tutorial | resources Sarai → Sarai — Diseñador de interacción UX-XR |

| ID | Task | Other |
| --- | --- | --- |
| 147 | IW.5 — Crear wireframe de pantalla previa al juego | resources Sarai → Sarai — Diseñador de interacción UX-XR |
| 148 | IW.6 — Crear wireframe de resultados | resources Sarai → Sarai — Diseñador de interacción UX-XR |
| 149 | IS.1 — Crear interfaz para selección de canción y dificultad | resources Sarai → Sarai — Diseñador de interacción UX-XR |
| 150 | IS.2 — Diseñar menú de configuración | resources Sarai → Sarai — Diseñador de interacción UX-XR |
| 151 | IS.3 — Diseñar controles para volumen de música, batería y ambiente | resources Sarai → Sarai — Diseñador de interacción UX-XR |
| 152 | IS.4 — Diseñar menú de pausa | resources Sarai → Sarai — Diseñador de interacción UX-XR |
| 153 | IS.5 — Diseñar pantalla de confirmación para salir o reiniciar | resources Sarai → Sarai — Diseñador de interacción UX-XR |
| 154 | IS.6 — Diseñar presentación de resultados finales | resources Sarai → Sarai — Diseñador de interacción UX-XR |
| 155 | IE — Definir estilo visual general de la interfaz | resources Sarai → Sarai — Diseñador de interacción UX-XR |
| 156 | IG.1 — Diseñar indicadores visuales de Perfect, Good y Miss | resources Sarai → Sarai — Diseñador de interacción UX-XR |
| 157 | IG.2 — Diseñar representación definitiva de las notas del juego | resources Sarai → Sarai — Diseñador de interacción UX-XR |
| 158 | IG.3 — Diseñar indicadores para señalar el tambor que debe golpearse | resources Sarai → Sarai — Diseñador de interacción UX-XR |
| 159 | IT.1 — Diseñar tutorial visual sobre cómo sujetar las baquetas | resources Sarai → Sarai — Diseñador de interacción UX-XR |
| 160 | IT.2 — Diseñar tutorial para explicar cómo seguir el ritmo | resources Sarai → Sarai — Diseñador de interacción UX-XR |
| 161 | IT.3 — Diseñar tutorial para explicar la intensidad de los golpes | resources Sarai → Sarai — Diseñador de interacción UX-XR |
| 162 | IT.4 — Implementar flujo del tutorial completo | resources Sarai → Sarai — Diseñador de interacción UX-XR |
| 163 | II.1 — Importar recursos gráficos de Canva/Figma a Unity | resources Sarai → Sarai — Diseñador de interacción UX-XR |
| 164 | II.2 — Implementar menú principal dentro de Unity | resources Sarai → Sarai — Diseñador de interacción UX-XR |
| 165 | II.3 — Implementar interacción con botones utilizando controlador VR | resources Sarai → Sarai — Diseñador de interacción UX-XR |
| 166 | II.4 — Implementar configuración de volumen | resources Sarai → Sarai — Diseñador de interacción UX-XR |
| 167 | II.5 — Implementar menú de pausa | resources Sarai → Sarai — Diseñador de interacción UX-XR |
| 168 | II.6 — Implementar pantalla de resultados | resources Sarai → Sarai — Diseñador de interacción UX-XR |
| 169 | IR.1 — Revisar legibilidad de textos dentro del visor VR | resources Sarai → Sarai — Diseñador de interacción UX-XR |
| 170 | IR.2 — Revisar tamaño, distancia y posición de paneles | resources Sarai → Sarai — Diseñador de interacción UX-XR |
| 171 | IR.3 — Corregir problemas de navegación encontrados en pruebas | resources Sarai → Sarai — Diseñador de interacción UX-XR |
| 173 | AE.1 — Investigar qué tipo de entorno puede favorecer la experiencia propuesta | resources Kimberly → Kimberly — Artista y modelador 3D |
| 174 | AE.2 — Comparar posibles ambientes: naturaleza, estudio musical, espacio minimalista y otros | resources Kimberly → Kimberly — Artista y modelador 3D |
| 175 | AE.3 — Definir dirección artística general del escenario | resources Kimberly → Kimberly — Artista y modelador 3D |
| 176 | AC.1 — Investigar teoría del color y su relación con la percepción emocional, concentración y confort visual dentro de entornos virtuales | resources Kimberly → Kimberly — Artista y modelador 3D |
| 177 | AC.2 — Definir paleta de colores y criterios para aplicarla en los modelos 3D y el entorno según la experiencia emocional propuesta | resources Kimberly → Kimberly — Artista y modelador 3D |
| 178 | AC.3 — Crear moodboard visual del escenario incorporando la dirección artística y la paleta de colores seleccionada | resources Kimberly → Kimberly — Artista y modelador 3D |
| 179 | AA.1 — Crear lista de todos los assets 3D necesarios | resources Kimberly → Kimberly — Artista y modelador 3D |
| 180 | AA.2 — Definir límites de polígonos y rendimiento adecuados para VR | resources Kimberly → Kimberly — Artista y modelador 3D |
| 181 | AA.3 — Buscar assets de entorno compatibles con el estilo elegido | resources Kimberly → Kimberly — Artista y modelador 3D |
| 182 | AA.4 — Revisar licencias de los assets seleccionados | resources Kimberly → Kimberly — Artista y modelador 3D |
| 183 | AB.1 — Buscar modelo de batería adecuado | resources Kimberly → Kimberly — Artista y modelador 3D |
| 184 | AB.2 — Revisar licencia del modelo de batería | resources Kimberly → Kimberly — Artista y modelador 3D |
| 185 | AB.3 — Buscar o crear modelos definitivos de baquetas | resources Kimberly → Kimberly — Artista y modelador 3D |
| 186 | AB.4 — Optimizar modelo de batería para VR | resources Kimberly → Kimberly — Artista y modelador 3D |
| 187 | AB.5 — Optimizar materiales y texturas de la batería considerando la paleta de colores establecida | resources Kimberly → Kimberly — Artista y modelador 3D |
| 188 | AB.6 — Preparar batería definitiva para integración en Unity | resources Kimberly → Kimberly — Artista y modelador 3D |
| 189 | AP.1 — Crear primera composición del escenario en Unity | resources Kimberly → Kimberly — Artista y modelador 3D |
| 190 | AP.2 — Determinar posición del jugador y batería dentro del escenario | resources Kimberly → Kimberly — Artista y modelador 3D |
| 191 | AP.3 — Aplicar la paleta de colores seleccionada a modelos, materiales y elementos principales del escenario | resources Kimberly → Kimberly — Artista y modelador 3D |
| 192 | AL.1 — Configurar iluminación inicial considerando la paleta de colores establecida | resources Kimberly → Kimberly — Artista y modelador 3D |
| 193 | AL.2 — Configurar iluminación definitiva y ambiente visual | resources Kimberly → Kimberly — Artista y modelador 3D |
| 194 | AD.1 — Añadir elementos ambientales secundarios | resources Kimberly → Kimberly — Artista y modelador 3D |
| 195 | AD.2 — Reducir objetos que puedan distraer al usuario | resources Kimberly → Kimberly — Artista y modelador 3D |
| 196 | AS — Crear límites visuales de seguridad del espacio de interacción | resources Kimberly → Kimberly — Artista y modelador 3D |
| 197 | AO.1 — Optimizar texturas del escenario para VR | resources Kimberly → Kimberly — Artista y modelador 3D |
| 198 | AO.2 — Configurar LOD en objetos que lo requieran | resources Kimberly → Kimberly — Artista y modelador 3D |
| 199 | AO.3 — Revisar cantidad de luces en tiempo real | resources Kimberly → Kimberly — Artista y modelador 3D |
| 200 | AO.4 — Preparar iluminación horneada cuando sea conveniente | resources Kimberly → Kimberly — Artista y modelador 3D |
| 201 | AO.5 — Evaluar FPS del escenario en el visor objetivo | resources Kimberly → Kimberly — Artista y modelador 3D |
| 202 | AO.6 — Optimizar escenario hasta cumplir rendimiento esperado | resources Kimberly → Kimberly — Artista y modelador 3D |
| 203 | AR.1 — Revisar ambiente visual con el responsable de experiencia emocional para comprobar que colores, iluminación y escenario sean coherentes con la experiencia propuesta | resources Kimberly → Kimberly — Artista y modelador 3D |
| 204 | AR.2 — Realizar ajustes finales de ambientación | resources Kimberly → Kimberly — Artista y modelador 3D |
| 206 | QP.1 — Definir alcance general del proyecto | resources Diana → Diana — Gerente de proyecto |
| 207 | QP.2 — Definir objetivos generales y específicos | resources Diana → Diana — Gerente de proyecto |
| 208 | QP.3 — Identificar entregables principales del proyecto | resources Diana → Diana — Gerente de proyecto |
| 209 | QP.4 — Elaborar EDT/WBS completa de tareas | resources Diana → Diana — Gerente de proyecto |
| 210 | QP.5 — Asignar responsables principales para cada tarea | resources Diana → Diana — Gerente de proyecto |
| 211 | QP.6 — Establecer dependencias entre tareas | resources Diana → Diana — Gerente de proyecto |
| 212 | QP.7 — Crear cronograma inicial del proyecto | resources Diana → Diana — Gerente de proyecto |
| 213 | QP.8 — Crear diagrama de Gantt | resources Diana → Diana — Gerente de proyecto |
| 214 | QP.9 — Identificar ruta crítica del proyecto | resources Diana → Diana — Gerente de proyecto |
| 215 | QG.1 — Crear lista de riesgos técnicos, académicos y de tiempo | resources Diana → Diana — Gerente de proyecto |
| 216 | QG.2 — Definir acciones de mitigación para cada riesgo | resources Diana → Diana — Gerente de proyecto |
| 217 | QR.1 — Definir requisitos funcionales de la simulación | resources Diana → Diana — Analista e investigador |
| 218 | QR.2 — Definir requisitos no funcionales | resources Diana → Diana — Analista e investigador |

| ID | Task | Other |
| --- | --- | --- |
| 219 | QR.3 — Crear criterios de aceptación para cada requisito | resources Diana → Diana — Analista e investigador |
| 220 | QR.4 — Crear matriz de trazabilidad entre requisitos y funcionalidades | resources Diana → Diana — Analista e investigador |
| 221 | QE.1 — Establecer formato para documentar errores | resources Diana → Diana — Analista de pruebas (QA) |
| 222 | QT.1 — Crear plan de pruebas de batería VR | resources Diana → Diana — Analista de pruebas (QA) |
| 223 | QT.2 — Crear plan de pruebas del juego de ritmo | resources Diana → Diana — Analista de pruebas (QA) |
| 224 | QT.3 — Crear plan de pruebas de interfaz | resources Diana → Diana — Analista de pruebas (QA) |
| 225 | QT.4 — Crear plan de pruebas de audio | resources Diana → Diana — Analista de pruebas (QA) |
| 226 | QT.5 — Crear plan de pruebas de rendimiento VR | resources Diana → Diana — Analista de pruebas (QA) |
| 227 | QT.6 — Realizar pruebas unitarias de batería | resources Diana → Diana — Analista de pruebas (QA) |
| 228 | QT.7 — Realizar pruebas del sistema de ritmo | resources Diana → Diana — Analista de pruebas (QA) |
| 229 | QT.8 — Realizar pruebas con usuarios del prototipo integrado | resources Diana → Diana — Analista de pruebas (QA) |
| 230 | QE.2 — Registrar errores, observaciones y sugerencias de usuarios | resources Diana → Diana — Analista de pruebas (QA) |
| 231 | QE.3 — Clasificar errores por gravedad y prioridad | resources Diana → Diana — Analista de pruebas (QA) |
| 232 | QE.4 — Asignar errores a las áreas correspondientes | resources Diana → Diana — Analista de pruebas (QA) |
| 233 | QE.5 — Verificar corrección de errores críticos | resources Diana → Diana — Analista de pruebas (QA) |
| 234 | QV.1 — Realizar prueba completa desde inicio hasta final de una sesión | resources Diana → Diana — Analista de pruebas (QA) |
| 235 | QV.2 — Evaluar estabilidad y presencia de cierres inesperados | resources Diana → Diana — Analista de pruebas (QA) |
| 236 | QV.3 — Medir FPS del proyecto en el visor objetivo | resources Diana → Diana — Analista de pruebas (QA) |
| 237 | QV.4 — Evaluar latencia entre golpe físico, sonido y detección | resources Diana → Diana — Analista de pruebas (QA) |
| 238 | QV.5 — Evaluar comodidad de la experiencia VR | resources Diana → Diana — Analista de pruebas (QA) |
| 239 | QC.1 — Registrar versiones importantes del proyecto | resources Diana → Diana — Gerente de proyecto |
| 240 | QC.2 — Documentar avances semanales | resources Diana → Diana — Gerente de proyecto |
| 241 | QC.3 — Mantener actualizada la bibliografía del proyecto | resources Diana → Diana — Gerente de proyecto |
| 242 | QC.4 — Mantener registro de assets y sus licencias | resources Diana → Diana — Gerente de proyecto |
| 243 | QC.5 — Mantener registro de música y licencias utilizadas | resources Diana → Diana — Gerente de proyecto |
| 244 | QD.1 — Crear documentación de arquitectura del software | resources Diana → Diana — Redactor técnico |
| 245 | QD.2 — Crear diagrama del flujo general de la aplicación | resources Diana → Diana — Redactor técnico |
| 246 | QD.3 — Documentar funcionamiento del sistema de detección de golpes | resources Diana → Diana — Redactor técnico |
| 247 | QD.4 — Documentar funcionamiento del juego de ritmo | resources Diana → Diana — Redactor técnico |
| 248 | QD.5 — Documentar sistema de intensidad de los golpes | resources Diana → Diana — Redactor técnico |
| 249 | QD.6 — Documentar selección y fundamentación del entorno virtual | resources Diana → Diana — Redactor técnico |
| 250 | QD.7 — Documentar fundamentación de la música utilizada | resources Diana → Diana — Redactor técnico |
| 251 | QD.8 — Documentar diseño y funcionamiento de la interfaz | resources Diana → Diana — Redactor técnico |
| 252 | QM.1 — Elaborar manual básico de usuario | resources Diana → Diana — Redactor técnico |
| 253 | QM.2 — Elaborar manual técnico de instalación y ejecución | resources Diana → Diana — Redactor técnico |
| 254 | QF.1 — Preparar capturas de pantalla del proyecto | resources Diana → Diana — Redactor técnico |
| 255 | QF.2 — Grabar evidencia en video del funcionamiento | resources Diana → Diana — Redactor técnico |
| 256 | QI.1 — Analizar resultados obtenidos durante las pruebas | resources Diana → Diana — Analista e investigador |
| 257 | QI.2 — Redactar apartado de resultados del proyecto | resources Diana → Diana — Analista e investigador |
| 258 | QI.3 — Redactar conclusiones y limitaciones | resources Diana → Diana — Analista e investigador |
| 259 | QI.4 — Integrar todas las secciones del informe final | resources Diana → Diana — Analista e investigador |
| 260 | QI.5 — Revisar redacción, ortografía, referencias y formato | resources Diana → Diana — Analista e investigador |
| 261 | QB.1 — Generar build candidata a versión final | resources Diana → Diana — Desarrollador de realidad virtual |
| 262 | QB.2 — Probar build final en el visor VR objetivo | resources Diana → Diana — Desarrollador de realidad virtual |
| 263 | QB.3 — Corregir errores críticos encontrados en build final | resources Diana → Diana — Desarrollador de realidad virtual |
| 264 | QB.4 — Generar versión definitiva del videojuego | resources Diana → Diana — Desarrollador de realidad virtual |
| 265 | QX — Preparar presentación y demostración final del proyecto | resources Diana → Diana — Director de proyecto |

## Version 3 (saved 2026-09-19, file Cronograma_ProjectLibre.xml)

Note of the change: refactor: reorganizar el repositorio para trabajo en equipo

Last finish 2026-10-19 → 2026-10-30 (+11d). Complete tasks 0 → 9.

Changed:

| ID | Task | Start | Finish | Duration | Complete | Predecessors |
| --- | --- | --- | --- | --- | --- | --- |
| 1 | **D. Desarrollo VR y batería** |  | 2026-09-22 → 2026-10-05 (+13d) | 10.25d → 19.88d |  |  |
| 21 | DG.4 — Convertir la velocidad de la baqueta en un valor de intensidad de golpe |  | 2026-09-16 → 2026-09-17 (+1d) |  |  |  |
| 22 | DG.5 — Establecer niveles de intensidad suave, media y fuerte | 2026-09-16 → 2026-09-17 (+1d) | 2026-09-17 → 2026-09-18 (+1d) |  |  |  |
| 25 | DH.2 — Ajustar la intensidad háptica de acuerdo con la fuerza del golpe | 2026-09-16 → 2026-09-17 (+1d) | 2026-09-17 → 2026-09-18 (+1d) |  |  |  |
| 26 | DG.7 — Crear evento general DrumHit que informe instrumento, intensidad y tiempo del golpe | 2026-09-16 → 2026-09-17 (+1d) | 2026-09-17 → 2026-09-18 (+1d) |  |  |  |
| 27 | DG.8 — Implementar soporte independiente para golpe con baqueta izquierda y derecha | 2026-09-17 → 2026-09-18 (+1d) | 2026-09-18 → 2026-09-21 (+3d) |  |  |  |
| 29 | DG.9 — Ajustar sensibilidad de las colisiones de batería |  | 2026-09-16 → 2026-09-17 (+1d) |  |  |  |
| 30 | DT.4 — Incorporar modelo 3D definitivo de la batería | 2026-09-21 → 2026-09-29 (+8d) | 2026-09-22 → 2026-09-30 (+8d) |  |  |  |
| 31 | DT.5 — Reconfigurar colliders utilizando el modelo definitivo | 2026-09-07 → 2026-09-30 (+23d) | 2026-09-07 → 2026-10-01 (+24d) |  |  |  |
| 32 | DT.6 — Ajustar posición y dimensiones de batería para una postura cómoda en VR | 2026-09-14 → 2026-10-01 (+17d) | 2026-09-14 → 2026-10-01 (+17d) |  |  |  |
| 33 | DR.1 — Realizar primera prueba completa de interacción física de la batería | 2026-09-18 → 2026-10-01 (+13d) | 2026-09-21 → 2026-10-02 (+11d) |  |  |  |
| 34 | DR.2 — Corregir errores detectados durante la primera prueba de batería | 2026-09-21 → 2026-10-02 (+11d) | 2026-09-22 → 2026-10-05 (+13d) |  |  |  |
| 35 | **J. Juego de ritmo** |  | 2026-10-01 → 2026-10-15 (+14d) | 17.88d → 27.25d |  |  |
| 36 | JA.1 — Definir técnicamente cómo funcionará el juego de ritmo | 2026-09-07 A |  |  | 0% → 100% |  |
| 53 | JP.1 — Crear sistema básico de puntuación |  | 2026-09-16 → 2026-09-17 (+1d) |  |  |  |
| 54 | JP.2 — Crear sistema de combo o golpes consecutivos | 2026-09-16 → 2026-09-17 (+1d) | 2026-09-17 → 2026-09-18 (+1d) |  |  |  |
| 55 | JP.3 — Crear cálculo de precisión porcentual del usuario | 2026-09-16 → 2026-09-17 (+1d) | 2026-09-17 → 2026-09-18 (+1d) |  |  |  |
| 56 | JP.4 — Crear resumen de resultados al terminar una canción | 2026-09-23 → 2026-09-24 (+1d) | 2026-09-24 → 2026-09-25 (+1d) |  |  |  |
| 57 | JI.1 — Integrar evento DrumHit de la batería VR con el juego de ritmo | 2026-09-17 → 2026-09-18 (+1d) | 2026-09-18 → 2026-09-21 (+3d) |  |  |  |
| 58 | JI.2 — Sustituir controles provisionales de teclado por interacción VR | 2026-09-18 → 2026-09-21 (+3d) | 2026-09-21 → 2026-09-22 (+1d) |  |  |  |
| 59 | JI.3 — Implementar detección de intensidad del golpe dentro del juego | 2026-09-18 → 2026-09-21 (+3d) | 2026-09-21 → 2026-09-22 (+1d) |  |  |  |
| 60 | JI.4 — Diseñar mecánicas en las que determinados golpes requieran distinta intensidad | 2026-09-25 → 2026-09-28 (+3d) | 2026-09-28 → 2026-09-29 (+1d) |  |  |  |
| 61 | JF.1 — Crear feedback visual inmediato de acierto o error | 2026-09-15 → 2026-09-23 (+8d) | 2026-09-16 → 2026-09-23 (+7d) |  |  |  |
| 64 | JC.2 — Crear sistema de pausa y reanudación | 2026-09-22 → 2026-09-23 (+1d) | 2026-09-23 → 2026-09-24 (+1d) |  |  |  |
| 65 | JC.3 — Crear sistema para reiniciar una actividad | 2026-09-23 → 2026-09-24 (+1d) | 2026-09-24 → 2026-09-25 (+1d) |  |  |  |
| 66 | JC.4 — Crear sistema para abandonar una actividad y regresar al menú | 2026-09-23 → 2026-09-24 (+1d) | 2026-09-24 → 2026-09-25 (+1d) |  |  |  |
| 67 | JL.1 — Crear diferentes niveles de dificultad | 2026-09-28 → 2026-09-29 (+1d) | 2026-09-29 → 2026-09-30 (+1d) |  |  |  |
| 68 | JL.2 — Programar selección de dificultad antes de iniciar | 2026-09-29 → 2026-09-30 (+1d) | 2026-09-29 → 2026-09-30 (+1d) |  |  |  |
| 69 | JM.1 — Crear modo libre sin puntuación ni notas obligatorias | 2026-09-17 → 2026-09-18 (+1d) | 2026-09-18 → 2026-09-21 (+3d) |  |  |  |
| 70 | JM.2 — Permitir seleccionar música de fondo en modo libre | 2026-09-18 → 2026-10-08 (+20d) | 2026-09-21 → 2026-10-08 (+17d) |  |  |  |
| 71 | JM.3 — Permitir tocar sin música en modo libre | 2026-09-18 → 2026-09-21 (+3d) | 2026-09-18 → 2026-09-21 (+3d) |  |  |  |
| 72 | JY — Crear sistema de calibración de latencia entre golpe y música | 2026-09-21 → 2026-09-22 (+1d) | 2026-09-22 → 2026-09-23 (+1d) |  |  |  |
| 73 | JW.6 — Ajustar ventanas de precisión después de pruebas de usuarios | 2026-09-09 → 2026-10-14 (+35d) | 2026-09-09 → 2026-10-15 (+36d) |  |  |  |
| 74 | JI.5 — Integrar juego de ritmo completo con flujo general de la experiencia | 2026-09-29 → 2026-09-30 (+1d) | 2026-10-01 → 2026-10-02 (+1d) |  |  |  |
| 75 | **E. Experiencia emocional** |  | 2026-09-18 → 2026-10-15 (+27d) | 10d → 27.25d |  |  |
| 76 | EO.1 — Definir objetivo general de la experiencia emocional | 2026-09-07 A |  |  | 0% → 100% |  |
| 77 | EO.2 — Definir alcance y límites del proyecto respecto al concepto de terapia | 2026-09-07 A |  |  | 0% → 100% |  |
| 78 | EB.1 — Buscar bibliografía científica sobre música y regulación emocional | 2026-09-07 A |  |  | 0% → 100% |  |
| 79 | EB.2 — Buscar bibliografía científica sobre percusión y expresión emocional | 2026-09-07 A |  |  | 0% → 100% |  |
| 80 | EB.3 — Buscar investigaciones sobre juegos de ritmo relacionados con bienestar y expresión emocional | 2026-09-07 A |  |  | 0% → 100% |  |
| 81 | EB.4 — Seleccionar estudios científicos que realmente sustentarán el proyecto | 2026-09-09 A |  |  | 0% → 100% |  |
| 89 | EF — Diseñar flujo completo de experiencia desde ingreso hasta finalización |  | 2026-09-16 → 2026-09-17 (+1d) |  |  |  |
| 90 | EG.3 — Redactar el guion del tutorial introductorio | 2026-09-17 → 2026-09-18 (+1d) | 2026-09-17 → 2026-09-18 (+1d) |  |  |  |
| 92 | EG.4 — Redactar el guion de cierre de la experiencia terapéutica | 2026-09-17 → 2026-09-18 (+1d) | 2026-09-17 → 2026-09-18 (+1d) |  |  |  |
| 93 | ET.1 — Redactar la fundamentación teórica de la propuesta terapéutica |  | 2026-09-17 → 2026-09-18 (+1d) |  |  |  |
| 94 | ET.2 — Revisar y actualizar la fundamentación según el funcionamiento final del prototipo | 2026-09-18 → 2026-10-14 (+26d) | 2026-09-18 → 2026-10-15 (+27d) |  |  |  |
| 95 | **M. Música** |  | 2026-10-08 → 2026-10-09 (+1d) | 22.25d → 23.25d |  |  |
| 97 | MR.2 — Analizar BPM utilizados en las referencias encontradas | 2026-09-16 → 2026-09-17 (+1d) | 2026-09-16 → 2026-09-17 (+1d) |  |  |  |
| 98 | MR.3 — Analizar compases y patrones rítmicos apropiados para principiantes | 2026-09-16 → 2026-09-17 (+1d) | 2026-09-16 → 2026-09-17 (+1d) |  |  |  |
| 99 | MR.4 — Definir estilos musicales que utilizará el proyecto | 2026-09-17 → 2026-09-18 (+1d) | 2026-09-17 → 2026-09-18 (+1d) |  |  |  |
| 100 | MR.5 — Definir duración de las pistas musicales | 2026-09-18 → 2026-09-21 (+3d) | 2026-09-18 → 2026-09-21 (+3d) |  |  |  |
| 101 | ML.1 — Determinar si se utilizará música original, libre de derechos o licenciada | 2026-09-07 A |  |  | 0% → 100% |  |
| 102 | ML.2 — Investigar licencias de las pistas o recursos musicales considerados | 2026-09-07 A |  |  | 0% → 100% |  |
| 103 | MP.1 — Crear o seleccionar primera pista musical de prueba | 2026-09-18 → 2026-09-21 (+3d) | 2026-09-22 → 2026-09-23 (+1d) |  |  |  |
| 104 | MP.2 — Determinar BPM exacto de la primera pista | 2026-09-22 → 2026-09-23 (+1d) | 2026-09-22 → 2026-09-23 (+1d) |  |  |  |
| 105 | MP.3 — Identificar estructura musical de la primera pista | 2026-09-22 → 2026-09-23 (+1d) | 2026-09-23 → 2026-09-24 (+1d) |  |  |  |
| 106 | MB.1 — Crear patrón básico de batería para la primera pista | 2026-09-23 → 2026-09-24 (+1d) | 2026-09-24 → 2026-09-25 (+1d) |  |  |  |
| 107 | MB.2 — Definir momentos donde se utilizarán golpes suaves, medios o fuertes | 2026-09-24 → 2026-09-25 (+1d) | 2026-09-25 → 2026-09-28 (+3d) |  |  |  |
| 108 | MB.3 — Crear versiones de dificultad Tutorial, Fácil e Intermedio del patrón | 2026-09-24 → 2026-09-25 (+1d) | 2026-09-28 → 2026-09-29 (+1d) |  |  |  |
| 109 | MB.4 — Convertir patrón rítmico en información utilizable para el beatmap | 2026-09-28 → 2026-09-29 (+1d) | 2026-09-29 → 2026-09-30 (+1d) |  |  |  |
| 110 | MB.5 — Probar primer beatmap junto con el desarrollador | 2026-09-29 → 2026-09-30 (+1d) | 2026-09-30 → 2026-10-01 (+1d) |  |  |  |
| 111 | MB.6 — Corregir patrones que resulten poco cómodos o confusos | 2026-09-30 → 2026-10-01 (+1d) | 2026-10-01 → 2026-10-02 (+1d) |  |  |  |
| 112 | MA.1 — Crear o seleccionar pistas adicionales | 2026-10-01 → 2026-10-02 (+1d) | 2026-10-06 → 2026-10-07 (+1d) |  |  |  |
| 113 | MA.2 — Preparar pistas para modo libre | 2026-09-07 → 2026-10-07 (+30d) | 2026-09-07 → 2026-10-08 (+31d) |  |  | none → 112 |
| 114 | MN.1 — Normalizar formato, frecuencia de muestreo y volumen de todas las pistas | 2026-10-06 → 2026-10-07 (+1d) | 2026-10-07 → 2026-10-08 (+1d) |  |  |  |
| 115 | MN.2 — Documentar BPM, duración, compás y finalidad de cada pista | 2026-10-07 → 2026-10-08 (+1d) | 2026-10-08 → 2026-10-09 (+1d) |  |  |  |
| 116 | **S. Sonido** |  | 2026-09-25 → 2026-10-05 (+10d) | 13.88d → 19.25d |  |  |
| 129 | SM.1 — Crear Audio Mixer dentro de Unity |  | 2026-09-16 → 2026-09-17 (+1d) |  |  |  |
| 130 | SM.2 — Separar canales de batería, música, ambiente e interfaz | 2026-09-16 → 2026-09-17 (+1d) | 2026-09-16 → 2026-09-17 (+1d) |  |  |  |
| 131 | SI.1 — Integrar sonidos de batería con sistema DrumHit | 2026-09-17 → 2026-09-18 (+1d) | 2026-09-18 → 2026-09-21 (+3d) |  |  |  |

| ID | Task | Start | Finish | Duration | Predecessors |
| --- | --- | --- | --- | --- | --- |
| 132 | SI.2 — Asignar sonidos diferentes según intensidad del golpe | 2026-09-18 → 2026-09-21 (+3d) | 2026-09-21 → 2026-09-22 (+1d) |  |  |
| 133 | SI.3 — Configurar volumen espacial de la batería dentro del entorno VR | 2026-09-18 → 2026-09-21 (+3d) | 2026-09-21 → 2026-09-22 (+1d) |  |  |
| 134 | SI.4 — Medir retraso perceptible entre impacto y reproducción del sonido | 2026-09-18 → 2026-09-21 (+3d) | 2026-09-21 → 2026-09-22 (+1d) |  |  |
| 136 | SA.1 — Buscar o producir sonidos ambientales para el escenario | 2026-09-15 → 2026-09-23 (+8d) | 2026-09-16 → 2026-09-24 (+8d) |  |  |
| 137 | SA.2 — Integrar ambiente sonoro con escenario final | 2026-09-23 → 2026-10-01 (+8d) | 2026-09-24 → 2026-10-02 (+8d) |  |  |
| 138 | SC.1 — Crear controles independientes de volumen para música, batería y ambiente | 2026-09-23 → 2026-09-24 (+1d) | 2026-09-24 → 2026-09-25 (+1d) |  |  |
| 139 | SC.2 — Realizar mezcla general de audio | 2026-09-24 → 2026-10-02 (+8d) | 2026-09-25 → 2026-10-05 (+10d) |  |  |
| 140 | **I. Interfaz / UX/UI** | 2026-09-09 → 2026-09-11 (+2d) | 2026-09-29 → 2026-10-15 (+16d) | 13.62d → 22.62d |  |
| 141 | IM.1 — Definir mapa completo de pantallas de la aplicación | 2026-09-17 → 2026-09-18 (+1d) | 2026-09-18 → 2026-09-21 (+3d) |  |  |
| 142 | IM.2 — Definir navegación entre menú, experiencia guiada, juego y modo libre | 2026-09-18 → 2026-09-21 (+3d) | 2026-09-21 → 2026-09-22 (+1d) |  |  |
| 143 | IW.1 — Crear wireframe del menú principal | 2026-09-21 → 2026-09-22 (+1d) | 2026-09-22 → 2026-09-23 (+1d) |  |  |
| 144 | IW.2 — Crear wireframe de selección de modo | 2026-09-21 → 2026-09-22 (+1d) | 2026-09-22 → 2026-09-23 (+1d) |  |  |
| 145 | IW.3 — Crear wireframe de selección emocional | 2026-09-21 → 2026-09-22 (+1d) | 2026-09-22 → 2026-09-23 (+1d) |  |  |
| 146 | IW.4 — Crear wireframe del tutorial | 2026-09-21 → 2026-09-22 (+1d) | 2026-09-22 → 2026-09-23 (+1d) |  |  |
| 147 | IW.5 — Crear wireframe de pantalla previa al juego | 2026-09-21 → 2026-09-22 (+1d) | 2026-09-22 → 2026-09-23 (+1d) |  |  |
| 148 | IW.6 — Crear wireframe de resultados | 2026-09-21 → 2026-09-22 (+1d) | 2026-09-22 → 2026-09-23 (+1d) |  |  |
| 149 | IS.1 — Crear interfaz para selección de canción y dificultad | 2026-09-22 → 2026-09-29 (+7d) | 2026-09-23 → 2026-09-30 (+7d) |  | 143 → 108, 143 |
| 150 | IS.2 — Diseñar menú de configuración | 2026-09-22 → 2026-09-23 (+1d) | 2026-09-23 → 2026-09-24 (+1d) |  |  |
| 151 | IS.3 — Diseñar controles para volumen de música, batería y ambiente | 2026-09-23 → 2026-09-24 (+1d) | 2026-09-23 → 2026-09-24 (+1d) |  |  |
| 152 | IS.4 — Diseñar menú de pausa | 2026-09-22 → 2026-09-23 (+1d) | 2026-09-22 → 2026-09-23 (+1d) |  |  |
| 153 | IS.5 — Diseñar pantalla de confirmación para salir o reiniciar | 2026-09-22 → 2026-09-23 (+1d) | 2026-09-23 → 2026-09-24 (+1d) |  |  |
| 154 | IS.6 — Diseñar presentación de resultados finales | 2026-09-22 → 2026-09-23 (+1d) | 2026-09-23 → 2026-09-24 (+1d) |  |  |
| 155 | IE — Definir estilo visual general de la interfaz | 2026-09-09 → 2026-09-21 (+12d) | 2026-09-09 → 2026-09-21 (+12d) |  |  |
| 156 | IG.1 — Diseñar indicadores visuales de Perfect, Good y Miss | 2026-09-10 → 2026-09-22 (+12d) | 2026-09-10 → 2026-09-22 (+12d) |  | 155 → 155, 48 |
| 157 | IG.2 — Diseñar representación definitiva de las notas del juego | 2026-09-14 → 2026-09-22 (+8d) | 2026-09-15 → 2026-09-22 (+7d) |  |  |
| 158 | IG.3 — Diseñar indicadores para señalar el tambor que debe golpearse | 2026-09-15 → 2026-09-23 (+8d) | 2026-09-16 → 2026-09-23 (+7d) |  |  |
| 160 | IT.2 — Diseñar tutorial para explicar cómo seguir el ritmo |  | 2026-09-16 → 2026-09-17 (+1d) |  |  |
| 161 | IT.3 — Diseñar tutorial para explicar la intensidad de los golpes | 2026-09-17 → 2026-09-18 (+1d) | 2026-09-18 → 2026-09-21 (+3d) |  |  |
| 162 | IT.4 — Implementar flujo del tutorial completo | 2026-09-18 → 2026-09-24 (+6d) | 2026-09-22 → 2026-09-25 (+3d) |  | 159, 161, 90 → 159, 160, 161, 90, 158 |
| 163 | II.1 — Importar recursos gráficos de Canva/Figma a Unity | 2026-09-22 → 2026-09-23 (+1d) | 2026-09-23 → 2026-09-24 (+1d) |  |  |
| 164 | II.2 — Implementar menú principal dentro de Unity | 2026-09-23 → 2026-09-24 (+1d) | 2026-09-24 → 2026-09-25 (+1d) |  |  |
| 165 | II.3 — Implementar interacción con botones utilizando controlador VR | 2026-09-24 → 2026-09-25 (+1d) | 2026-09-25 → 2026-09-28 (+3d) |  |  |
| 166 | II.4 — Implementar configuración de volumen | 2026-09-25 → 2026-09-28 (+3d) | 2026-09-28 → 2026-09-29 (+1d) |  |  |
| 167 | II.5 — Implementar menú de pausa | 2026-09-25 → 2026-09-28 (+3d) | 2026-09-28 → 2026-09-29 (+1d) |  |  |
| 168 | II.6 — Implementar pantalla de resultados | 2026-09-23 → 2026-09-25 (+2d) | 2026-09-24 → 2026-09-28 (+4d) |  |  |
| 169 | IR.1 — Revisar legibilidad de textos dentro del visor VR | 2026-09-25 → 2026-09-28 (+3d) | 2026-09-28 → 2026-09-29 (+1d) |  |  |
| 170 | IR.2 — Revisar tamaño, distancia y posición de paneles | 2026-09-28 → 2026-09-29 (+1d) | 2026-09-29 → 2026-09-30 (+1d) |  |  |
| 171 | IR.3 — Corregir problemas de navegación encontrados en pruebas | 2026-09-09 → 2026-10-14 (+35d) | 2026-09-09 → 2026-10-15 (+36d) |  |  |
| 172 | **A. Entorno 3D y assets** | 2026-09-07 → 2026-09-08 (+1d) | 2026-10-02 → 2026-10-12 (+10d) | 18.25d → 22.62d |  |
| 174 | AE.2 — Comparar posibles ambientes: naturaleza, estudio musical, espacio minimalista y otros | 2026-09-07 → 2026-09-17 (+10d) | 2026-09-07 → 2026-09-17 (+10d) |  |  |
| 175 | AE.3 — Definir dirección artística general del escenario | 2026-09-08 → 2026-09-18 (+10d) | 2026-09-08 → 2026-09-18 (+10d) |  |  |
| 177 | AC.2 — Definir paleta de colores y criterios para aplicarla en los modelos 3D y el entorno según la experiencia emocional propuesta | 2026-09-11 → 2026-09-21 (+10d) | 2026-09-11 → 2026-09-21 (+10d) |  |  |
| 178 | AC.3 — Crear moodboard visual del escenario incorporando la dirección artística y la paleta de colores seleccionada | 2026-09-11 → 2026-09-21 (+10d) | 2026-09-14 → 2026-09-22 (+8d) |  |  |
| 179 | AA.1 — Crear lista de todos los assets 3D necesarios | 2026-09-14 → 2026-09-22 (+8d) | 2026-09-15 → 2026-09-23 (+8d) |  |  |
| 181 | AA.3 — Buscar assets de entorno compatibles con el estilo elegido | 2026-09-15 → 2026-09-23 (+8d) | 2026-09-17 → 2026-09-25 (+8d) |  |  |
| 182 | AA.4 — Revisar licencias de los assets seleccionados | 2026-09-17 → 2026-09-25 (+8d) | 2026-09-18 → 2026-09-28 (+10d) |  |  |
| 183 | AB.1 — Buscar modelo de batería adecuado | 2026-09-15 → 2026-09-23 (+8d) | 2026-09-16 → 2026-09-24 (+8d) |  |  |
| 184 | AB.2 — Revisar licencia del modelo de batería | 2026-09-16 → 2026-09-24 (+8d) | 2026-09-16 → 2026-09-24 (+8d) |  |  |
| 185 | AB.3 — Buscar o crear modelos definitivos de baquetas | 2026-09-15 → 2026-09-23 (+8d) | 2026-09-15 → 2026-09-23 (+8d) |  |  |
| 186 | AB.4 — Optimizar modelo de batería para VR | 2026-09-16 → 2026-09-24 (+8d) | 2026-09-17 → 2026-09-25 (+8d) |  |  |
| 187 | AB.5 — Optimizar materiales y texturas de la batería considerando la paleta de colores establecida | 2026-09-17 → 2026-09-25 (+8d) | 2026-09-18 → 2026-09-28 (+10d) |  |  |
| 188 | AB.6 — Preparar batería definitiva para integración en Unity | 2026-09-18 → 2026-09-28 (+10d) | 2026-09-21 → 2026-09-29 (+8d) |  |  |
| 189 | AP.1 — Crear primera composición del escenario en Unity | 2026-09-18 → 2026-09-28 (+10d) | 2026-09-22 → 2026-09-30 (+8d) |  |  |
| 190 | AP.2 — Determinar posición del jugador y batería dentro del escenario | 2026-09-22 → 2026-09-30 (+8d) | 2026-09-23 → 2026-10-01 (+8d) |  |  |
| 191 | AP.3 — Aplicar la paleta de colores seleccionada a modelos, materiales y elementos principales del escenario | 2026-09-22 → 2026-09-30 (+8d) | 2026-09-23 → 2026-10-01 (+8d) |  |  |
| 192 | AL.1 — Configurar iluminación inicial considerando la paleta de colores establecida | 2026-09-23 → 2026-10-01 (+8d) | 2026-09-24 → 2026-10-02 (+8d) |  |  |
| 193 | AL.2 — Configurar iluminación definitiva y ambiente visual | 2026-09-24 → 2026-10-02 (+8d) | 2026-09-25 → 2026-10-05 (+10d) |  |  |
| 194 | AD.1 — Añadir elementos ambientales secundarios | 2026-09-25 → 2026-10-05 (+10d) | 2026-09-28 → 2026-10-06 (+8d) |  |  |
| 195 | AD.2 — Reducir objetos que puedan distraer al usuario | 2026-09-28 → 2026-10-06 (+8d) | 2026-09-28 → 2026-10-06 (+8d) |  |  |
| 196 | AS — Crear límites visuales de seguridad del espacio de interacción | 2026-09-23 → 2026-10-01 (+8d) | 2026-09-24 → 2026-10-02 (+8d) |  |  |
| 197 | AO.1 — Optimizar texturas del escenario para VR | 2026-09-28 → 2026-10-06 (+8d) | 2026-09-29 → 2026-10-07 (+8d) |  |  |
| 198 | AO.2 — Configurar LOD en objetos que lo requieran | 2026-09-29 → 2026-10-07 (+8d) | 2026-09-30 → 2026-10-08 (+8d) |  |  |
| 199 | AO.3 — Revisar cantidad de luces en tiempo real | 2026-09-25 → 2026-10-05 (+10d) | 2026-09-25 → 2026-10-05 (+10d) |  |  |
| 200 | AO.4 — Preparar iluminación horneada cuando sea conveniente | 2026-09-25 → 2026-10-05 (+10d) | 2026-09-28 → 2026-10-06 (+8d) |  |  |
| 201 | AO.5 — Evaluar FPS del escenario en el visor objetivo | 2026-09-30 → 2026-10-08 (+8d) | 2026-10-01 → 2026-10-09 (+8d) |  |  |
| 202 | AO.6 — Optimizar escenario hasta cumplir rendimiento esperado | 2026-10-01 → 2026-10-09 (+8d) | 2026-10-02 → 2026-10-12 (+10d) |  |  |
| 203 | AR.1 — Revisar ambiente visual con el responsable de experiencia emocional para comprobar que colores, iluminación y escenario sean coherentes con la experiencia propuesta | 2026-09-25 → 2026-10-05 (+10d) | 2026-09-25 → 2026-10-05 (+10d) |  |  |
| 204 | AR.2 — Realizar ajustes finales de ambientación | 2026-09-28 → 2026-10-06 (+8d) | 2026-09-29 → 2026-10-07 (+8d) |  |  |
| 205 | **Q. QA, documentación y gestión** |  | 2026-10-19 → 2026-10-30 (+11d) | 29.25d → 38.25d |  |
| 213 | QP.8 — Crear diagrama de Gantt |  | 2026-09-16 → 2026-09-17 (+1d) |  |  |

| ID | Task | Start | Finish | Complete | Predecessors |
| --- | --- | --- | --- | --- | --- |
| 214 | QP.9 — Identificar ruta crítica del proyecto | 2026-09-16 → 2026-09-17 (+1d) | 2026-09-17 → 2026-09-18 (+1d) |  |  |
| 215 | QG.1 — Crear lista de riesgos técnicos, académicos y de tiempo | 2026-09-17 → 2026-09-18 (+1d) | 2026-09-18 → 2026-09-21 (+3d) |  |  |
| 216 | QG.2 — Definir acciones de mitigación para cada riesgo | 2026-09-18 → 2026-09-21 (+3d) | 2026-09-21 → 2026-09-22 (+1d) |  |  |
| 222 | QT.1 — Crear plan de pruebas de batería VR | 2026-09-16 → 2026-09-17 (+1d) | 2026-09-16 → 2026-09-17 (+1d) |  |  |
| 223 | QT.2 — Crear plan de pruebas del juego de ritmo | 2026-09-16 → 2026-09-17 (+1d) | 2026-09-16 → 2026-09-17 (+1d) |  |  |
| 224 | QT.3 — Crear plan de pruebas de interfaz | 2026-09-18 → 2026-09-21 (+3d) | 2026-09-21 → 2026-09-22 (+1d) |  |  |
| 225 | QT.4 — Crear plan de pruebas de audio | 2026-09-16 → 2026-09-17 (+1d) | 2026-09-16 → 2026-09-17 (+1d) |  |  |
| 226 | QT.5 — Crear plan de pruebas de rendimiento VR | 2026-09-16 → 2026-09-22 (+6d) | 2026-09-16 → 2026-09-23 (+7d) |  |  |
| 227 | QT.6 — Realizar pruebas unitarias de batería | 2026-09-21 → 2026-10-02 (+11d) | 2026-09-22 → 2026-10-05 (+13d) |  |  |
| 228 | QT.7 — Realizar pruebas del sistema de ritmo | 2026-10-01 → 2026-10-02 (+1d) | 2026-10-02 → 2026-10-05 (+3d) |  |  |
| 229 | QT.8 — Realizar pruebas con usuarios del prototipo integrado | 2026-09-07 → 2026-10-12 (+35d) | 2026-09-08 → 2026-10-14 (+36d) |  | none → 74, 170, 201, 70, 71, 139, 166, 167, 168, 196, 202, 204, 224, 225, 226, 227, 228 |
| 230 | QE.2 — Registrar errores, observaciones y sugerencias de usuarios | 2026-09-09 → 2026-10-14 (+35d) | 2026-09-09 → 2026-10-15 (+36d) |  |  |
| 231 | QE.3 — Clasificar errores por gravedad y prioridad | 2026-09-10 → 2026-10-15 (+35d) | 2026-09-10 → 2026-10-15 (+35d) |  |  |
| 232 | QE.4 — Asignar errores a las áreas correspondientes | 2026-09-10 → 2026-10-15 (+35d) | 2026-09-10 → 2026-10-16 (+36d) |  |  |
| 233 | QE.5 — Verificar corrección de errores críticos | 2026-09-11 → 2026-10-16 (+35d) | 2026-09-11 → 2026-10-19 (+38d) |  |  |
| 234 | QV.1 — Realizar prueba completa desde inicio hasta final de una sesión | 2026-09-14 → 2026-10-19 (+35d) | 2026-09-14 → 2026-10-20 (+36d) |  |  |
| 235 | QV.2 — Evaluar estabilidad y presencia de cierres inesperados | 2026-09-15 → 2026-10-20 (+35d) | 2026-09-15 → 2026-10-21 (+36d) |  |  |
| 236 | QV.3 — Medir FPS del proyecto en el visor objetivo | 2026-09-25 → 2026-10-20 (+25d) | 2026-09-28 → 2026-10-20 (+22d) |  |  |
| 237 | QV.4 — Evaluar latencia entre golpe físico, sonido y detección | 2026-09-22 → 2026-10-05 (+13d) | 2026-09-23 → 2026-10-06 (+13d) |  |  |
| 238 | QV.5 — Evaluar comodidad de la experiencia VR | 2026-09-09 → 2026-10-14 (+35d) | 2026-09-09 → 2026-10-15 (+36d) |  |  |
| 240 | QC.2 — Documentar avances semanales | 2026-09-07 A |  | 0% → 50% |  |
| 244 | QD.1 — Crear documentación de arquitectura del software | 2026-10-01 → 2026-10-02 (+1d) | 2026-10-05 → 2026-10-06 (+1d) |  |  |
| 245 | QD.2 — Crear diagrama del flujo general de la aplicación | 2026-09-21 → 2026-09-22 (+1d) | 2026-09-22 → 2026-09-23 (+1d) |  |  |
| 246 | QD.3 — Documentar funcionamiento del sistema de detección de golpes | 2026-09-17 → 2026-09-18 (+1d) | 2026-09-18 → 2026-09-21 (+3d) |  |  |
| 247 | QD.4 — Documentar funcionamiento del juego de ritmo | 2026-10-01 → 2026-10-02 (+1d) | 2026-10-02 → 2026-10-05 (+3d) |  |  |
| 248 | QD.5 — Documentar sistema de intensidad de los golpes | 2026-09-21 → 2026-09-22 (+1d) | 2026-09-22 → 2026-09-23 (+1d) |  |  |
| 249 | QD.6 — Documentar selección y fundamentación del entorno virtual | 2026-10-01 → 2026-10-09 (+8d) | 2026-10-02 → 2026-10-12 (+10d) |  |  |
| 250 | QD.7 — Documentar fundamentación de la música utilizada | 2026-10-08 → 2026-10-09 (+1d) | 2026-10-09 → 2026-10-12 (+3d) |  |  |
| 251 | QD.8 — Documentar diseño y funcionamiento de la interfaz | 2026-09-29 → 2026-09-30 (+1d) | 2026-09-30 → 2026-10-01 (+1d) |  |  |
| 252 | QM.1 — Elaborar manual básico de usuario | 2026-09-15 → 2026-10-20 (+35d) | 2026-09-16 → 2026-10-22 (+36d) |  |  |
| 253 | QM.2 — Elaborar manual técnico de instalación y ejecución | 2026-09-15 → 2026-10-20 (+35d) | 2026-09-15 → 2026-10-21 (+36d) |  |  |
| 254 | QF.1 — Preparar capturas de pantalla del proyecto | 2026-09-15 → 2026-10-20 (+35d) | 2026-09-15 → 2026-10-20 (+35d) |  |  |
| 255 | QF.2 — Grabar evidencia en video del funcionamiento | 2026-09-15 → 2026-10-20 (+35d) | 2026-09-15 → 2026-10-21 (+36d) |  |  |
| 256 | QI.1 — Analizar resultados obtenidos durante las pruebas | 2026-09-10 → 2026-10-15 (+35d) | 2026-09-11 → 2026-10-19 (+38d) |  |  |
| 257 | QI.2 — Redactar apartado de resultados del proyecto | 2026-09-14 → 2026-10-19 (+35d) | 2026-09-15 → 2026-10-21 (+36d) |  |  |
| 258 | QI.3 — Redactar conclusiones y limitaciones | 2026-09-16 → 2026-10-21 (+35d) | 2026-09-16 → 2026-10-22 (+36d) |  |  |
| 259 | QI.4 — Integrar todas las secciones del informe final | 2026-10-09 → 2026-10-22 (+13d) | 2026-10-13 → 2026-10-26 (+13d) |  |  |
| 260 | QI.5 — Revisar redacción, ortografía, referencias y formato | 2026-10-13 → 2026-10-26 (+13d) | 2026-10-15 → 2026-10-28 (+13d) |  |  |
| 261 | QB.1 — Generar build candidata a versión final | 2026-09-28 → 2026-10-21 (+23d) | 2026-09-29 → 2026-10-22 (+23d) |  |  |
| 262 | QB.2 — Probar build final en el visor VR objetivo | 2026-09-29 → 2026-10-22 (+23d) | 2026-09-30 → 2026-10-23 (+23d) |  |  |
| 263 | QB.3 — Corregir errores críticos encontrados en build final | 2026-09-30 → 2026-10-23 (+23d) | 2026-10-01 → 2026-10-26 (+25d) |  |  |
| 264 | QB.4 — Generar versión definitiva del videojuego | 2026-10-01 → 2026-10-26 (+25d) | 2026-10-02 → 2026-10-27 (+25d) |  |  |
| 265 | QX — Preparar presentación y demostración final del proyecto | 2026-10-15 → 2026-10-28 (+13d) | 2026-10-19 → 2026-10-30 (+11d) |  |  |

## Version 4 (saved 2026-09-21, file Cronograma_ProjectLibre.xml)

Note of the change: feat: carta de validacion de entregables y lista de verificacion corregida

Last finish 2026-10-30 → 2026-10-23 (-7d). Complete tasks 9 → 77.

Changed:

| ID | Task | Start | Finish | Duration | Complete | Other |
| --- | --- | --- | --- | --- | --- | --- |
| 1 | **D. Desarrollo VR y batería** |  | 2026-10-05 → 2026-09-22 (-13d) | 19.88d → 8.38d | 0% → 82% |  |
| 2 | DP.1 — Crear el proyecto base en Unity y definir la versión que utilizará todo el equipo |  |  |  | 0% → 100% |  |
| 3 | DP.2 — Configurar repositorio y estructura inicial de carpetas del proyecto |  |  |  | 0% → 100% |  |
| 4 | DP.3 — Configurar control de versiones y reglas para evitar conflictos entre desarrolladores |  |  | 0.5d → 0.62d | 0% → 100% |  |
| 5 | DX.1 — Instalar y configurar paquetes XR necesarios para realidad virtual |  |  |  | 0% → 100% |  |
| 6 | DX.2 — Configurar OpenXR y compatibilidad con el visor VR seleccionado |  |  |  | 0% → 100% |  |
| 7 | DX.3 — Crear escena técnica inicial para realizar pruebas de VR |  |  |  | 0% → 100% |  |
| 8 | DX.4 — Configurar XR Origin, cámara y seguimiento de cabeza |  |  |  | 0% → 100% |  |
| 9 | DX.5 — Configurar seguimiento de los controles derecho e izquierdo |  |  |  | 0% → 100% | constraint none → start no later than 2026-09-09 |
| 10 | DX.6 — Comprobar escala, altura y posición del jugador dentro del entorno VR |  |  |  | 0% → 100% | constraint none → start no later than 2026-09-09 |
| 12 | DB.1 — Crear versión provisional de las baquetas para pruebas |  |  |  | 0% → 100% |  |
| 13 | DB.2 — Configurar las baquetas como objetos interactuables |  |  | 0.62d → 0.38d |  |  |
| 14 | DB.3 — Ajustar posición de agarre de cada baqueta en los controles VR |  |  | 0.5d → 0.75d | 0% → 100% |  |
| 15 | DT.1 — Crear batería provisional con objetos simples para comenzar pruebas |  |  |  | 0% → 100% |  |
| 16 | DT.2 — Definir todos los componentes interactivos de la batería: snare, kick, toms, hi-hat, crash y ride |  |  | 0.5d → 0.75d | 0% → 100% |  |
| 18 | DG.1 — Crear sistema general de detección de golpe entre baqueta y batería |  |  |  | 0% → 100% |  |
| 19 | DG.2 — Identificar automáticamente qué pieza de la batería fue golpeada |  |  |  | 0% → 100% |  |
| 20 | DG.3 — Detectar velocidad de movimiento de la baqueta antes del impacto |  |  |  | 0% → 100% |  |
| 21 | DG.4 — Convertir la velocidad de la baqueta en un valor de intensidad de golpe |  | 2026-09-17 → 2026-09-16 (-1d) |  | 0% → 100% |  |
| 22 | DG.5 — Establecer niveles de intensidad suave, media y fuerte | 2026-09-17 → 2026-09-16 (-1d) | 2026-09-18 → 2026-09-17 (-1d) | 0.62d → 0.75d | 0% → 100% |  |
| 23 | DG.6 — Implementar sistema para evitar golpes duplicados provocados por una misma colisión |  |  |  | 0% → 100% |  |
| 24 | DH.1 — Configurar vibración háptica del controlador al golpear la batería |  |  | 0.62d → 0.75d | 0% → 100% |  |
| 25 | DH.2 — Ajustar la intensidad háptica de acuerdo con la fuerza del golpe | 2026-09-17 → 2026-09-16 (-1d) | 2026-09-18 → 2026-09-17 (-1d) | 0.5d → 0.75d | 0% → 100% |  |
| 26 | DG.7 — Crear evento general DrumHit que informe instrumento, intensidad y tiempo del golpe | 2026-09-17 → 2026-09-16 (-1d) | 2026-09-18 → 2026-09-17 (-1d) |  | 0% → 100% |  |
| 27 | DG.8 — Implementar soporte independiente para golpe con baqueta izquierda y derecha | 2026-09-18 → 2026-09-17 (-1d) | 2026-09-21 → 2026-09-18 (-3d) | 0.62d → 0.75d | 0% → 100% |  |
| 28 | DB.4 — Ajustar física de las baquetas para evitar vibraciones o movimientos extraños |  |  | 1d → 0.75d |  |  |
| 29 | DG.9 — Ajustar sensibilidad de las colisiones de batería |  | 2026-09-17 → 2026-09-16 (-1d) |  | 0% → 100% |  |
| 30 | DT.4 — Incorporar modelo 3D definitivo de la batería | 2026-09-29 → 2026-09-18 (-11d) | 2026-09-30 → 2026-09-18 (-12d) |  |  |  |
| 31 | DT.5 — Reconfigurar colliders utilizando el modelo definitivo | 2026-09-30 → 2026-09-07 (-23d) | 2026-10-01 → 2026-09-07 (-24d) | 1d → 0.38d |  |  |
| 32 | DT.6 — Ajustar posición y dimensiones de batería para una postura cómoda en VR | 2026-10-01 → 2026-09-14 (-17d) | 2026-10-01 → 2026-09-14 (-17d) |  | 0% → 100% |  |
| 33 | DR.1 — Realizar primera prueba completa de interacción física de la batería | 2026-10-01 → 2026-09-18 (-13d) | 2026-10-02 → 2026-09-21 (-11d) | 1d → 1.12d | 0% → 100% |  |
| 34 | DR.2 — Corregir errores detectados durante la primera prueba de batería | 2026-10-02 → 2026-09-21 (-11d) | 2026-10-05 → 2026-09-22 (-13d) | 1d → 1.12d | 0% → 100% |  |
| 35 | **J. Juego de ritmo** |  | 2026-10-15 → 2026-10-01 (-14d) | 27.25d → 14.88d | 0% → 5% |  |
| 36 | JA.1 — Definir técnicamente cómo funcionará el juego de ritmo | 2026-09-07 A → 2026-09-07 |  |  |  |  |
| 37 | JA.2 — Definir los datos necesarios para representar una nota musical dentro del juego |  |  | 0.62d → 0.38d |  |  |
| 40 | JT.2 — Implementar cálculo de BPM y duración de cada beat |  |  | 0.62d → 0.38d |  |  |
| 41 | JT.3 — Implementar cálculo de compases y subdivisiones rítmicas |  |  | 0.62d → 1d |  |  |
| 42 | JK — Crear sistema provisional de golpes utilizando teclado para desarrollar sin depender del VR |  |  | 0.62d → 1d |  |  |
| 43 | JB.1 — Crear prototipo de beatmap manual |  | 2026-09-10 → 2026-09-09 (-1d) | 1d → 0d |  |  |
| 44 | JB.2 — Crear sistema que cargue un beatmap |  | 2026-09-10 → 2026-09-09 (-1d) | 1d → 0d |  |  |
| 45 | JB.3 — Sincronizar beatmap con reproducción de música | 2026-09-10 → 2026-09-09 (-1d) | 2026-09-11 → 2026-09-10 (-1d) | 1d → 0.75d |  |  |
| 46 | JN.1 — Crear representación visual provisional de las notas | 2026-09-11 → 2026-09-10 (-1d) | 2026-09-14 → 2026-09-10 (-4d) | 1d → 0.25d |  |  |
| 47 | JN.2 — Crear sistema que indique qué componente de la batería debe golpearse | 2026-09-14 → 2026-09-10 (-4d) | 2026-09-15 → 2026-09-11 (-4d) | 1d → 0.5d |  |  |
| 48 | JW.1 — Definir ventanas temporales Perfect, Good y Miss | 2026-09-11 → 2026-09-10 (-1d) | 2026-09-14 → 2026-09-10 (-4d) | 0.62d → 0.25d |  |  |
| 49 | JW.2 — Programar detección de golpes correctos | 2026-09-14 → 2026-09-10 (-4d) | 2026-09-15 → 2026-09-11 (-4d) | 1d → 0.5d |  |  |
| 50 | JW.3 — Programar detección de golpes anticipados | 2026-09-15 → 2026-09-11 (-4d) | 2026-09-15 → 2026-09-11 (-4d) | 0.62d → 0d |  |  |
| 51 | JW.4 — Programar detección de golpes atrasados | 2026-09-15 → 2026-09-11 (-4d) | 2026-09-15 → 2026-09-11 (-4d) | 0.62d → 0d |  |  |
| 52 | JW.5 — Programar detección de notas no golpeadas | 2026-09-15 → 2026-09-11 (-4d) | 2026-09-15 → 2026-09-11 (-4d) | 0.62d → 0d |  |  |
| 53 | JP.1 — Crear sistema básico de puntuación | 2026-09-15 → 2026-09-11 (-4d) | 2026-09-17 → 2026-09-14 (-3d) | 1d → 0.5d |  |  |
| 54 | JP.2 — Crear sistema de combo o golpes consecutivos | 2026-09-17 → 2026-09-14 (-3d) | 2026-09-18 → 2026-09-14 (-4d) | 0.62d → 0d |  |  |
| 55 | JP.3 — Crear cálculo de precisión porcentual del usuario | 2026-09-17 → 2026-09-14 (-3d) | 2026-09-18 → 2026-09-14 (-4d) | 0.62d → 0d |  |  |
| 56 | JP.4 — Crear resumen de resultados al terminar una canción | 2026-09-24 → 2026-09-22 (-2d) | 2026-09-25 → 2026-09-23 (-2d) | 1d → 1.25d |  |  |
| 57 | JI.1 — Integrar evento DrumHit de la batería VR con el juego de ritmo | 2026-09-18 → 2026-09-17 (-1d) | 2026-09-21 → 2026-09-18 (-3d) | 1d → 0.75d |  |  |
| 58 | JI.2 — Sustituir controles provisionales de teclado por interacción VR | 2026-09-21 → 2026-09-18 (-3d) | 2026-09-22 → 2026-09-21 (-1d) | 0.62d → 1d |  |  |
| 59 | JI.3 — Implementar detección de intensidad del golpe dentro del juego | 2026-09-21 → 2026-09-18 (-3d) | 2026-09-22 → 2026-09-21 (-1d) |  |  |  |
| 60 | JI.4 — Diseñar mecánicas en las que determinados golpes requieran distinta intensidad | 2026-09-28 → 2026-09-25 (-3d) | 2026-09-29 → 2026-09-28 (-1d) | 1d → 0.88d |  | constraint none → start no later than 2026-09-25 |
| 61 | JF.1 — Crear feedback visual inmediato de acierto o error | 2026-09-23 → 2026-09-11 (-12d) | 2026-09-23 → 2026-09-14 (-9d) | 1d → 0.5d |  | constraint none → start no later than 2026-09-14 |
| 62 | JF.2 — Crear feedback auditivo para aciertos, errores e interacción | 2026-09-15 → 2026-09-11 (-4d) | 2026-09-15 → 2026-09-11 (-4d) | 0.62d → 0d |  |  |
| 63 | JC.1 — Implementar cuenta regresiva antes de iniciar una canción | 2026-09-11 → 2026-09-10 (-1d) | 2026-09-14 → 2026-09-10 (-4d) | 0.62d → 0.25d |  |  |
| 64 | JC.2 — Crear sistema de pausa y reanudación | 2026-09-23 → 2026-09-21 (-2d) | 2026-09-24 → 2026-09-22 (-2d) | 1d → 0.75d |  |  |
| 65 | JC.3 — Crear sistema para reiniciar una actividad | 2026-09-24 → 2026-09-22 (-2d) | 2026-09-25 → 2026-09-22 (-3d) | 0.62d → 0.12d |  |  |
| 66 | JC.4 — Crear sistema para abandonar una actividad y regresar al menú | 2026-09-24 → 2026-09-22 (-2d) | 2026-09-25 → 2026-09-22 (-3d) | 0.62d → 0.12d |  |  |
| 67 | JL.1 — Crear diferentes niveles de dificultad | 2026-09-29 → 2026-09-28 (-1d) | 2026-09-30 → 2026-09-29 (-1d) | 1d → 0.88d |  | constraint none → start no later than 2026-09-28 |
| 68 | JL.2 — Programar selección de dificultad antes de iniciar | 2026-09-30 → 2026-09-29 (-1d) | 2026-09-30 → 2026-09-29 (-1d) | 0.62d → 0d |  |  |
| 69 | JM.1 — Crear modo libre sin puntuación ni notas obligatorias | 2026-09-18 → 2026-09-17 (-1d) | 2026-09-21 → 2026-09-18 (-3d) | 1d → 0.75d |  |  |
| 70 | JM.2 — Permitir seleccionar música de fondo en modo libre | 2026-10-08 → 2026-09-18 (-20d) | 2026-10-08 → 2026-09-21 (-17d) | 0.62d → 1d |  |  |
| 71 | JM.3 — Permitir tocar sin música en modo libre | 2026-09-21 → 2026-09-18 (-3d) | 2026-09-21 → 2026-09-18 (-3d) | 0.38d → 0d |  |  |
| 72 | JY — Crear sistema de calibración de latencia entre golpe y música | 2026-09-22 → 2026-09-21 (-1d) | 2026-09-23 → 2026-09-21 (-2d) | 1d → 0d |  |  |
| 73 | JW.6 — Ajustar ventanas de precisión después de pruebas de usuarios | 2026-10-14 → 2026-09-11 (-33d) | 2026-10-15 → 2026-09-14 (-31d) |  |  |  |
| 74 | JI.5 — Integrar juego de ritmo completo con flujo general de la experiencia | 2026-09-30 → 2026-09-29 (-1d) | 2026-10-02 → 2026-09-30 (-2d) | 2d → 0.5d |  |  |

| ID | Task | Start | Finish | Duration | Complete | Predecessors | Other |
| --- | --- | --- | --- | --- | --- | --- | --- |
| 75 | **E. Experiencia emocional** |  | 2026-10-15 → 2026-09-18 (-27d) | 27.25d → 10d | 0% → 96% |  |  |
| 76 | EO.1 — Definir objetivo general de la experiencia emocional | 2026-09-07 A → 2026-09-07 |  |  |  |  |  |
| 77 | EO.2 — Definir alcance y límites del proyecto respecto al concepto de terapia | 2026-09-07 A → 2026-09-07 |  |  |  |  | constraint none → start no later than 2026-09-07 |
| 78 | EB.1 — Buscar bibliografía científica sobre música y regulación emocional | 2026-09-07 A → 2026-09-07 |  |  |  |  |  |
| 79 | EB.2 — Buscar bibliografía científica sobre percusión y expresión emocional | 2026-09-07 A → 2026-09-07 |  |  |  |  |  |
| 80 | EB.3 — Buscar investigaciones sobre juegos de ritmo relacionados con bienestar y expresión emocional | 2026-09-07 A → 2026-09-07 |  |  |  |  |  |
| 81 | EB.4 — Seleccionar estudios científicos que realmente sustentarán el proyecto | 2026-09-09 A → 2026-09-09 |  |  |  |  |  |
| 82 | EB.5 — Crear matriz bibliográfica de artículos, objetivo, metodología y resultados |  |  |  | 0% → 100% |  |  |
| 83 | EE.1 — Definir qué emociones serán abordadas dentro de la simulación |  |  |  | 0% → 100% |  |  |
| 84 | EE.2 — Definir qué actividades se relacionarán con cada emoción |  |  |  | 0% → 100% |  |  |
| 85 | EE.3 — Determinar duración aproximada de una sesión |  |  | 0.62d → 0.38d | 0% → 100% |  |  |
| 86 | ER — Investigar postura, comodidad y ergonomía durante actividades de percusión VR |  |  |  | 0% → 100% |  |  |
| 87 | EG.1 — Redactar el guion de introducción general de la terapia |  |  |  | 0% → 100% |  |  |
| 88 | EG.2 — Redactar las instrucciones específicas de la actividad terapéutica |  |  |  | 0% → 100% |  |  |
| 89 | EF — Diseñar flujo completo de experiencia desde ingreso hasta finalización |  | 2026-09-17 → 2026-09-16 (-1d) |  | 0% → 100% |  |  |
| 90 | EG.3 — Redactar el guion del tutorial introductorio | 2026-09-18 → 2026-09-17 (-1d) | 2026-09-18 → 2026-09-17 (-1d) |  | 0% → 100% |  |  |
| 91 | EI — Definir cómo se utilizarán el ritmo y la intensidad de los golpes para expresar las emociones seleccionadas |  |  |  | 0% → 100% |  |  |
| 92 | EG.4 — Redactar el guion de cierre de la experiencia terapéutica | 2026-09-18 → 2026-09-17 (-1d) | 2026-09-18 → 2026-09-17 (-1d) | 0.62d → 0.38d | 0% → 100% |  |  |
| 93 | ET.1 — Redactar la fundamentación teórica de la propuesta terapéutica |  | 2026-09-18 → 2026-09-17 (-1d) |  | 0% → 100% |  |  |
| 94 | ET.2 — Revisar y actualizar la fundamentación según el funcionamiento final del prototipo | 2026-10-14 → 2026-09-18 (-26d) | 2026-10-15 → 2026-09-18 (-27d) |  |  |  |  |
| 95 | **M. Música** |  |  | 23.25d → 19.75d | 0% → 7% |  |  |
| 97 | MR.2 — Analizar BPM utilizados en las referencias encontradas | 2026-09-17 → 2026-09-16 (-1d) | 2026-09-17 → 2026-09-16 (-1d) |  |  |  |  |
| 98 | MR.3 — Analizar compases y patrones rítmicos apropiados para principiantes | 2026-09-17 → 2026-09-16 (-1d) | 2026-09-17 → 2026-09-16 (-1d) |  |  |  |  |
| 99 | MR.4 — Definir estilos musicales que utilizará el proyecto | 2026-09-18 → 2026-09-17 (-1d) | 2026-09-18 → 2026-09-17 (-1d) |  |  |  |  |
| 100 | MR.5 — Definir duración de las pistas musicales | 2026-09-21 → 2026-09-18 (-3d) | 2026-09-21 → 2026-09-18 (-3d) | 0.62d → 0.38d |  |  |  |
| 101 | ML.1 — Determinar si se utilizará música original, libre de derechos o licenciada | 2026-09-07 A → 2026-09-07 |  |  |  |  |  |
| 102 | ML.2 — Investigar licencias de las pistas o recursos musicales considerados | 2026-09-07 A → 2026-09-07 |  |  |  |  | constraint none → start no later than 2026-09-07 |
| 103 | MP.1 — Crear o seleccionar primera pista musical de prueba | 2026-09-21 → 2026-09-18 (-3d) | 2026-09-23 → 2026-09-22 (-1d) |  |  |  |  |
| 104 | MP.2 — Determinar BPM exacto de la primera pista | 2026-09-23 → 2026-09-22 (-1d) | 2026-09-23 → 2026-09-22 (-1d) | 0.38d → 0d |  |  |  |
| 105 | MP.3 — Identificar estructura musical de la primera pista | 2026-09-23 → 2026-09-22 (-1d) | 2026-09-24 → 2026-09-22 (-2d) | 0.62d → 0d |  |  |  |
| 106 | MB.1 — Crear patrón básico de batería para la primera pista | 2026-09-24 → 2026-09-22 (-2d) | 2026-09-25 → 2026-09-24 (-1d) | 1d → 1.75d |  |  |  |
| 107 | MB.2 — Definir momentos donde se utilizarán golpes suaves, medios o fuertes | 2026-09-25 → 2026-09-24 (-1d) | 2026-09-28 → 2026-09-25 (-3d) | 1d → 1.25d |  |  |  |
| 108 | MB.3 — Crear versiones de dificultad Tutorial, Fácil e Intermedio del patrón | 2026-09-25 → 2026-09-24 (-1d) | 2026-09-29 → 2026-09-28 (-1d) | 2d → 2.25d |  |  |  |
| 109 | MB.4 — Convertir patrón rítmico en información utilizable para el beatmap | 2026-09-29 → 2026-09-28 (-1d) | 2026-09-30 → 2026-09-29 (-1d) | 1d → 0.88d |  |  | constraint none → start no later than 2026-09-28 |
| 110 | MB.5 — Probar primer beatmap junto con el desarrollador | 2026-09-30 → 2026-09-29 (-1d) | 2026-10-01 → 2026-09-30 (-1d) | 1d → 0.62d |  |  |  |
| 111 | MB.6 — Corregir patrones que resulten poco cómodos o confusos | 2026-10-01 → 2026-09-30 (-1d) | 2026-10-02 → 2026-10-01 (-1d) | 1d → 0.5d |  |  |  |
| 112 | MA.1 — Crear o seleccionar pistas adicionales | 2026-10-02 → 2026-10-01 (-1d) | 2026-10-07 → 2026-10-06 (-1d) | 3d → 2.88d |  |  | constraint none → start no later than 2026-10-01 |
| 113 | MA.2 — Preparar pistas para modo libre | 2026-10-07 → 2026-09-07 (-30d) | 2026-10-08 → 2026-09-07 (-31d) |  |  | 112 → none |  |
| 114 | MN.1 — Normalizar formato, frecuencia de muestreo y volumen de todas las pistas | 2026-10-07 → 2026-10-06 (-1d) | 2026-10-08 → 2026-10-07 (-1d) |  |  |  |  |
| 115 | MN.2 — Documentar BPM, duración, compás y finalidad de cada pista | 2026-10-08 → 2026-10-07 (-1d) | 2026-10-09 → 2026-10-07 (-2d) | 1d → 0.25d |  |  |  |
| 116 | **S. Sonido** |  | 2026-10-05 → 2026-09-25 (-10d) | 19.25d → 11d | 0% → 3% |  |  |
| 117 | SP.1 — Crear lista de todos los sonidos necesarios para el proyecto |  |  | 0.62d → 0.38d | 0% → 100% |  |  |
| 119 | SB.1 — Buscar sonido de kick |  |  | 0.38d → 0d |  |  |  |
| 120 | SB.2 — Buscar sonido de snare |  |  | 0.38d → 0d |  |  |  |
| 121 | SB.3 — Buscar sonidos de toms |  | 2026-09-09 → 2026-09-08 (-1d) | 0.5d → 0d |  |  |  |
| 122 | SB.4 — Buscar sonidos de hi-hat abierto y cerrado |  | 2026-09-09 → 2026-09-08 (-1d) | 0.5d → 0d |  |  |  |
| 123 | SB.5 — Buscar sonidos de crash y ride |  | 2026-09-09 → 2026-09-08 (-1d) | 0.5d → 0d |  |  |  |
| 124 | SB.6 — Seleccionar tres niveles de intensidad para cada componente principal | 2026-09-09 → 2026-09-08 (-1d) |  | 2d → 2.75d |  |  |  |
| 125 | SE.1 — Editar inicio y final de cada muestra para evitar retrasos |  |  | 1d → 1.25d |  |  |  |
| 126 | SE.2 — Eliminar ruidos innecesarios de las muestras |  |  | 1d → 1.25d |  |  |  |
| 128 | SE.4 — Exportar sonidos en formato apropiado para Unity |  |  | 0.62d → 0d |  |  |  |
| 129 | SM.1 — Crear Audio Mixer dentro de Unity |  | 2026-09-17 → 2026-09-15 (-2d) | 0.62d → 0d |  |  |  |
| 130 | SM.2 — Separar canales de batería, música, ambiente e interfaz | 2026-09-17 → 2026-09-15 (-2d) | 2026-09-17 → 2026-09-16 (-1d) | 0.62d → 0.5d |  |  |  |
| 131 | SI.1 — Integrar sonidos de batería con sistema DrumHit | 2026-09-18 → 2026-09-17 (-1d) | 2026-09-21 → 2026-09-18 (-3d) | 1d → 0.75d |  |  |  |
| 132 | SI.2 — Asignar sonidos diferentes según intensidad del golpe | 2026-09-21 → 2026-09-18 (-3d) | 2026-09-22 → 2026-09-21 (-1d) |  |  |  |  |
| 133 | SI.3 — Configurar volumen espacial de la batería dentro del entorno VR | 2026-09-21 → 2026-09-18 (-3d) | 2026-09-22 → 2026-09-21 (-1d) |  |  |  |  |
| 134 | SI.4 — Medir retraso perceptible entre impacto y reproducción del sonido | 2026-09-21 → 2026-09-18 (-3d) | 2026-09-22 → 2026-09-21 (-1d) |  |  |  |  |
| 135 | SU — Buscar y preparar sonidos para botones, aciertos y errores |  | 2026-09-09 → 2026-09-08 (-1d) | 1d → 0d |  |  |  |
| 136 | SA.1 — Buscar o producir sonidos ambientales para el escenario | 2026-09-23 → 2026-09-14 (-9d) | 2026-09-24 → 2026-09-16 (-8d) | 1d → 1.75d |  |  |  |
| 137 | SA.2 — Integrar ambiente sonoro con escenario final | 2026-10-01 → 2026-09-23 (-8d) | 2026-10-02 → 2026-09-24 (-8d) | 1d → 0.5d |  |  |  |
| 138 | SC.1 — Crear controles independientes de volumen para música, batería y ambiente | 2026-09-24 → 2026-09-22 (-2d) | 2026-09-25 → 2026-09-22 (-3d) | 1d → 0d |  |  |  |
| 139 | SC.2 — Realizar mezcla general de audio | 2026-10-02 → 2026-09-24 (-8d) | 2026-10-05 → 2026-09-25 (-10d) | 1d → 0.88d |  |  | constraint none → start no later than 2026-09-24 |
| 140 | **I. Interfaz / UX/UI** | 2026-09-11 → 2026-09-10 (-1d) | 2026-10-15 → 2026-09-30 (-15d) | 22.62d → 8.88d | 0% → 28% |  |  |
| 141 | IM.1 — Definir mapa completo de pantallas de la aplicación | 2026-09-18 → 2026-09-17 (-1d) | 2026-09-21 → 2026-09-18 (-3d) |  | 0% → 100% |  |  |
| 142 | IM.2 — Definir navegación entre menú, experiencia guiada, juego y modo libre | 2026-09-21 → 2026-09-18 (-3d) | 2026-09-22 → 2026-09-18 (-4d) | 1d → 0.75d | 0% → 100% |  |  |
| 143 | IW.1 — Crear wireframe del menú principal | 2026-09-22 → 2026-09-18 (-4d) | 2026-09-23 → 2026-09-21 (-2d) | 0.62d → 0.75d | 0% → 100% |  |  |
| 144 | IW.2 — Crear wireframe de selección de modo | 2026-09-22 → 2026-09-18 (-4d) | 2026-09-23 → 2026-09-21 (-2d) | 0.5d → 0.75d | 0% → 100% |  |  |
| 145 | IW.3 — Crear wireframe de selección emocional | 2026-09-22 → 2026-09-18 (-4d) | 2026-09-23 → 2026-09-21 (-2d) | 0.62d → 0.75d | 0% → 100% |  |  |
| 146 | IW.4 — Crear wireframe del tutorial | 2026-09-22 → 2026-09-18 (-4d) | 2026-09-23 → 2026-09-21 (-2d) | 1d → 0.5d |  |  |  |
| 147 | IW.5 — Crear wireframe de pantalla previa al juego | 2026-09-22 → 2026-09-18 (-4d) | 2026-09-23 → 2026-09-21 (-2d) | 0.5d → 0.75d | 0% → 100% |  |  |

| ID | Task | Start | Finish | Duration | Complete | Predecessors | Other |
| --- | --- | --- | --- | --- | --- | --- | --- |
| 148 | IW.6 — Crear wireframe de resultados | 2026-09-22 → 2026-09-18 (-4d) | 2026-09-23 → 2026-09-21 (-2d) |  |  |  |  |
| 149 | IS.1 — Crear interfaz para selección de canción y dificultad | 2026-09-29 → 2026-09-21 (-8d) | 2026-09-30 → 2026-09-22 (-8d) | 1d → 0.75d |  | 108, 143 → 143 |  |
| 150 | IS.2 — Diseñar menú de configuración | 2026-09-23 → 2026-09-21 (-2d) | 2026-09-24 → 2026-09-22 (-2d) | 1d → 0.75d |  |  |  |
| 151 | IS.3 — Diseñar controles para volumen de música, batería y ambiente | 2026-09-24 → 2026-09-22 (-2d) | 2026-09-24 → 2026-09-22 (-2d) | 0.62d → 0d |  |  |  |
| 152 | IS.4 — Diseñar menú de pausa | 2026-09-23 → 2026-09-21 (-2d) | 2026-09-23 → 2026-09-21 (-2d) | 0.62d → 0d |  |  |  |
| 153 | IS.5 — Diseñar pantalla de confirmación para salir o reiniciar | 2026-09-23 → 2026-09-21 (-2d) | 2026-09-24 → 2026-09-22 (-2d) | 0.5d → 0.75d |  |  |  |
| 154 | IS.6 — Diseñar presentación de resultados finales | 2026-09-23 → 2026-09-21 (-2d) | 2026-09-24 → 2026-09-22 (-2d) |  |  |  |  |
| 155 | IE — Definir estilo visual general de la interfaz | 2026-09-21 → 2026-09-11 (-10d) | 2026-09-21 → 2026-09-14 (-7d) |  |  |  |  |
| 156 | IG.1 — Diseñar indicadores visuales de Perfect, Good y Miss | 2026-09-22 → 2026-09-10 (-12d) | 2026-09-22 → 2026-09-10 (-12d) |  | 0% → 100% | 155, 48 → 155 |  |
| 157 | IG.2 — Diseñar representación definitiva de las notas del juego | 2026-09-22 → 2026-09-11 (-11d) | 2026-09-22 → 2026-09-15 (-7d) | 1d → 2d | 0% → 100% |  |  |
| 158 | IG.3 — Diseñar indicadores para señalar el tambor que debe golpearse | 2026-09-23 → 2026-09-14 (-9d) | 2026-09-23 → 2026-09-14 (-9d) | 1d → 0.75d | 0% → 100% |  |  |
| 160 | IT.2 — Diseñar tutorial para explicar cómo seguir el ritmo | 2026-09-15 → 2026-09-11 (-4d) | 2026-09-17 → 2026-09-14 (-3d) | 1d → 0.5d |  |  | constraint none → start no later than 2026-09-14 |
| 161 | IT.3 — Diseñar tutorial para explicar la intensidad de los golpes | 2026-09-18 → 2026-09-17 (-1d) | 2026-09-21 → 2026-09-18 (-3d) |  |  |  |  |
| 162 | IT.4 — Implementar flujo del tutorial completo | 2026-09-24 → 2026-09-18 (-6d) | 2026-09-25 → 2026-09-22 (-3d) |  |  | 159, 160, 161, 90, 158 → 159, 161, 90 | constraint none → start no later than 2026-09-18 |
| 163 | II.1 — Importar recursos gráficos de Canva/Figma a Unity | 2026-09-23 → 2026-09-21 (-2d) | 2026-09-24 → 2026-09-22 (-2d) | 1d → 0.75d |  |  |  |
| 164 | II.2 — Implementar menú principal dentro de Unity | 2026-09-24 → 2026-09-22 (-2d) | 2026-09-25 → 2026-09-23 (-2d) |  |  |  |  |
| 165 | II.3 — Implementar interacción con botones utilizando controlador VR | 2026-09-25 → 2026-09-23 (-2d) | 2026-09-28 → 2026-09-23 (-5d) | 1d → 0d |  |  |  |
| 166 | II.4 — Implementar configuración de volumen | 2026-09-28 → 2026-09-23 (-5d) | 2026-09-29 → 2026-09-24 (-5d) | 1d → 0.75d |  |  |  |
| 167 | II.5 — Implementar menú de pausa | 2026-09-28 → 2026-09-23 (-5d) | 2026-09-29 → 2026-09-24 (-5d) | 1d → 0.75d |  |  |  |
| 168 | II.6 — Implementar pantalla de resultados | 2026-09-25 → 2026-09-22 (-3d) | 2026-09-28 → 2026-09-23 (-5d) | 1d → 1.25d |  |  |  |
| 169 | IR.1 — Revisar legibilidad de textos dentro del visor VR | 2026-09-28 → 2026-09-23 (-5d) | 2026-09-29 → 2026-09-24 (-5d) | 1d → 0.75d |  |  |  |
| 170 | IR.2 — Revisar tamaño, distancia y posición de paneles | 2026-09-29 → 2026-09-24 (-5d) | 2026-09-30 → 2026-09-24 (-6d) | 1d → 0.25d |  |  |  |
| 171 | IR.3 — Corregir problemas de navegación encontrados en pruebas | 2026-10-14 → 2026-09-11 (-33d) | 2026-10-15 → 2026-09-14 (-31d) |  |  |  |  |
| 172 | **A. Entorno 3D y assets** | 2026-09-08 → 2026-09-07 (-1d) | 2026-10-12 → 2026-10-06 (-6d) | 22.62d → 16.88d | 0% → 4% |  |  |
| 174 | AE.2 — Comparar posibles ambientes: naturaleza, estudio musical, espacio minimalista y otros | 2026-09-17 → 2026-09-07 (-10d) | 2026-09-17 → 2026-09-07 (-10d) |  |  |  |  |
| 175 | AE.3 — Definir dirección artística general del escenario | 2026-09-18 → 2026-09-08 (-10d) | 2026-09-18 → 2026-09-08 (-10d) |  |  |  |  |
| 177 | AC.2 — Definir paleta de colores y criterios para aplicarla en los modelos 3D y el entorno según la experiencia emocional propuesta | 2026-09-21 → 2026-09-11 (-10d) | 2026-09-21 → 2026-09-11 (-10d) | 0.62d → 0.38d |  |  |  |
| 178 | AC.3 — Crear moodboard visual del escenario incorporando la dirección artística y la paleta de colores seleccionada | 2026-09-21 → 2026-09-11 (-10d) | 2026-09-22 → 2026-09-14 (-8d) |  |  |  |  |
| 179 | AA.1 — Crear lista de todos los assets 3D necesarios | 2026-09-22 → 2026-09-14 (-8d) | 2026-09-23 → 2026-09-14 (-9d) | 0.62d → 0d |  |  |  |
| 180 | AA.2 — Definir límites de polígonos y rendimiento adecuados para VR |  |  | 1d → 0.75d |  |  |  |
| 181 | AA.3 — Buscar assets de entorno compatibles con el estilo elegido | 2026-09-23 → 2026-09-14 (-9d) | 2026-09-25 → 2026-09-17 (-8d) | 2d → 2.75d |  |  |  |
| 182 | AA.4 — Revisar licencias de los assets seleccionados | 2026-09-25 → 2026-09-17 (-8d) | 2026-09-28 → 2026-09-18 (-10d) | 1d → 1.25d |  |  |  |
| 183 | AB.1 — Buscar modelo de batería adecuado | 2026-09-23 → 2026-09-14 (-9d) | 2026-09-24 → 2026-09-16 (-8d) | 1d → 1.75d |  |  |  |
| 184 | AB.2 — Revisar licencia del modelo de batería | 2026-09-24 → 2026-09-16 (-8d) | 2026-09-24 → 2026-09-16 (-8d) | 0.38d → 0.25d |  |  |  |
| 185 | AB.3 — Buscar o crear modelos definitivos de baquetas | 2026-09-23 → 2026-09-14 (-9d) | 2026-09-23 → 2026-09-15 (-8d) | 0.62d → 0.75d |  |  |  |
| 186 | AB.4 — Optimizar modelo de batería para VR | 2026-09-24 → 2026-09-16 (-8d) | 2026-09-25 → 2026-09-16 (-9d) | 1d → 0d |  |  |  |
| 187 | AB.5 — Optimizar materiales y texturas de la batería considerando la paleta de colores establecida | 2026-09-25 → 2026-09-16 (-9d) | 2026-09-28 → 2026-09-17 (-11d) | 1d → 0.62d |  |  |  |
| 188 | AB.6 — Preparar batería definitiva para integración en Unity | 2026-09-28 → 2026-09-17 (-11d) | 2026-09-29 → 2026-09-17 (-12d) | 0.62d → 0.75d |  |  |  |
| 189 | AP.1 — Crear primera composición del escenario en Unity | 2026-09-28 → 2026-09-18 (-10d) | 2026-09-30 → 2026-09-22 (-8d) | 2d → 1.88d |  |  | constraint none → start no later than 2026-09-18 |
| 190 | AP.2 — Determinar posición del jugador y batería dentro del escenario | 2026-09-30 → 2026-09-22 (-8d) | 2026-10-01 → 2026-09-23 (-8d) | 1d → 0.62d |  |  |  |
| 191 | AP.3 — Aplicar la paleta de colores seleccionada a modelos, materiales y elementos principales del escenario | 2026-09-30 → 2026-09-22 (-8d) | 2026-10-01 → 2026-09-23 (-8d) | 1d → 0.62d |  |  |  |
| 192 | AL.1 — Configurar iluminación inicial considerando la paleta de colores establecida | 2026-10-01 → 2026-09-23 (-8d) | 2026-10-02 → 2026-09-24 (-8d) | 1d → 1.12d | 0% → 100% |  |  |
| 193 | AL.2 — Configurar iluminación definitiva y ambiente visual | 2026-10-02 → 2026-09-24 (-8d) | 2026-10-05 → 2026-09-25 (-10d) | 1d → 0.88d |  |  | constraint none → start no later than 2026-09-24 |
| 194 | AD.1 — Añadir elementos ambientales secundarios | 2026-10-05 → 2026-09-25 (-10d) | 2026-10-06 → 2026-09-28 (-8d) |  |  |  |  |
| 195 | AD.2 — Reducir objetos que puedan distraer al usuario | 2026-10-06 → 2026-09-28 (-8d) | 2026-10-06 → 2026-09-28 (-8d) | 0.62d → 0d |  |  |  |
| 196 | AS — Crear límites visuales de seguridad del espacio de interacción | 2026-10-01 → 2026-09-23 (-8d) | 2026-10-02 → 2026-09-24 (-8d) | 1d → 0.5d |  |  |  |
| 197 | AO.1 — Optimizar texturas del escenario para VR | 2026-10-06 → 2026-09-28 (-8d) | 2026-10-07 → 2026-09-28 (-9d) | 1d → 0.25d |  |  |  |
| 198 | AO.2 — Configurar LOD en objetos que lo requieran | 2026-10-07 → 2026-09-28 (-9d) | 2026-10-08 → 2026-09-30 (-8d) | 1d → 1.62d |  |  |  |
| 199 | AO.3 — Revisar cantidad de luces en tiempo real | 2026-10-05 → 2026-09-25 (-10d) | 2026-10-05 → 2026-09-25 (-10d) | 0.62d → 0d |  |  |  |
| 200 | AO.4 — Preparar iluminación horneada cuando sea conveniente | 2026-10-05 → 2026-09-25 (-10d) | 2026-10-06 → 2026-09-25 (-11d) | 1d → 0.62d |  |  |  |
| 201 | AO.5 — Evaluar FPS del escenario en el visor objetivo | 2026-10-08 → 2026-09-30 (-8d) | 2026-10-09 → 2026-10-01 (-8d) | 1d → 1.12d |  |  |  |
| 202 | AO.6 — Optimizar escenario hasta cumplir rendimiento esperado | 2026-10-09 → 2026-10-01 (-8d) | 2026-10-12 → 2026-10-02 (-10d) | 1d → 0.75d |  |  |  |
| 203 | AR.1 — Revisar ambiente visual con el responsable de experiencia emocional para comprobar que colores, iluminación y escenario sean coherentes con la experiencia propuesta | 2026-10-05 → 2026-09-25 (-10d) | 2026-10-05 → 2026-09-25 (-10d) | 0.62d → 0d |  |  |  |
| 204 | AR.2 — Realizar ajustes finales de ambientación | 2026-10-06 → 2026-09-28 (-8d) | 2026-10-07 → 2026-09-28 (-9d) | 1d → 0.25d |  |  |  |
| 205 | **Q. QA, documentación y gestión** |  | 2026-10-30 → 2026-10-23 (-7d) | 38.25d → 27.62d | 0% → 31% |  |  |
| 206 | QP.1 — Definir alcance general del proyecto |  |  |  | 0% → 100% |  |  |
| 207 | QP.2 — Definir objetivos generales y específicos |  |  |  | 0% → 100% |  |  |
| 208 | QP.3 — Identificar entregables principales del proyecto |  |  | 0.62d → 0.38d | 0% → 100% |  |  |
| 209 | QP.4 — Elaborar EDT/WBS completa de tareas |  |  |  | 0% → 100% |  |  |
| 210 | QP.5 — Asignar responsables principales para cada tarea |  | 2026-09-14 → 2026-09-11 (-3d) | 1d → 0.75d | 0% → 100% |  |  |
| 211 | QP.6 — Establecer dependencias entre tareas |  | 2026-09-14 → 2026-09-11 (-3d) | 1d → 0.75d | 0% → 100% |  |  |
| 212 | QP.7 — Crear cronograma inicial del proyecto | 2026-09-14 → 2026-09-11 (-3d) | 2026-09-15 → 2026-09-14 (-1d) | 1d → 0.75d | 0% → 100% |  |  |
| 213 | QP.8 — Crear diagrama de Gantt | 2026-09-15 → 2026-09-14 (-1d) | 2026-09-17 → 2026-09-15 (-2d) | 1d → 0.75d | 0% → 100% |  |  |
| 214 | QP.9 — Identificar ruta crítica del proyecto | 2026-09-17 → 2026-09-15 (-2d) | 2026-09-18 → 2026-09-16 (-2d) |  | 0% → 100% |  |  |
| 215 | QG.1 — Crear lista de riesgos técnicos, académicos y de tiempo | 2026-09-18 → 2026-09-16 (-2d) | 2026-09-21 → 2026-09-16 (-5d) | 1d → 0.75d | 0% → 100% |  |  |
| 216 | QG.2 — Definir acciones de mitigación para cada riesgo | 2026-09-21 → 2026-09-16 (-5d) | 2026-09-22 → 2026-09-17 (-5d) | 1d → 0.5d |  |  |  |
| 217 | QR.1 — Definir requisitos funcionales de la simulación |  |  |  | 0% → 100% |  |  |
| 218 | QR.2 — Definir requisitos no funcionales |  |  |  | 0% → 100% |  |  |
| 219 | QR.3 — Crear criterios de aceptación para cada requisito |  |  |  | 0% → 100% |  |  |
| 220 | QR.4 — Crear matriz de trazabilidad entre requisitos y funcionalidades |  |  |  | 0% → 100% |  |  |

| ID | Task | Start | Finish | Duration | Complete | Predecessors | Other |
| --- | --- | --- | --- | --- | --- | --- | --- |
| 221 | QE.1 — Establecer formato para documentar errores |  |  | 0.62d → 0.38d | 0% → 100% |  |  |
| 222 | QT.1 — Crear plan de pruebas de batería VR | 2026-09-17 → 2026-09-16 (-1d) | 2026-09-17 → 2026-09-16 (-1d) |  |  |  |  |
| 223 | QT.2 — Crear plan de pruebas del juego de ritmo | 2026-09-17 → 2026-09-16 (-1d) | 2026-09-17 → 2026-09-16 (-1d) |  |  |  |  |
| 224 | QT.3 — Crear plan de pruebas de interfaz | 2026-09-21 → 2026-09-18 (-3d) | 2026-09-22 → 2026-09-18 (-4d) | 1d → 0d |  |  |  |
| 225 | QT.4 — Crear plan de pruebas de audio | 2026-09-17 → 2026-09-16 (-1d) | 2026-09-17 → 2026-09-16 (-1d) | 0.62d → 0.38d |  |  |  |
| 226 | QT.5 — Crear plan de pruebas de rendimiento VR | 2026-09-22 → 2026-09-16 (-6d) | 2026-09-23 → 2026-09-16 (-7d) |  |  |  |  |
| 227 | QT.6 — Realizar pruebas unitarias de batería | 2026-10-02 → 2026-09-21 (-11d) | 2026-10-05 → 2026-09-22 (-13d) |  |  |  |  |
| 228 | QT.7 — Realizar pruebas del sistema de ritmo | 2026-10-02 → 2026-09-30 (-2d) | 2026-10-05 → 2026-10-01 (-4d) | 1d → 0.5d |  |  |  |
| 229 | QT.8 — Realizar pruebas con usuarios del prototipo integrado | 2026-10-12 → 2026-09-09 (-33d) | 2026-10-14 → 2026-09-11 (-33d) |  |  | 74, 170, 201, 70, 71, 139, 166, 167, 168, 196, 202, 204, 224, 225, 226, 227, 228 → none |  |
| 230 | QE.2 — Registrar errores, observaciones y sugerencias de usuarios | 2026-10-14 → 2026-09-11 (-33d) | 2026-10-15 → 2026-09-14 (-31d) |  |  |  |  |
| 231 | QE.3 — Clasificar errores por gravedad y prioridad | 2026-10-15 → 2026-09-14 (-31d) | 2026-10-15 → 2026-09-14 (-31d) | 0.62d → 0d |  |  |  |
| 232 | QE.4 — Asignar errores a las áreas correspondientes | 2026-10-15 → 2026-09-14 (-31d) | 2026-10-16 → 2026-09-14 (-32d) | 0.38d → 0d |  |  |  |
| 233 | QE.5 — Verificar corrección de errores críticos | 2026-10-16 → 2026-09-14 (-32d) | 2026-10-19 → 2026-09-15 (-34d) | 1d → 0.62d |  |  |  |
| 234 | QV.1 — Realizar prueba completa desde inicio hasta final de una sesión | 2026-10-19 → 2026-09-15 (-34d) | 2026-10-20 → 2026-09-15 (-35d) | 1d → 0.62d |  |  |  |
| 235 | QV.2 — Evaluar estabilidad y presencia de cierres inesperados | 2026-10-20 → 2026-09-16 (-34d) | 2026-10-21 → 2026-09-16 (-35d) | 1d → 0.38d |  |  |  |
| 236 | QV.3 — Medir FPS del proyecto en el visor objetivo | 2026-10-20 → 2026-09-25 (-25d) | 2026-10-20 → 2026-09-25 (-25d) |  |  |  |  |
| 237 | QV.4 — Evaluar latencia entre golpe físico, sonido y detección | 2026-10-05 → 2026-09-22 (-13d) | 2026-10-06 → 2026-09-23 (-13d) |  |  |  |  |
| 238 | QV.5 — Evaluar comodidad de la experiencia VR | 2026-10-14 → 2026-09-11 (-33d) | 2026-10-15 → 2026-09-14 (-31d) |  |  |  |  |
| 239 | QC.1 — Registrar versiones importantes del proyecto | 2026-09-07 → 2026-09-09 (+2d) | 2026-09-07 → 2026-09-09 (+2d) |  |  |  |  |
| 240 | QC.2 — Documentar avances semanales | 2026-09-07 A → 2026-09-07 |  | 0.25d → 0.38d | 50% → 100% |  |  |
| 241 | QC.3 — Mantener actualizada la bibliografía del proyecto |  |  | 0.25d → 0.38d | 0% → 100% |  |  |
| 242 | QC.4 — Mantener registro de assets y sus licencias |  |  | 0.38d → 0d |  |  |  |
| 243 | QC.5 — Mantener registro de música y licencias utilizadas | 2026-09-08 → 2026-09-09 (+1d) | 2026-09-08 → 2026-09-09 (+1d) | 0.25d → 0d | 0% → 100% |  |  |
| 244 | QD.1 — Crear documentación de arquitectura del software | 2026-10-02 → 2026-09-30 (-2d) | 2026-10-06 → 2026-10-02 (-4d) | 2d → 1.5d |  |  |  |
| 245 | QD.2 — Crear diagrama del flujo general de la aplicación | 2026-09-22 → 2026-09-18 (-4d) | 2026-09-23 → 2026-09-21 (-2d) | 1d → 0.5d |  |  |  |
| 246 | QD.3 — Documentar funcionamiento del sistema de detección de golpes | 2026-09-18 → 2026-09-17 (-1d) | 2026-09-21 → 2026-09-18 (-3d) | 1d → 0.75d |  |  |  |
| 247 | QD.4 — Documentar funcionamiento del juego de ritmo | 2026-10-02 → 2026-09-30 (-2d) | 2026-10-05 → 2026-10-01 (-4d) | 1d → 0.5d |  |  |  |
| 248 | QD.5 — Documentar sistema de intensidad de los golpes | 2026-09-22 → 2026-09-21 (-1d) | 2026-09-23 → 2026-09-21 (-2d) | 0.62d → 0d |  |  |  |
| 249 | QD.6 — Documentar selección y fundamentación del entorno virtual | 2026-10-09 → 2026-10-01 (-8d) | 2026-10-12 → 2026-10-02 (-10d) | 1d → 0.75d |  |  |  |
| 250 | QD.7 — Documentar fundamentación de la música utilizada | 2026-10-09 → 2026-10-07 (-2d) | 2026-10-12 → 2026-10-08 (-4d) | 1d → 0.62d |  |  |  |
| 251 | QD.8 — Documentar diseño y funcionamiento de la interfaz | 2026-09-30 → 2026-09-24 (-6d) | 2026-10-01 → 2026-09-25 (-6d) | 1d → 0.5d |  |  |  |
| 252 | QM.1 — Elaborar manual básico de usuario | 2026-10-20 → 2026-09-16 (-34d) | 2026-10-22 → 2026-09-17 (-35d) | 2d → 1.38d |  |  |  |
| 253 | QM.2 — Elaborar manual técnico de instalación y ejecución | 2026-10-20 → 2026-09-16 (-34d) | 2026-10-21 → 2026-09-16 (-35d) | 1d → 0.38d |  |  |  |
| 254 | QF.1 — Preparar capturas de pantalla del proyecto | 2026-10-20 → 2026-09-16 (-34d) | 2026-10-20 → 2026-09-16 (-34d) | 0.62d → 0.38d |  |  |  |
| 255 | QF.2 — Grabar evidencia en video del funcionamiento | 2026-10-20 → 2026-09-16 (-34d) | 2026-10-21 → 2026-09-16 (-35d) | 1d → 0.38d |  |  |  |
| 256 | QI.1 — Analizar resultados obtenidos durante las pruebas | 2026-10-15 → 2026-09-14 (-31d) | 2026-10-19 → 2026-09-16 (-33d) |  |  |  |  |
| 257 | QI.2 — Redactar apartado de resultados del proyecto | 2026-10-19 → 2026-09-16 (-33d) | 2026-10-21 → 2026-09-18 (-33d) |  |  |  |  |
| 258 | QI.3 — Redactar conclusiones y limitaciones | 2026-10-21 → 2026-09-18 (-33d) | 2026-10-22 → 2026-09-21 (-31d) |  |  |  |  |
| 259 | QI.4 — Integrar todas las secciones del informe final | 2026-10-22 → 2026-10-08 (-14d) | 2026-10-26 → 2026-10-13 (-13d) | 2d → 2.5d |  |  |  |
| 260 | QI.5 — Revisar redacción, ortografía, referencias y formato | 2026-10-26 → 2026-10-13 (-13d) | 2026-10-28 → 2026-10-15 (-13d) | 2d → 2.12d |  |  |  |
| 261 | QB.1 — Generar build candidata a versión final | 2026-10-21 → 2026-09-28 (-23d) | 2026-10-22 → 2026-09-29 (-23d) | 1d → 1.38d |  |  | constraint none → start no later than 2026-09-28 |
| 262 | QB.2 — Probar build final en el visor VR objetivo | 2026-10-22 → 2026-09-29 (-23d) | 2026-10-23 → 2026-09-29 (-24d) | 1d → 0.88d |  |  | constraint none → start no later than 2026-09-29 |
| 263 | QB.3 — Corregir errores críticos encontrados en build final | 2026-10-23 → 2026-09-30 (-23d) | 2026-10-26 → 2026-09-30 (-26d) | 1d → 0.38d |  |  | constraint none → start no later than 2026-09-30 |
| 264 | QB.4 — Generar versión definitiva del videojuego | 2026-10-26 → 2026-09-30 (-26d) | 2026-10-27 → 2026-09-30 (-27d) | 1d → 0d |  |  | constraint none → start no later than 2026-10-01 |
| 265 | QX — Preparar presentación y demostración final del proyecto | 2026-10-28 → 2026-10-15 (-13d) | 2026-10-30 → 2026-10-19 (-11d) | 2d → 1.88d |  |  | constraint none → start no later than 2026-10-15 |

## Version 5 (saved 2026-10-17, file Cronograma_ProjectLibre.xml)

Note of the change: chore(cronograma): JT.1, JT.2 y JT.3 terminadas

Last finish stays 2026-10-23. Complete tasks 77 → 79.

Changed:

| ID | Task | Complete |
| --- | --- | --- |
| 35 | **J. Juego de ritmo** | 5% → 18% |
| 39 | JT.1 — Crear sistema de reloj musical independiente de los FPS | 0% → 100% |
| 40 | JT.2 — Implementar cálculo de BPM y duración de cada beat | 0% → 100% |
| 41 | JT.3 — Implementar cálculo de compases y subdivisiones rítmicas | 0% → 100% |
| 140 | **I. Interfaz / UX/UI** | 28% → 34% |
| 205 | **Q. QA, documentación y gestión** | 31% → 32% |
| 243 | QC.5 — Mantener registro de música y licencias utilizadas | 100% → 0% |

## Version 6 (saved 2026-10-18, file Cronograma_ProjectLibre.xml)

Note of the change: docs: ProjectLibre no soporta tareas inactivas ni hitos completos

Last finish stays 2026-10-23. Complete tasks 79 → 93.

Changed:

| ID | Task | Complete |
| --- | --- | --- |
| 35 | **J. Juego de ritmo** | 18% → 43% |
| 37 | JA.2 — Definir los datos necesarios para representar una nota musical dentro del juego | 0% → 100% |
| 38 | JA.3 — Diseñar estructura de datos para canciones y beatmaps | 0% → 100% |
| 43 | JB.1 — Crear prototipo de beatmap manual | 0% → 100% |
| 44 | JB.2 — Crear sistema que cargue un beatmap | 0% → 100% |
| 45 | JB.3 — Sincronizar beatmap con reproducción de música | 0% → 100% |
| 46 | JN.1 — Crear representación visual provisional de las notas | 0% → 100% |
| 47 | JN.2 — Crear sistema que indique qué componente de la batería debe golpearse | 0% → 100% |
| 48 | JW.1 — Definir ventanas temporales Perfect, Good y Miss | 0% → 100% |
| 49 | JW.2 — Programar detección de golpes correctos | 0% → 100% |
| 52 | JW.5 — Programar detección de notas no golpeadas | 0% → 100% |
| 53 | JP.1 — Crear sistema básico de puntuación | 0% → 100% |
| 55 | JP.3 — Crear cálculo de precisión porcentual del usuario | 0% → 100% |
| 57 | JI.1 — Integrar evento DrumHit de la batería VR con el juego de ritmo | 0% → 100% |
| 243 | QC.5 — Mantener registro de música y licencias utilizadas | 0% → 100% |

## Version 7 (saved 2026-10-18, file Cronograma_Operativo.xml)

Note of the change: fix(hitos): el guardian miraba uno de los dos porcentajes

Last finish 2026-10-23 → 2026-10-21 (-2d). Complete tasks 93 → 121.

Added:

| ID | Task | Duration | Start | Finish | Predecessors |
| --- | --- | --- | --- | --- | --- |
| 31 | DM.1 — Exportar las métricas de sesión: precisión temporal y constancia | 0.5d | 2026-09-22 | 2026-09-22 | 30 |

Removed: 11 DO — Implementar sistema para agarrar y soltar objetos con los controles; 13 DB.2 — Configurar las baquetas como objetos interactuables; 17 DT.3 — Configurar colliders para cada componente de la batería; 28 DB.4 — Ajustar física de las baquetas para evitar vibraciones o movimientos extraños; 42 JK — Crear sistema provisional de golpes utilizando teclado para desarrollar sin depender del VR; 50 JW.3 — Programar detección de golpes anticipados; 51 JW.4 — Programar detección de golpes atrasados; 54 JP.2 — Crear sistema de combo o golpes consecutivos; 56 JP.4 — Crear resumen de resultados al terminar una canción; 58 JI.2 — Sustituir controles provisionales de teclado por interacción VR; 59 JI.3 — Implementar detección de intensidad del golpe dentro del juego; 60 JI.4 — Diseñar mecánicas en las que determinados golpes requieran distinta intensidad; 61 JF.1 — Crear feedback visual inmediato de acierto o error; 62 JF.2 — Crear feedback auditivo para aciertos, errores e interacción; 63 JC.1 — Implementar cuenta regresiva antes de iniciar una canción; 64 JC.2 — Crear sistema de pausa y reanudación; 65 JC.3 — Crear sistema para reiniciar una actividad; 66 JC.4 — Crear sistema para abandonar una actividad y regresar al menú; 67 JL.1 — Crear diferentes niveles de dificultad; 68 JL.2 — Programar selección de dificultad antes de iniciar; 69 JM.1 — Crear modo libre sin puntuación ni notas obligatorias; 70 JM.2 — Permitir seleccionar música de fondo en modo libre; 71 JM.3 — Permitir tocar sin música en modo libre; 72 JY — Crear sistema de calibración de latencia entre golpe y música; 73 JW.6 — Ajustar ventanas de precisión después de pruebas de usuarios; 74 JI.5 — Integrar juego de ritmo completo con flujo general de la experiencia; 96 MR.1 — Investigar características musicales adecuadas para la experiencia planteada; 97 MR.2 — Analizar BPM utilizados en las referencias encontradas; 98 MR.3 — Analizar compases y patrones rítmicos apropiados para principiantes; 99 MR.4 — Definir estilos musicales que utilizará el proyecto; 100 MR.5 — Definir duración de las pistas musicales; 107 MB.2 — Definir momentos donde se utilizarán golpes suaves, medios o fuertes; 108 MB.3 — Crear versiones de dificultad Tutorial, Fácil e Intermedio del patrón; 110 MB.5 — Probar primer beatmap junto con el desarrollador; 111 MB.6 — Corregir patrones que resulten poco cómodos o confusos; 112 MA.1 — Crear o seleccionar pistas adicionales; 113 MA.2 — Preparar pistas para modo libre; 114 MN.1 — Normalizar formato, frecuencia de muestreo y volumen de todas las pistas; 115 MN.2 — Documentar BPM, duración, compás y finalidad de cada pista; 118 SP.2 — Investigar bancos de sonidos compatibles con la licencia del proyecto; 126 SE.2 — Eliminar ruidos innecesarios de las muestras; 129 SM.1 — Crear Audio Mixer dentro de Unity; 130 SM.2 — Separar canales de batería, música, ambiente e interfaz; 135 SU — Buscar y preparar sonidos para botones, aciertos y errores; 136 SA.1 — Buscar o producir sonidos ambientales para el escenario; 137 SA.2 — Integrar ambiente sonoro con escenario final; 138 SC.1 — Crear controles independientes de volumen para música, batería y ambiente; 139 SC.2 — Realizar mezcla general de audio; 146 IW.4 — Crear wireframe del tutorial; 148 IW.6 — Crear wireframe de resultados; 149 IS.1 — Crear interfaz para selección de canción y dificultad; 150 IS.2 — Diseñar menú de configuración; 151 IS.3 — Diseñar controles para volumen de música, batería y ambiente; 152 IS.4 — Diseñar menú de pausa; 153 IS.5 — Diseñar pantalla de confirmación para salir o reiniciar; 154 IS.6 — Diseñar presentación de resultados finales; 155 IE — Definir estilo visual general de la interfaz; 163 II.1 — Importar recursos gráficos de Canva/Figma a Unity; 166 II.4 — Implementar configuración de volumen; 167 II.5 — Implementar menú de pausa; 171 IR.3 — Corregir problemas de navegación encontrados en pruebas; 173 AE.1 — Investigar qué tipo de entorno puede favorecer la experiencia propuesta; 174 AE.2 — Comparar posibles ambientes: naturaleza, estudio musical, espacio minimalista y otros; 175 AE.3 — Definir dirección artística general del escenario; 176 AC.1 — Investigar teoría del color y su relación con la percepción emocional, concentración y confort visual dentro de entornos virtuales; 177 AC.2 — Definir paleta de colores y criterios para aplicarla en los modelos 3D y el entorno según la experiencia emocional propuesta; 178 AC.3 — Crear moodboard visual del escenario incorporando la dirección artística y la paleta de colores seleccionada; 179 AA.1 — Crear lista de todos los assets 3D necesarios; 180 AA.2 — Definir límites de polígonos y rendimiento adecuados para VR; 183 AB.1 — Buscar modelo de batería adecuado; 184 AB.2 — Revisar licencia del modelo de batería; 185 AB.3 — Buscar o crear modelos definitivos de baquetas; 186 AB.4 — Optimizar modelo de batería para VR; 187 AB.5 — Optimizar materiales y texturas de la batería considerando la paleta de colores establecida; 188 AB.6 — Preparar batería definitiva para integración en Unity; 190 AP.2 — Determinar posición del jugador y batería dentro del escenario; 191 AP.3 — Aplicar la paleta de colores seleccionada a modelos, materiales y elementos principales del escenario; 194 AD.1 — Añadir elementos ambientales secundarios; 195 AD.2 — Reducir objetos que puedan distraer al usuario; 197 AO.1 — Optimizar texturas del escenario para VR; 198 AO.2 — Configurar LOD en objetos que lo requieran; 199 AO.3 — Revisar cantidad de luces en tiempo real; 200 AO.4 — Preparar iluminación horneada cuando sea conveniente; 202 AO.6 — Optimizar escenario hasta cumplir rendimiento esperado; 203 AR.1 — Revisar ambiente visual con el responsable de experiencia emocional para comprobar que colores, iluminación y escenario sean coherentes con la experiencia propuesta; 204 AR.2 — Realizar ajustes finales de ambientación; 223 QT.2 — Crear plan de pruebas del juego de ritmo; 224 QT.3 — Crear plan de pruebas de interfaz; 225 QT.4 — Crear plan de pruebas de audio; 226 QT.5 — Crear plan de pruebas de rendimiento VR; 244 QD.1 — Crear documentación de arquitectura del software; 245 QD.2 — Crear diagrama del flujo general de la aplicación; 246 QD.3 — Documentar funcionamiento del sistema de detección de golpes; 247 QD.4 — Documentar funcionamiento del juego de ritmo; 248 QD.5 — Documentar sistema de intensidad de los golpes; 249 QD.6 — Documentar selección y fundamentación del entorno virtual; 250 QD.7 — Documentar fundamentación de la música utilizada; 251 QD.8 — Documentar diseño y funcionamiento de la interfaz; 254 QF.1 — Preparar capturas de pantalla del proyecto; 255 QF.2 — Grabar evidencia en video del funcionamiento

Changed:

| ID | Task | Start | Finish | Duration | Complete | Predecessors | Other |
| --- | --- | --- | --- | --- | --- | --- | --- |
| 1 | **D. Desarrollo VR y batería** |  |  | 8.38d → 7.88d | 82% → 92% |  |  |
| 12 | DB.3 — Ajustar posición de agarre de cada baqueta en los controles VR |  |  |  |  | DB.2 — Configurar las baquetas como objetos interactuables → 9, 11 |  |
| 15 | DG.1 — Crear sistema general de detección de golpe entre baqueta y batería |  |  |  |  | DB.2 — Configurar las baquetas como objetos interactuables, DT.3 — Configurar colliders para cada componente de la batería → 9, 11, 14 |  |
| 25 | DG.9 — Ajustar sensibilidad de las colisiones de batería |  |  |  |  | DB.4 — Ajustar física de las baquetas para evitar vibraciones o movimientos extraños → 15 |  |
| 26 | DT.4 — Incorporar modelo 3D definitivo de la batería | 2026-09-18 → 2026-09-16 (-2d) | 2026-09-18 → 2026-09-17 (-1d) | 1d → 0.75d |  | AB.4 — Optimizar modelo de batería para VR, 25, AB.6 — Preparar batería definitiva para integración en Unity → 57, 56, 58, 25 |  |
| 29 | DR.1 — Realizar primera prueba completa de interacción física de la batería |  |  |  |  | 28, 4, 10, 12, 20, 22, 24, AB.3 — Buscar o crear modelos definitivos de baquetas → 28, 4, 10, 12, 20, 22, 24, 57, 56, 58 |  |
| 32 | **J. Juego de ritmo** |  | 2026-10-01 → 2026-10-02 (+1d) | 14.88d → 9.38d | 43% → 100% |  |  |
| 39 | JB.1 — Crear prototipo de beatmap manual |  |  | 0d → 0.62d |  |  |  |
| 45 | JW.2 — Programar detección de golpes correctos |  |  |  |  | 44, JK — Crear sistema provisional de golpes utilizando teclado para desarrollar sin depender del VR → 44, 34 |  |
| 47 | JP.1 — Crear sistema básico de puntuación |  |  |  |  | 45, JW.3 — Programar detección de golpes anticipados, JW.4 — Programar detección de golpes atrasados, 46 → 45, 46 |  |
| 70 | **M. Música** |  |  | 19.75d → 9.62d | 7% → 100% |  |  |
| 73 | MP.1 — Crear o seleccionar primera pista musical de prueba | 2026-09-18 → 2026-09-14 (-4d) | 2026-09-22 → 2026-09-15 (-7d) |  | 0% → 100% | MR.4 — Definir estilos musicales que utilizará el proyecto, 71, MR.5 — Definir duración de las pistas musicales → 57, 71, 61 |  |
| 74 | MP.2 — Determinar BPM exacto de la primera pista | 2026-09-22 → 2026-09-15 (-7d) | 2026-09-22 → 2026-09-15 (-7d) |  | 0% → 100% |  |  |
| 75 | MP.3 — Identificar estructura musical de la primera pista | 2026-09-22 → 2026-09-15 (-7d) | 2026-09-22 → 2026-09-15 (-7d) |  | 0% → 100% |  |  |
| 76 | MB.1 — Crear patrón básico de batería para la primera pista | 2026-09-22 → 2026-09-16 (-6d) | 2026-09-24 → 2026-09-17 (-7d) | 1.75d → 1.38d | 0% → 100% |  |  |
| 77 | MB.4 — Convertir patrón rítmico en información utilizable para el beatmap | 2026-09-28 → 2026-09-17 (-11d) | 2026-09-29 → 2026-09-18 (-11d) | 0.88d → 0.62d | 0% → 100% | MB.3 — Crear versiones de dificultad Tutorial, Fácil e Intermedio del patrón, 74 → 76, 74 |  |
| 78 | **S. Sonido** |  | 2026-09-25 → 2026-09-21 (-4d) | 11d → 10.38d | 3% → 100% |  |  |
| 80 | SB.1 — Buscar sonido de kick | 2026-09-08 → 2026-09-07 (-1d) | 2026-09-08 → 2026-09-07 (-1d) |  | 0% → 100% | SP.2 — Investigar bancos de sonidos compatibles con la licencia del proyecto → 79 |  |
| 81 | SB.2 — Buscar sonido de snare | 2026-09-08 → 2026-09-07 (-1d) | 2026-09-08 → 2026-09-07 (-1d) |  | 0% → 100% | SP.2 — Investigar bancos de sonidos compatibles con la licencia del proyecto → 79 |  |
| 82 | SB.3 — Buscar sonidos de toms | 2026-09-08 → 2026-09-07 (-1d) | 2026-09-08 → 2026-09-07 (-1d) |  | 0% → 100% | SP.2 — Investigar bancos de sonidos compatibles con la licencia del proyecto → 79 |  |
| 83 | SB.4 — Buscar sonidos de hi-hat abierto y cerrado | 2026-09-08 → 2026-09-07 (-1d) | 2026-09-08 → 2026-09-07 (-1d) |  | 0% → 100% | SP.2 — Investigar bancos de sonidos compatibles con la licencia del proyecto → 79 |  |
| 84 | SB.5 — Buscar sonidos de crash y ride | 2026-09-08 → 2026-09-07 (-1d) | 2026-09-08 → 2026-09-07 (-1d) |  |  | SP.2 — Investigar bancos de sonidos compatibles con la licencia del proyecto → 79 |  |
| 85 | SB.6 — Seleccionar tres niveles de intensidad para cada componente principal |  |  |  | 0% → 100% |  |  |
| 86 | SE.1 — Editar inicio y final de cada muestra para evitar retrasos |  |  |  | 0% → 100% |  |  |
| 87 | SE.3 — Normalizar volumen de las muestras de batería |  |  |  | 0% → 100% |  |  |
| 88 | SE.4 — Exportar sonidos en formato apropiado para Unity |  |  |  | 0% → 100% | 87, SE.2 — Eliminar ruidos innecesarios de las muestras → 87, 85 |  |
| 89 | SI.1 — Integrar sonidos de batería con sistema DrumHit |  |  |  | 0% → 100% |  |  |
| 90 | SI.2 — Asignar sonidos diferentes según intensidad del golpe |  |  |  | 0% → 100% |  |  |
| 91 | SI.3 — Configurar volumen espacial de la batería dentro del entorno VR |  |  |  | 0% → 100% |  |  |
| 92 | SI.4 — Medir retraso perceptible entre impacto y reproducción del sonido |  |  |  | 0% → 100% |  |  |
| 93 | **I. Interfaz / UX/UI** |  | 2026-09-30 → 2026-09-24 (-6d) | 8.88d → 7.62d | 34% → 55% |  |  |
| 100 | IG.1 — Diseñar indicadores visuales de Perfect, Good y Miss |  |  |  |  | IE — Definir estilo visual general de la interfaz → 57 |  |
| 101 | IG.2 — Diseñar representación definitiva de las notas del juego |  |  |  |  | IE — Definir estilo visual general de la interfaz, 42 → 57, 42 |  |
| 103 | IT.1 — Diseñar tutorial visual sobre cómo sujetar las baquetas | 2026-09-11 → 2026-09-10 (-1d) | 2026-09-14 → 2026-09-10 (-4d) |  |  | DB.2 — Configurar las baquetas como objetos interactuables → 9, 11 |  |
| 104 | IT.2 — Diseñar tutorial para explicar cómo seguir el ritmo |  | 2026-09-14 → 2026-09-11 (-3d) | 0.5d → 0d |  |  |  |
| 107 | II.2 — Implementar menú principal dentro de Unity | 2026-09-22 → 2026-09-21 (-1d) | 2026-09-23 → 2026-09-22 (-1d) | 1d → 0.75d |  | II.1 — Importar recursos gráficos de Canva/Figma a Unity → 57, 97, 98, 64, 95, 99 |  |
| 108 | II.3 — Implementar interacción con botones utilizando controlador VR | 2026-09-23 → 2026-09-22 (-1d) | 2026-09-23 → 2026-09-22 (-1d) |  |  |  |  |
| 109 | II.6 — Implementar pantalla de resultados | 2026-09-22 → 2026-09-18 (-4d) | 2026-09-23 → 2026-09-22 (-1d) | 1.25d → 1.5d |  | JP.4 — Crear resumen de resultados al terminar una canción, IS.6 — Diseñar presentación de resultados finales → 47, 95, 48 |  |
| 110 | IR.1 — Revisar legibilidad de textos dentro del visor VR | 2026-09-23 → 2026-09-22 (-1d) | 2026-09-24 → 2026-09-23 (-1d) |  |  |  |  |
| 111 | IR.2 — Revisar tamaño, distancia y posición de paneles | 2026-09-24 → 2026-09-23 (-1d) | 2026-09-24 → 2026-09-23 (-1d) | 0.25d → 0d |  |  |  |
| 112 | **A. Entorno 3D y assets** | 2026-09-07 → 2026-09-14 (+7d) | 2026-10-06 → 2026-10-13 (+7d) | 16.88d → 6.5d | 4% → 100% |  |  |
| 113 | AA.3 — Buscar assets de entorno compatibles con el estilo elegido |  | 2026-09-17 → 2026-09-16 (-1d) | 2.75d → 2.38d | 0% → 100% | AA.1 — Crear lista de todos los assets 3D necesarios, AA.2 — Definir límites de polígonos y rendimiento adecuados para VR → 57, 56, 58, 6 |  |
| 114 | AA.4 — Revisar licencias de los assets seleccionados | 2026-09-17 → 2026-09-16 (-1d) | 2026-09-18 → 2026-09-17 (-1d) |  | 0% → 100% |  |  |
| 115 | AP.1 — Crear primera composición del escenario en Unity |  | 2026-09-22 → 2026-09-21 (-1d) | 1.88d → 1.38d | 0% → 100% |  |  |
| 116 | AL.1 — Configurar iluminación inicial considerando la paleta de colores establecida |  |  |  |  | 115, AP.3 — Aplicar la paleta de colores seleccionada a modelos, materiales y elementos principales del escenario → 115, 57, 56, 58 |  |
| 117 | AL.2 — Configurar iluminación definitiva y ambiente visual |  |  |  | 0% → 100% |  |  |
| 118 | AS — Crear límites visuales de seguridad del espacio de interacción | 2026-09-23 → 2026-09-21 (-2d) | 2026-09-24 → 2026-09-22 (-2d) |  | 0% → 100% | AP.2 — Determinar posición del jugador y batería dentro del escenario → 115, 61 |  |
| 119 | AO.5 — Evaluar FPS del escenario en el visor objetivo | 2026-09-30 → 2026-09-25 (-5d) | 2026-10-01 → 2026-09-28 (-3d) | 1.12d → 1d | 0% → 100% | AO.4 — Preparar iluminación horneada cuando sea conveniente, AO.2 — Configurar LOD en objetos que lo requieran → 117 |  |
| 120 | **Q. QA, documentación y gestión** |  | 2026-10-23 → 2026-10-21 (-2d) | 27.62d → 17d | 32% → 43% |  |  |
| 138 | QT.6 — Realizar pruebas unitarias de batería |  |  |  | 0% → 100% |  |  |
| 139 | QT.7 — Realizar pruebas del sistema de ritmo | 2026-09-30 → 2026-09-22 (-8d) | 2026-10-01 → 2026-09-22 (-9d) | 0.5d → 0d | 0% → 100% | JI.5 — Integrar juego de ritmo completo con flujo general de la experiencia, QT.2 — Crear plan de pruebas del juego de ritmo → 76, 47, 96, 66, 106, 38, 43, 49, 18, 45, 100, 79, 41, 33, 135 |  |
| 140 | QT.8 — Realizar pruebas con usuarios del prototipo integrado | 2026-09-09 → 2026-09-07 (-2d) | 2026-09-11 → 2026-09-08 (-3d) |  |  |  |  |
| 141 | QE.2 — Registrar errores, observaciones y sugerencias de usuarios | 2026-09-11 → 2026-09-09 (-2d) | 2026-09-14 → 2026-09-09 (-5d) |  |  |  |  |
| 142 | QE.3 — Clasificar errores por gravedad y prioridad | 2026-09-14 → 2026-09-09 (-5d) | 2026-09-14 → 2026-09-09 (-5d) |  |  |  |  |
| 143 | QE.4 — Asignar errores a las áreas correspondientes | 2026-09-14 → 2026-09-09 (-5d) | 2026-09-14 → 2026-09-09 (-5d) |  |  |  |  |
| 144 | QE.5 — Verificar corrección de errores críticos | 2026-09-14 → 2026-09-10 (-4d) | 2026-09-15 → 2026-09-10 (-5d) | 0.62d → 0.38d |  | 143, JW.6 — Ajustar ventanas de precisión después de pruebas de usuarios, IR.3 — Corregir problemas de navegación encontrados en pruebas → 143, 140 |  |
| 145 | QV.1 — Realizar prueba completa desde inicio hasta final de una sesión | 2026-09-15 → 2026-09-10 (-5d) | 2026-09-15 → 2026-09-11 (-4d) | 0.62d → 0.75d |  |  |  |
| 146 | QV.2 — Evaluar estabilidad y presencia de cierres inesperados | 2026-09-16 → 2026-09-11 (-5d) | 2026-09-16 → 2026-09-11 (-5d) | 0.38d → 0.12d |  |  |  |
| 147 | QV.3 — Medir FPS del proyecto en el visor objetivo |  |  |  | 0% → 100% | AO.3 — Revisar cantidad de luces en tiempo real, 145 → 117, 145 |  |
| 148 | QV.4 — Evaluar latencia entre golpe físico, sonido y detección |  |  |  |  | 30, 92, JY — Crear sistema de calibración de latencia entre golpe y música → 30, 92, 49 |  |
| 149 | QV.5 — Evaluar comodidad de la experiencia VR | 2026-09-11 → 2026-09-09 (-2d) | 2026-09-14 → 2026-09-09 (-5d) |  |  |  |  |
| 150 | QC.1 — Registrar versiones importantes del proyecto | 2026-09-09 → 2026-09-07 (-2d) | 2026-09-09 → 2026-09-07 (-2d) |  |  |  |  |
| 153 | QC.4 — Mantener registro de assets y sus licencias | 2026-09-09 → 2026-09-08 (-1d) | 2026-09-09 → 2026-09-08 (-1d) |  | 0% → 100% | AA.2 — Definir límites de polígonos y rendimiento adecuados para VR → 6 |  |
| 154 | QC.5 — Mantener registro de música y licencias utilizadas | 2026-09-09 → 2026-09-08 (-1d) | 2026-09-09 → 2026-09-08 (-1d) |  |  |  |  |
| 155 | QM.1 — Elaborar manual básico de usuario | 2026-09-16 → 2026-09-11 (-5d) | 2026-09-17 → 2026-09-14 (-3d) | 1.38d → 1.12d |  |  |  |
| 156 | QM.2 — Elaborar manual técnico de instalación y ejecución | 2026-09-16 → 2026-09-11 (-5d) | 2026-09-16 → 2026-09-11 (-5d) | 0.38d → 0.12d |  |  |  |
| 157 | QI.1 — Analizar resultados obtenidos durante las pruebas | 2026-09-14 → 2026-09-10 (-4d) | 2026-09-16 → 2026-09-11 (-5d) |  |  |  |  |
| 158 | QI.2 — Redactar apartado de resultados del proyecto | 2026-09-16 → 2026-09-14 (-2d) | 2026-09-18 → 2026-09-15 (-3d) |  |  |  |  |
| 159 | QI.3 — Redactar conclusiones y limitaciones | 2026-09-18 → 2026-09-16 (-2d) | 2026-09-21 → 2026-09-16 (-5d) |  |  |  |  |
| 160 | QI.4 — Integrar todas las secciones del informe final | 2026-10-08 → 2026-09-28 (-10d) | 2026-10-13 → 2026-09-30 (-13d) |  |  | 68, QD.1 — Crear documentación de arquitectura del software, 158, 159, 69, 131, 151, QD.2 — Crear diagrama del flujo general de la aplicación, QD.3 — Documentar funcionamiento del sistema de detección de golpes, QD.4 — Documentar funcionamiento del juego de ritmo, QD.5 — Documentar sistema de intensidad de los golpes, QD.6 — Documentar selección y fundamentación del entorno virtual, QD.7 — Documentar fundamentación de la música utilizada, QD.8 — Documentar diseño y funcionamiento de la interfaz → 68, 23, 76, 47, 96, 66, 106, 38, 43, 49, 18, 45, 100, 79, 41, 158, 159, 69, 131, 151, 95, 90, 119, 77, 111 | constraint none → start no later than 2026-09-28 |

| ID | Task | Start | Finish | Duration | Predecessors |
| --- | --- | --- | --- | --- | --- |
| 161 | QI.5 — Revisar redacción, ortografía, referencias y formato | 2026-10-13 → 2026-10-01 (-12d) | 2026-10-15 → 2026-10-05 (-10d) | 2.12d → 2.38d |  |
| 163 | QB.2 — Probar build final en el visor VR objetivo |  | 2026-09-29 → 2026-09-30 (+1d) | 0.88d → 1d |  |
| 164 | QB.3 — Corregir errores críticos encontrados en build final |  |  | 0.38d → 0.12d |  |
| 166 | QX — Preparar presentación y demostración final del proyecto | 2026-10-15 → 2026-10-05 (-10d) | 2026-10-19 → 2026-10-06 (-13d) |  | 160, 165, 155, 156, QF.1 — Preparar capturas de pantalla del proyecto, QF.2 — Grabar evidencia en video del funcionamiento, 161 → 160, 165, 155, 156, 145, 161 |

## Version 8 (saved 2026-10-21, file Cronograma_Operativo.xml)

Note of the change: docs: diez actividades mas cerradas, y los hitos en el documento 12

Last finish stays 2026-10-21. Complete tasks 121 → 131.

Changed:

| ID | Task | Complete |
| --- | --- | --- |
| 84 | SB.5 — Buscar sonidos de crash y ride | 0% → 100% |
| 104 | IT.2 — Diseñar tutorial para explicar cómo seguir el ritmo | 0% → 100% |
| 105 | IT.3 — Diseñar tutorial para explicar la intensidad de los golpes | 0% → 100% |
| 106 | IT.4 — Implementar flujo del tutorial completo | 0% → 100% |
| 107 | II.2 — Implementar menú principal dentro de Unity | 0% → 100% |
| 108 | II.3 — Implementar interacción con botones utilizando controlador VR | 0% → 100% |
| 109 | II.6 — Implementar pantalla de resultados | 0% → 100% |
| 110 | IR.1 — Revisar legibilidad de textos dentro del visor VR | 0% → 100% |
| 111 | IR.2 — Revisar tamaño, distancia y posición de paneles | 0% → 100% |
| 148 | QV.4 — Evaluar latencia entre golpe físico, sonido y detección | 0% → 100% |

## Version 9 (saved 2026-10-21, file Cronograma_ProjectLibre.xml)

Note of the change: docs: sincronizar el avance entre los dos cronogramas, y sacar .claude del repo

Last finish 2026-10-21 → 2026-10-23 (+2d). Complete tasks 131 → 130.

Added:

| ID | Task | Duration | Start | Finish | Predecessors | Constraint | Resources |
| --- | --- | --- | --- | --- | --- | --- | --- |
| 11 | DO — Implementar sistema para agarrar y soltar objetos con los controles | 1d | 2026-09-10 | 2026-09-10 | 9 |  | Misael — Desarrollador de realidad virtual |
| 13 | DB.2 — Configurar las baquetas como objetos interactuables | 0.38d | 2026-09-11 | 2026-09-11 | 11, 12 |  | Misael — Desarrollador de realidad virtual |
| 17 | DT.3 — Configurar colliders para cada componente de la batería | 1d | 2026-09-10 | 2026-09-11 | 16 |  | Misael — Desarrollador de realidad virtual |
| 28 | DB.4 — Ajustar física de las baquetas para evitar vibraciones o movimientos extraños | 0.75d | 2026-09-14 | 2026-09-15 | 18 |  | Misael — Desarrollador de realidad virtual |
| 42 | JK — Crear sistema provisional de golpes utilizando teclado para desarrollar sin depender del VR | 1d | 2026-09-08 | 2026-09-09 | 37 |  | Benjamín — Desarrollador de gameplay |
| 50 | JW.3 — Programar detección de golpes anticipados | 0d | 2026-09-11 | 2026-09-11 | 49 |  | Benjamín — Desarrollador de gameplay |
| 51 | JW.4 — Programar detección de golpes atrasados | 0d | 2026-09-11 | 2026-09-11 | 49 |  | Benjamín — Desarrollador de gameplay |
| 54 | JP.2 — Crear sistema de combo o golpes consecutivos | 0d | 2026-09-14 | 2026-09-14 | 53 |  | Benjamín — Desarrollador de gameplay |
| 56 | JP.4 — Crear resumen de resultados al terminar una canción | 1.25d | 2026-09-22 | 2026-09-23 | 53, 154, 54, 55 |  | Benjamín — Desarrollador de gameplay |
| 58 | JI.2 — Sustituir controles provisionales de teclado por interacción VR | 1d | 2026-09-18 | 2026-09-21 | 57 |  | Benjamín — Desarrollador de gameplay |
| 59 | JI.3 — Implementar detección de intensidad del golpe dentro del juego | 1d | 2026-09-18 | 2026-09-21 | 21, 57 |  | Benjamín — Desarrollador de gameplay |
| 60 | JI.4 — Diseñar mecánicas en las que determinados golpes requieran distinta intensidad | 0.88d | 2026-09-25 | 2026-09-28 | 59, 107 | start no later than 2026-09-25 | Benjamín — Desarrollador de gameplay |
| 61 | JF.1 — Crear feedback visual inmediato de acierto o error | 0.5d | 2026-09-11 | 2026-09-14 | 49, 156 | start no later than 2026-09-14 | Benjamín — Desarrollador de gameplay |
| 62 | JF.2 — Crear feedback auditivo para aciertos, errores e interacción | 0d | 2026-09-11 | 2026-09-11 | 135, 49 |  | Benjamín — Desarrollador de gameplay |
| 63 | JC.1 — Implementar cuenta regresiva antes de iniciar una canción | 0.25d | 2026-09-10 | 2026-09-10 | 45 |  | Benjamín — Desarrollador de gameplay |
| 64 | JC.2 — Crear sistema de pausa y reanudación | 0.75d | 2026-09-21 | 2026-09-22 | 45, 152 |  | Benjamín — Desarrollador de gameplay |
| 65 | JC.3 — Crear sistema para reiniciar una actividad | 0.12d | 2026-09-22 | 2026-09-22 | 64 |  | Benjamín — Desarrollador de gameplay |
| 66 | JC.4 — Crear sistema para abandonar una actividad y regresar al menú | 0.12d | 2026-09-22 | 2026-09-22 | 64 |  | Benjamín — Desarrollador de gameplay |
| 67 | JL.1 — Crear diferentes niveles de dificultad | 0.88d | 2026-09-28 | 2026-09-29 | 108, 53 | start no later than 2026-09-28 | Benjamín — Desarrollador de gameplay |
| 68 | JL.2 — Programar selección de dificultad antes de iniciar | 0d | 2026-09-29 | 2026-09-29 | 67, 149 |  | Benjamín — Desarrollador de gameplay |
| 69 | JM.1 — Crear modo libre sin puntuación ni notas obligatorias | 0.75d | 2026-09-17 | 2026-09-18 | 26 |  | Benjamín — Desarrollador de gameplay |
| 70 | JM.2 — Permitir seleccionar música de fondo en modo libre | 1d | 2026-09-18 | 2026-09-21 | 69, 113 |  | Benjamín — Desarrollador de gameplay |
| 71 | JM.3 — Permitir tocar sin música en modo libre | 0d | 2026-09-18 | 2026-09-18 | 69 |  | Benjamín — Desarrollador de gameplay |
| 72 | JY — Crear sistema de calibración de latencia entre golpe y música | 0d | 2026-09-21 | 2026-09-21 | 57, 134 |  | Benjamín — Desarrollador de gameplay |
| 73 | JW.6 — Ajustar ventanas de precisión después de pruebas de usuarios | 1d | 2026-09-11 | 2026-09-14 | 229 |  | Benjamín — Desarrollador de gameplay |
| 74 | JI.5 — Integrar juego de ritmo completo con flujo general de la experiencia | 0.5d | 2026-09-29 | 2026-09-30 | 68, 91, 162, 41, 47, 58, 60, 61, 62, 63, 65, 66 |  | Benjamín — Desarrollador de gameplay |
| 96 | MR.1 — Investigar características musicales adecuadas para la experiencia planteada | 2d | 2026-09-14 | 2026-09-15 | 82 |  | Javier — Compositor y diseñador musical |
| 97 | MR.2 — Analizar BPM utilizados en las referencias encontradas | 1d | 2026-09-16 | 2026-09-16 | 96 |  | Javier — Compositor y diseñador musical |
| 98 | MR.3 — Analizar compases y patrones rítmicos apropiados para principiantes | 1d | 2026-09-16 | 2026-09-16 | 96 |  | Javier — Compositor y diseñador musical |
| 99 | MR.4 — Definir estilos musicales que utilizará el proyecto | 1d | 2026-09-17 | 2026-09-17 | 96, 97, 98 |  | Javier — Compositor y diseñador musical |
| 100 | MR.5 — Definir duración de las pistas musicales | 0.38d | 2026-09-18 | 2026-09-18 | 86, 99 |  | Javier — Compositor y diseñador musical |
| 107 | MB.2 — Definir momentos donde se utilizarán golpes suaves, medios o fuertes | 1.25d | 2026-09-24 | 2026-09-25 | 106 |  | Javier — Compositor y diseñador musical |
| 108 | MB.3 — Crear versiones de dificultad Tutorial, Fácil e Intermedio del patrón | 2.25d | 2026-09-24 | 2026-09-28 | 106 |  | Javier — Compositor y diseñador musical |
| 110 | MB.5 — Probar primer beatmap junto con el desarrollador | 0.62d | 2026-09-29 | 2026-09-30 | 45, 109 |  | Javier — Compositor y diseñador musical |
| 111 | MB.6 — Corregir patrones que resulten poco cómodos o confusos | 0.5d | 2026-09-30 | 2026-10-01 | 110 |  | Javier — Compositor y diseñador musical |
| 112 | MA.1 — Crear o seleccionar pistas adicionales | 2.88d | 2026-10-01 | 2026-10-06 | 111 | start no later than 2026-10-01 | Javier — Compositor y diseñador musical |
| 113 | MA.2 — Preparar pistas para modo libre | 1d | 2026-09-07 | 2026-09-07 |  |  | Javier — Compositor y diseñador musical |
| 114 | MN.1 — Normalizar formato, frecuencia de muestreo y volumen de todas las pistas | 1d | 2026-10-06 | 2026-10-07 | 112 |  | Javier — Compositor y diseñador musical |
| 115 | MN.2 — Documentar BPM, duración, compás y finalidad de cada pista | 0.25d | 2026-10-07 | 2026-10-07 | 114 |  | Javier — Compositor y diseñador musical |
| 118 | SP.2 — Investigar bancos de sonidos compatibles con la licencia del proyecto | 1d | 2026-09-07 | 2026-09-08 | 117 |  | Christian — Diseñador de audio |
| 126 | SE.2 — Eliminar ruidos innecesarios de las muestras | 1.25d | 2026-09-11 | 2026-09-14 | 124 |  | Christian — Diseñador de audio |
| 129 | SM.1 — Crear Audio Mixer dentro de Unity | 0d | 2026-09-15 | 2026-09-15 | 128 |  | Christian — Diseñador de audio |
| 130 | SM.2 — Separar canales de batería, música, ambiente e interfaz | 0.5d | 2026-09-15 | 2026-09-16 | 129 |  | Christian — Diseñador de audio |
| 135 | SU — Buscar y preparar sonidos para botones, aciertos y errores | 0d | 2026-09-08 | 2026-09-08 | 118 |  | Christian — Diseñador de audio |
| 136 | SA.1 — Buscar o producir sonidos ambientales para el escenario | 1.75d | 2026-09-14 | 2026-09-16 | 179 |  | Christian — Diseñador de audio |
| 137 | SA.2 — Integrar ambiente sonoro con escenario final | 0.5d | 2026-09-23 | 2026-09-24 | 136, 190 |  | Christian — Diseñador de audio |
| 138 | SC.1 — Crear controles independientes de volumen para música, batería y ambiente | 0d | 2026-09-22 | 2026-09-22 | 130, 151 |  | Christian — Diseñador de audio |
| 139 | SC.2 — Realizar mezcla general de audio | 0.88d | 2026-09-24 | 2026-09-25 | 137, 138, 133 | start no later than 2026-09-24 | Christian — Diseñador de audio |
| 146 | IW.4 — Crear wireframe del tutorial | 0.5d | 2026-09-18 | 2026-09-21 | 89, 142 |  | Sarai — Diseñador de interacción UX-XR |
| 148 | IW.6 — Crear wireframe de resultados | 0.5d | 2026-09-18 | 2026-09-21 | 142 |  | Sarai — Diseñador de interacción UX-XR |
| 149 | IS.1 — Crear interfaz para selección de canción y dificultad | 0.75d | 2026-09-21 | 2026-09-22 | 143 |  | Sarai — Diseñador de interacción UX-XR |
| 150 | IS.2 — Diseñar menú de configuración | 0.75d | 2026-09-21 | 2026-09-22 | 143 |  | Sarai — Diseñador de interacción UX-XR |
| 151 | IS.3 — Diseñar controles para volumen de música, batería y ambiente | 0d | 2026-09-22 | 2026-09-22 | 150 |  | Sarai — Diseñador de interacción UX-XR |
| 152 | IS.4 — Diseñar menú de pausa | 0d | 2026-09-21 | 2026-09-21 | 143 |  | Sarai — Diseñador de interacción UX-XR |
| 153 | IS.5 — Diseñar pantalla de confirmación para salir o reiniciar | 0.75d | 2026-09-21 | 2026-09-22 | 152 |  | Sarai — Diseñador de interacción UX-XR |
| 154 | IS.6 — Diseñar presentación de resultados finales | 1d | 2026-09-21 | 2026-09-22 | 148 |  | Sarai — Diseñador de interacción UX-XR |
| 155 | IE — Definir estilo visual general de la interfaz | 1d | 2026-09-11 | 2026-09-14 | 175 |  | Sarai — Diseñador de interacción UX-XR |
| 163 | II.1 — Importar recursos gráficos de Canva/Figma a Unity | 0.75d | 2026-09-21 | 2026-09-22 | 155, 144, 145, 146, 147 |  | Sarai — Diseñador de interacción UX-XR |
| 166 | II.4 — Implementar configuración de volumen | 0.75d | 2026-09-23 | 2026-09-24 | 138, 165 |  | Sarai — Diseñador de interacción UX-XR |
| 167 | II.5 — Implementar menú de pausa | 0.75d | 2026-09-23 | 2026-09-24 | 152, 165, 153 |  | Sarai — Diseñador de interacción UX-XR |
| 171 | IR.3 — Corregir problemas de navegación encontrados en pruebas | 1d | 2026-09-11 | 2026-09-14 | 229 |  | Sarai — Diseñador de interacción UX-XR |
| 173 | AE.1 — Investigar qué tipo de entorno puede favorecer la experiencia propuesta | 2d | 2026-09-14 | 2026-09-15 | 82 |  | Kimberly — Artista y modelador 3D |
| 174 | AE.2 — Comparar posibles ambientes: naturaleza, estudio musical, espacio minimalista y otros | 1d | 2026-09-07 | 2026-09-07 | 173 |  | Kimberly — Artista y modelador 3D |
| 175 | AE.3 — Definir dirección artística general del escenario | 1d | 2026-09-08 | 2026-09-08 | 174 |  | Kimberly — Artista y modelador 3D |
| 176 | AC.1 — Investigar teoría del color y su relación con la percepción emocional, concentración y confort visual dentro de entornos virtuales | 1d | 2026-09-10 | 2026-09-10 | 81 |  | Kimberly — Artista y modelador 3D |
| 177 | AC.2 — Definir paleta de colores y criterios para aplicarla en los modelos 3D y el entorno según la experiencia emocional propuesta | 0.38d | 2026-09-11 | 2026-09-11 | 175, 176, 83 |  | Kimberly — Artista y modelador 3D |
| 178 | AC.3 — Crear moodboard visual del escenario incorporando la dirección artística y la paleta de colores seleccionada | 1d | 2026-09-11 | 2026-09-14 | 175, 177 |  | Kimberly — Artista y modelador 3D |
| 179 | AA.1 — Crear lista de todos los assets 3D necesarios | 0d | 2026-09-14 | 2026-09-14 | 178 |  | Kimberly — Artista y modelador 3D |
| 180 | AA.2 — Definir límites de polígonos y rendimiento adecuados para VR | 0.75d | 2026-09-08 | 2026-09-09 | 6 |  | Kimberly — Artista y modelador 3D |
| 183 | AB.1 — Buscar modelo de batería adecuado | 1.75d | 2026-09-14 | 2026-09-16 | 179 |  | Kimberly — Artista y modelador 3D |
| 184 | AB.2 — Revisar licencia del modelo de batería | 0.25d | 2026-09-16 | 2026-09-16 | 183 |  | Kimberly — Artista y modelador 3D |
| 185 | AB.3 — Buscar o crear modelos definitivos de baquetas | 0.75d | 2026-09-14 | 2026-09-15 | 179 |  | Kimberly — Artista y modelador 3D |
| 186 | AB.4 — Optimizar modelo de batería para VR | 0d | 2026-09-16 | 2026-09-16 | 183, 184 |  | Kimberly — Artista y modelador 3D |
| 187 | AB.5 — Optimizar materiales y texturas de la batería considerando la paleta de colores establecida | 0.62d | 2026-09-16 | 2026-09-17 | 186, 177 |  | Kimberly — Artista y modelador 3D |
| 188 | AB.6 — Preparar batería definitiva para integración en Unity | 0.75d | 2026-09-17 | 2026-09-17 | 187 |  | Kimberly — Artista y modelador 3D |
| 190 | AP.2 — Determinar posición del jugador y batería dentro del escenario | 0.62d | 2026-09-22 | 2026-09-23 | 189, 86 |  | Kimberly — Artista y modelador 3D |
| 191 | AP.3 — Aplicar la paleta de colores seleccionada a modelos, materiales y elementos principales del escenario | 0.62d | 2026-09-22 | 2026-09-23 | 177, 189 |  | Kimberly — Artista y modelador 3D |
| 194 | AD.1 — Añadir elementos ambientales secundarios | 1d | 2026-09-25 | 2026-09-28 | 193 |  | Kimberly — Artista y modelador 3D |
| 195 | AD.2 — Reducir objetos que puedan distraer al usuario | 0d | 2026-09-28 | 2026-09-28 | 194 |  | Kimberly — Artista y modelador 3D |
| 197 | AO.1 — Optimizar texturas del escenario para VR | 0.25d | 2026-09-28 | 2026-09-28 | 194 |  | Kimberly — Artista y modelador 3D |
| 198 | AO.2 — Configurar LOD en objetos que lo requieran | 1.62d | 2026-09-28 | 2026-09-30 | 197 |  | Kimberly — Artista y modelador 3D |
| 199 | AO.3 — Revisar cantidad de luces en tiempo real | 0d | 2026-09-25 | 2026-09-25 | 193 |  | Kimberly — Artista y modelador 3D |
| 200 | AO.4 — Preparar iluminación horneada cuando sea conveniente | 0.62d | 2026-09-25 | 2026-09-25 | 199 |  | Kimberly — Artista y modelador 3D |
| 202 | AO.6 — Optimizar escenario hasta cumplir rendimiento esperado | 0.75d | 2026-10-01 | 2026-10-02 | 201 |  | Kimberly — Artista y modelador 3D |
| 203 | AR.1 — Revisar ambiente visual con el responsable de experiencia emocional para comprobar que colores, iluminación y escenario sean coherentes con la experiencia propuesta | 0d | 2026-09-25 | 2026-09-25 | 193, 89, 91 |  | Kimberly — Artista y modelador 3D |
| 204 | AR.2 — Realizar ajustes finales de ambientación | 0.25d | 2026-09-28 | 2026-09-28 | 203, 195 |  | Kimberly — Artista y modelador 3D |
| 223 | QT.2 — Crear plan de pruebas del juego de ritmo | 1d | 2026-09-16 | 2026-09-16 | 36, 220 |  | Diana — Analista de pruebas (QA) |
| 224 | QT.3 — Crear plan de pruebas de interfaz | 0d | 2026-09-18 | 2026-09-18 | 141, 220 |  | Diana — Analista de pruebas (QA) |
| 225 | QT.4 — Crear plan de pruebas de audio | 0.38d | 2026-09-16 | 2026-09-16 | 117, 220 |  | Diana — Analista de pruebas (QA) |
| 226 | QT.5 — Crear plan de pruebas de rendimiento VR | 1d | 2026-09-16 | 2026-09-16 | 178, 220 |  | Diana — Analista de pruebas (QA) |
| 244 | QD.1 — Crear documentación de arquitectura del software | 1.5d | 2026-09-30 | 2026-10-02 | 26, 74 |  | Diana — Redactor técnico |
| 245 | QD.2 — Crear diagrama del flujo general de la aplicación | 0.5d | 2026-09-18 | 2026-09-21 | 91, 142 |  | Diana — Redactor técnico |
| 246 | QD.3 — Documentar funcionamiento del sistema de detección de golpes | 0.75d | 2026-09-17 | 2026-09-18 | 26 |  | Diana — Redactor técnico |
| 247 | QD.4 — Documentar funcionamiento del juego de ritmo | 0.5d | 2026-09-30 | 2026-10-01 | 74 |  | Diana — Redactor técnico |
| 248 | QD.5 — Documentar sistema de intensidad de los golpes | 0d | 2026-09-21 | 2026-09-21 | 21, 132 |  | Diana — Redactor técnico |
| 249 | QD.6 — Documentar selección y fundamentación del entorno virtual | 0.75d | 2026-10-01 | 2026-10-02 | 201 |  | Diana — Redactor técnico |
| 250 | QD.7 — Documentar fundamentación de la música utilizada | 0.62d | 2026-10-07 | 2026-10-08 | 115 |  | Diana — Redactor técnico |
| 251 | QD.8 — Documentar diseño y funcionamiento de la interfaz | 0.5d | 2026-09-24 | 2026-09-25 | 170 |  | Diana — Redactor técnico |
| 254 | QF.1 — Preparar capturas de pantalla del proyecto | 0.38d | 2026-09-16 | 2026-09-16 | 234 |  | Diana — Redactor técnico |
| 255 | QF.2 — Grabar evidencia en video del funcionamiento | 0.38d | 2026-09-16 | 2026-09-16 | 234 |  | Diana — Redactor técnico |

Removed: 31 DM.1 — Exportar las métricas de sesión: precisión temporal y constancia

Changed:

| ID | Task | Start | Finish | Duration | Complete | Predecessors | Other |
| --- | --- | --- | --- | --- | --- | --- | --- |
| 1 | **D. Desarrollo VR y batería** |  |  | 7.88d → 8.38d | 92% → 82% |  |  |
| 14 | DB.3 — Ajustar posición de agarre de cada baqueta en los controles VR |  |  |  |  | 9, 12 → 13 |  |
| 18 | DG.1 — Crear sistema general de detección de golpe entre baqueta y batería |  |  |  |  | 9, 12, 16 → 13, 17 |  |
| 29 | DG.9 — Ajustar sensibilidad de las colisiones de batería |  |  |  |  | 18 → 28 |  |
| 30 | DT.4 — Incorporar modelo 3D definitivo de la batería | 2026-09-16 → 2026-09-18 (+2d) | 2026-09-17 → 2026-09-18 (+1d) | 0.75d → 1d |  | 82, 81, 83, 29 → 186, 29, 188 |  |
| 33 | DR.1 — Realizar primera prueba completa de interacción física de la batería |  |  |  |  | 32, 4, 10, 14, 23, 25, 27, 82, 81, 83 → 32, 4, 10, 14, 23, 25, 27, 185 |  |
| 35 | **J. Juego de ritmo** |  | 2026-10-02 → 2026-10-01 (-1d) | 9.38d → 14.88d | 100% → 43% |  |  |
| 43 | JB.1 — Crear prototipo de beatmap manual |  |  | 0.62d → 0d |  |  |  |
| 49 | JW.2 — Programar detección de golpes correctos |  |  |  |  | 48, 37 → 48, 42 |  |
| 53 | JP.1 — Crear sistema básico de puntuación |  |  |  |  | 49, 52 → 49, 50, 51, 52 |  |
| 95 | **M. Música** |  |  | 9.62d → 19.75d | 100% → 7% |  |  |
| 103 | MP.1 — Crear o seleccionar primera pista musical de prueba | 2026-09-14 → 2026-09-18 (+4d) | 2026-09-15 → 2026-09-22 (+7d) |  |  | 82, 101, 86 → 99, 101, 100 |  |
| 104 | MP.2 — Determinar BPM exacto de la primera pista | 2026-09-15 → 2026-09-22 (+7d) | 2026-09-15 → 2026-09-22 (+7d) |  |  |  |  |
| 105 | MP.3 — Identificar estructura musical de la primera pista | 2026-09-15 → 2026-09-22 (+7d) | 2026-09-15 → 2026-09-22 (+7d) |  |  |  |  |
| 106 | MB.1 — Crear patrón básico de batería para la primera pista | 2026-09-16 → 2026-09-22 (+6d) | 2026-09-17 → 2026-09-24 (+7d) | 1.38d → 1.75d |  |  |  |
| 109 | MB.4 — Convertir patrón rítmico en información utilizable para el beatmap | 2026-09-17 → 2026-09-28 (+11d) | 2026-09-18 → 2026-09-29 (+11d) | 0.62d → 0.88d |  | 106, 104 → 108, 104 |  |
| 116 | **S. Sonido** |  | 2026-09-21 → 2026-09-25 (+4d) | 10.38d → 11d | 100% → 3% |  |  |
| 119 | SB.1 — Buscar sonido de kick | 2026-09-07 → 2026-09-08 (+1d) | 2026-09-07 → 2026-09-08 (+1d) |  |  | 117 → 118 |  |
| 120 | SB.2 — Buscar sonido de snare | 2026-09-07 → 2026-09-08 (+1d) | 2026-09-07 → 2026-09-08 (+1d) |  |  | 117 → 118 |  |
| 121 | SB.3 — Buscar sonidos de toms | 2026-09-07 → 2026-09-08 (+1d) | 2026-09-07 → 2026-09-08 (+1d) |  |  | 117 → 118 |  |
| 122 | SB.4 — Buscar sonidos de hi-hat abierto y cerrado | 2026-09-07 → 2026-09-08 (+1d) | 2026-09-07 → 2026-09-08 (+1d) |  |  | 117 → 118 |  |
| 123 | SB.5 — Buscar sonidos de crash y ride | 2026-09-07 → 2026-09-08 (+1d) | 2026-09-07 → 2026-09-08 (+1d) |  |  | 117 → 118 |  |
| 128 | SE.4 — Exportar sonidos en formato apropiado para Unity |  |  |  |  | 127, 124 → 127, 126 |  |
| 140 | **I. Interfaz / UX/UI** |  | 2026-09-24 → 2026-09-30 (+6d) | 7.62d → 8.88d | 55% → 34% |  |  |
| 156 | IG.1 — Diseñar indicadores visuales de Perfect, Good y Miss |  |  |  |  | 82 → 155 |  |
| 157 | IG.2 — Diseñar representación definitiva de las notas del juego |  |  |  |  | 82, 46 → 155, 46 |  |
| 159 | IT.1 — Diseñar tutorial visual sobre cómo sujetar las baquetas | 2026-09-10 → 2026-09-11 (+1d) | 2026-09-10 → 2026-09-14 (+4d) |  |  | 9, 12 → 13 |  |
| 160 | IT.2 — Diseñar tutorial para explicar cómo seguir el ritmo |  | 2026-09-11 → 2026-09-14 (+3d) | 0d → 0.5d |  |  |  |
| 164 | II.2 — Implementar menú principal dentro de Unity | 2026-09-21 → 2026-09-22 (+1d) | 2026-09-22 → 2026-09-23 (+1d) | 0.75d → 1d |  | 82, 144, 145, 89, 142, 147 → 163 |  |
| 165 | II.3 — Implementar interacción con botones utilizando controlador VR | 2026-09-22 → 2026-09-23 (+1d) | 2026-09-22 → 2026-09-23 (+1d) |  |  |  |  |
| 168 | II.6 — Implementar pantalla de resultados | 2026-09-18 → 2026-09-22 (+4d) | 2026-09-22 → 2026-09-23 (+1d) | 1.5d → 1.25d |  | 53, 142, 55 → 56, 154 |  |
| 169 | IR.1 — Revisar legibilidad de textos dentro del visor VR | 2026-09-22 → 2026-09-23 (+1d) | 2026-09-23 → 2026-09-24 (+1d) |  |  |  |  |
| 170 | IR.2 — Revisar tamaño, distancia y posición de paneles | 2026-09-23 → 2026-09-24 (+1d) | 2026-09-23 → 2026-09-24 (+1d) | 0d → 0.25d |  |  |  |
| 172 | **A. Entorno 3D y assets** | 2026-09-14 → 2026-09-07 (-7d) | 2026-10-13 → 2026-10-06 (-7d) | 6.5d → 16.88d | 100% → 4% |  |  |
| 181 | AA.3 — Buscar assets de entorno compatibles con el estilo elegido |  | 2026-09-16 → 2026-09-17 (+1d) | 2.38d → 2.75d |  | 82, 81, 83, 6 → 179, 180 |  |
| 182 | AA.4 — Revisar licencias de los assets seleccionados | 2026-09-16 → 2026-09-17 (+1d) | 2026-09-17 → 2026-09-18 (+1d) |  |  |  |  |
| 189 | AP.1 — Crear primera composición del escenario en Unity |  | 2026-09-21 → 2026-09-22 (+1d) | 1.38d → 1.88d |  |  |  |
| 192 | AL.1 — Configurar iluminación inicial considerando la paleta de colores establecida |  |  |  |  | 189, 82, 81, 83 → 189, 191 |  |
| 196 | AS — Crear límites visuales de seguridad del espacio de interacción | 2026-09-21 → 2026-09-23 (+2d) | 2026-09-22 → 2026-09-24 (+2d) |  |  | 189, 86 → 190 |  |
| 201 | AO.5 — Evaluar FPS del escenario en el visor objetivo | 2026-09-25 → 2026-09-30 (+5d) | 2026-09-28 → 2026-10-01 (+3d) | 1d → 1.12d |  | 193 → 200, 198 |  |
| 205 | **Q. QA, documentación y gestión** |  | 2026-10-21 → 2026-10-23 (+2d) | 17d → 27.62d | 43% → 32% |  |  |
| 228 | QT.7 — Realizar pruebas del sistema de ritmo | 2026-09-22 → 2026-09-30 (+8d) | 2026-09-22 → 2026-10-01 (+9d) | 0d → 0.5d |  | 106, 53, 143, 91, 162, 41, 47, 57, 21, 49, 156, 117, 45, 36, 220 → 74, 223 |  |
| 229 | QT.8 — Realizar pruebas con usuarios del prototipo integrado | 2026-09-07 → 2026-09-09 (+2d) | 2026-09-08 → 2026-09-11 (+3d) |  |  |  |  |
| 230 | QE.2 — Registrar errores, observaciones y sugerencias de usuarios | 2026-09-09 → 2026-09-11 (+2d) | 2026-09-09 → 2026-09-14 (+5d) |  |  |  |  |
| 231 | QE.3 — Clasificar errores por gravedad y prioridad | 2026-09-09 → 2026-09-14 (+5d) | 2026-09-09 → 2026-09-14 (+5d) |  |  |  |  |
| 232 | QE.4 — Asignar errores a las áreas correspondientes | 2026-09-09 → 2026-09-14 (+5d) | 2026-09-09 → 2026-09-14 (+5d) |  |  |  |  |
| 233 | QE.5 — Verificar corrección de errores críticos | 2026-09-10 → 2026-09-14 (+4d) | 2026-09-10 → 2026-09-15 (+5d) | 0.38d → 0.62d |  | 232, 229 → 232, 73, 171 |  |
| 234 | QV.1 — Realizar prueba completa desde inicio hasta final de una sesión | 2026-09-10 → 2026-09-15 (+5d) | 2026-09-11 → 2026-09-15 (+4d) | 0.75d → 0.62d |  |  |  |
| 235 | QV.2 — Evaluar estabilidad y presencia de cierres inesperados | 2026-09-11 → 2026-09-16 (+5d) | 2026-09-11 → 2026-09-16 (+5d) | 0.12d → 0.38d |  |  |  |
| 236 | QV.3 — Medir FPS del proyecto en el visor objetivo |  |  |  |  | 193, 234 → 199, 234 |  |
| 237 | QV.4 — Evaluar latencia entre golpe físico, sonido y detección |  |  |  |  | 34, 134, 57 → 34, 134, 72 |  |
| 238 | QV.5 — Evaluar comodidad de la experiencia VR | 2026-09-09 → 2026-09-11 (+2d) | 2026-09-09 → 2026-09-14 (+5d) |  |  |  |  |
| 239 | QC.1 — Registrar versiones importantes del proyecto | 2026-09-07 → 2026-09-09 (+2d) | 2026-09-07 → 2026-09-09 (+2d) |  |  |  |  |
| 242 | QC.4 — Mantener registro de assets y sus licencias | 2026-09-08 → 2026-09-09 (+1d) | 2026-09-08 → 2026-09-09 (+1d) |  |  | 6 → 180 |  |
| 243 | QC.5 — Mantener registro de música y licencias utilizadas | 2026-09-08 → 2026-09-09 (+1d) | 2026-09-08 → 2026-09-09 (+1d) |  |  |  |  |
| 252 | QM.1 — Elaborar manual básico de usuario | 2026-09-11 → 2026-09-16 (+5d) | 2026-09-14 → 2026-09-17 (+3d) | 1.12d → 1.38d |  |  |  |
| 253 | QM.2 — Elaborar manual técnico de instalación y ejecución | 2026-09-11 → 2026-09-16 (+5d) | 2026-09-11 → 2026-09-16 (+5d) | 0.12d → 0.38d |  |  |  |
| 256 | QI.1 — Analizar resultados obtenidos durante las pruebas | 2026-09-10 → 2026-09-14 (+4d) | 2026-09-11 → 2026-09-16 (+5d) |  |  |  |  |
| 257 | QI.2 — Redactar apartado de resultados del proyecto | 2026-09-14 → 2026-09-16 (+2d) | 2026-09-15 → 2026-09-18 (+3d) |  |  |  |  |
| 258 | QI.3 — Redactar conclusiones y limitaciones | 2026-09-16 → 2026-09-18 (+2d) | 2026-09-16 → 2026-09-21 (+5d) |  |  |  |  |
| 259 | QI.4 — Integrar todas las secciones del informe final | 2026-09-28 → 2026-10-08 (+10d) | 2026-09-30 → 2026-10-13 (+13d) |  |  | 93, 26, 106, 53, 143, 91, 162, 41, 47, 57, 21, 49, 156, 117, 45, 257, 258, 94, 216, 240, 142, 132, 201, 109, 170 → 93, 244, 257, 258, 94, 216, 240, 245, 246, 247, 248, 249, 250, 251 | constraint start no later than 2026-09-28 → none |
| 260 | QI.5 — Revisar redacción, ortografía, referencias y formato | 2026-10-01 → 2026-10-13 (+12d) | 2026-10-05 → 2026-10-15 (+10d) | 2.38d → 2.12d |  |  |  |
| 262 | QB.2 — Probar build final en el visor VR objetivo |  | 2026-09-30 → 2026-09-29 (-1d) | 1d → 0.88d |  |  |  |
| 263 | QB.3 — Corregir errores críticos encontrados en build final |  |  | 0.12d → 0.38d |  |  |  |
| 265 | QX — Preparar presentación y demostración final del proyecto | 2026-10-05 → 2026-10-15 (+10d) | 2026-10-06 → 2026-10-19 (+13d) |  |  | 259, 264, 252, 253, 234, 260 → 259, 264, 252, 253, 254, 255, 260 |  |

## Version 10 (saved 2026-10-31, file Cronograma_Operativo.xml)

Note of the change: docs: recalcular la ruta critica tras el recorte, y corregir el presupuesto del acta

Last finish 2026-10-23 → 2026-10-21 (-2d). Complete tasks 130 → 131.

Removed: 11 DO — Implementar sistema para agarrar y soltar objetos con los controles; 13 DB.2 — Configurar las baquetas como objetos interactuables; 17 DT.3 — Configurar colliders para cada componente de la batería; 28 DB.4 — Ajustar física de las baquetas para evitar vibraciones o movimientos extraños; 30 DT.4 — Incorporar modelo 3D definitivo de la batería; 42 JK — Crear sistema provisional de golpes utilizando teclado para desarrollar sin depender del VR; 50 JW.3 — Programar detección de golpes anticipados; 51 JW.4 — Programar detección de golpes atrasados; 54 JP.2 — Crear sistema de combo o golpes consecutivos; 56 JP.4 — Crear resumen de resultados al terminar una canción; 58 JI.2 — Sustituir controles provisionales de teclado por interacción VR; 59 JI.3 — Implementar detección de intensidad del golpe dentro del juego; 60 JI.4 — Diseñar mecánicas en las que determinados golpes requieran distinta intensidad; 61 JF.1 — Crear feedback visual inmediato de acierto o error; 62 JF.2 — Crear feedback auditivo para aciertos, errores e interacción; 63 JC.1 — Implementar cuenta regresiva antes de iniciar una canción; 64 JC.2 — Crear sistema de pausa y reanudación; 65 JC.3 — Crear sistema para reiniciar una actividad; 66 JC.4 — Crear sistema para abandonar una actividad y regresar al menú; 67 JL.1 — Crear diferentes niveles de dificultad; 68 JL.2 — Programar selección de dificultad antes de iniciar; 69 JM.1 — Crear modo libre sin puntuación ni notas obligatorias; 70 JM.2 — Permitir seleccionar música de fondo en modo libre; 71 JM.3 — Permitir tocar sin música en modo libre; 72 JY — Crear sistema de calibración de latencia entre golpe y música; 73 JW.6 — Ajustar ventanas de precisión después de pruebas de usuarios; 74 JI.5 — Integrar juego de ritmo completo con flujo general de la experiencia; 96 MR.1 — Investigar características musicales adecuadas para la experiencia planteada; 97 MR.2 — Analizar BPM utilizados en las referencias encontradas; 98 MR.3 — Analizar compases y patrones rítmicos apropiados para principiantes; 99 MR.4 — Definir estilos musicales que utilizará el proyecto; 100 MR.5 — Definir duración de las pistas musicales; 107 MB.2 — Definir momentos donde se utilizarán golpes suaves, medios o fuertes; 108 MB.3 — Crear versiones de dificultad Tutorial, Fácil e Intermedio del patrón; 110 MB.5 — Probar primer beatmap junto con el desarrollador; 111 MB.6 — Corregir patrones que resulten poco cómodos o confusos; 112 MA.1 — Crear o seleccionar pistas adicionales; 113 MA.2 — Preparar pistas para modo libre; 114 MN.1 — Normalizar formato, frecuencia de muestreo y volumen de todas las pistas; 115 MN.2 — Documentar BPM, duración, compás y finalidad de cada pista; 118 SP.2 — Investigar bancos de sonidos compatibles con la licencia del proyecto; 126 SE.2 — Eliminar ruidos innecesarios de las muestras; 129 SM.1 — Crear Audio Mixer dentro de Unity; 130 SM.2 — Separar canales de batería, música, ambiente e interfaz; 135 SU — Buscar y preparar sonidos para botones, aciertos y errores; 136 SA.1 — Buscar o producir sonidos ambientales para el escenario; 137 SA.2 — Integrar ambiente sonoro con escenario final; 138 SC.1 — Crear controles independientes de volumen para música, batería y ambiente; 139 SC.2 — Realizar mezcla general de audio; 146 IW.4 — Crear wireframe del tutorial; 148 IW.6 — Crear wireframe de resultados; 149 IS.1 — Crear interfaz para selección de canción y dificultad; 150 IS.2 — Diseñar menú de configuración; 151 IS.3 — Diseñar controles para volumen de música, batería y ambiente; 152 IS.4 — Diseñar menú de pausa; 153 IS.5 — Diseñar pantalla de confirmación para salir o reiniciar; 154 IS.6 — Diseñar presentación de resultados finales; 155 IE — Definir estilo visual general de la interfaz; 163 II.1 — Importar recursos gráficos de Canva/Figma a Unity; 166 II.4 — Implementar configuración de volumen; 167 II.5 — Implementar menú de pausa; 171 IR.3 — Corregir problemas de navegación encontrados en pruebas; 173 AE.1 — Investigar qué tipo de entorno puede favorecer la experiencia propuesta; 174 AE.2 — Comparar posibles ambientes: naturaleza, estudio musical, espacio minimalista y otros; 175 AE.3 — Definir dirección artística general del escenario; 176 AC.1 — Investigar teoría del color y su relación con la percepción emocional, concentración y confort visual dentro de entornos virtuales; 177 AC.2 — Definir paleta de colores y criterios para aplicarla en los modelos 3D y el entorno según la experiencia emocional propuesta; 178 AC.3 — Crear moodboard visual del escenario incorporando la dirección artística y la paleta de colores seleccionada; 179 AA.1 — Crear lista de todos los assets 3D necesarios; 180 AA.2 — Definir límites de polígonos y rendimiento adecuados para VR; 183 AB.1 — Buscar modelo de batería adecuado; 184 AB.2 — Revisar licencia del modelo de batería; 185 AB.3 — Buscar o crear modelos definitivos de baquetas; 186 AB.4 — Optimizar modelo de batería para VR; 187 AB.5 — Optimizar materiales y texturas de la batería considerando la paleta de colores establecida; 188 AB.6 — Preparar batería definitiva para integración en Unity; 190 AP.2 — Determinar posición del jugador y batería dentro del escenario; 191 AP.3 — Aplicar la paleta de colores seleccionada a modelos, materiales y elementos principales del escenario; 194 AD.1 — Añadir elementos ambientales secundarios; 195 AD.2 — Reducir objetos que puedan distraer al usuario; 197 AO.1 — Optimizar texturas del escenario para VR; 198 AO.2 — Configurar LOD en objetos que lo requieran; 199 AO.3 — Revisar cantidad de luces en tiempo real; 200 AO.4 — Preparar iluminación horneada cuando sea conveniente; 202 AO.6 — Optimizar escenario hasta cumplir rendimiento esperado; 203 AR.1 — Revisar ambiente visual con el responsable de experiencia emocional para comprobar que colores, iluminación y escenario sean coherentes con la experiencia propuesta; 204 AR.2 — Realizar ajustes finales de ambientación; 223 QT.2 — Crear plan de pruebas del juego de ritmo; 224 QT.3 — Crear plan de pruebas de interfaz; 225 QT.4 — Crear plan de pruebas de audio; 226 QT.5 — Crear plan de pruebas de rendimiento VR; 244 QD.1 — Crear documentación de arquitectura del software; 245 QD.2 — Crear diagrama del flujo general de la aplicación; 246 QD.3 — Documentar funcionamiento del sistema de detección de golpes; 247 QD.4 — Documentar funcionamiento del juego de ritmo; 248 QD.5 — Documentar sistema de intensidad de los golpes; 249 QD.6 — Documentar selección y fundamentación del entorno virtual; 250 QD.7 — Documentar fundamentación de la música utilizada; 251 QD.8 — Documentar diseño y funcionamiento de la interfaz; 254 QF.1 — Preparar capturas de pantalla del proyecto; 255 QF.2 — Grabar evidencia en video del funcionamiento

Changed:

| ID | Task | Start | Finish | Duration | Complete | Predecessors | Other |
| --- | --- | --- | --- | --- | --- | --- | --- |
| 1 | **D. Desarrollo VR y batería** |  |  | 8.38d → 7.88d | 82% → 92% |  |  |
| 12 | DB.3 — Ajustar posición de agarre de cada baqueta en los controles VR |  |  |  |  | DB.2 — Configurar las baquetas como objetos interactuables → 9, 11 |  |
| 15 | DG.1 — Crear sistema general de detección de golpe entre baqueta y batería |  |  |  |  | DB.2 — Configurar las baquetas como objetos interactuables, DT.3 — Configurar colliders para cada componente de la batería → 9, 11, 14 |  |
| 25 | DG.9 — Ajustar sensibilidad de las colisiones de batería |  |  |  |  | DB.4 — Ajustar física de las baquetas para evitar vibraciones o movimientos extraños → 15 |  |
| 26 | DT.6 — Ajustar posición y dimensiones de batería para una postura cómoda en VR |  |  |  |  | 29, 60 → 55, 54, 56, 25, 60 |  |
| 27 | DR.1 — Realizar primera prueba completa de interacción física de la batería |  |  |  |  | 26, 4, 10, 12, 20, 22, 24, AB.3 — Buscar o crear modelos definitivos de baquetas → 26, 4, 10, 12, 20, 22, 24, 55, 54, 56 |  |
| 29 | DM.1 — Exportar las métricas de sesión: precisión temporal y constancia | 2026-09-07 → 2026-09-22 (+15d) | 2026-09-07 → 2026-09-22 (+15d) | 0.38d → 0.5d | 0% → 100% | DT.4 — Incorporar modelo 3D definitivo de la batería → 28 | was named DT.5 — Reconfigurar colliders utilizando el modelo definitivo; resources Misael — Desarrollador de realidad virtual → none |
| 30 | **J. Juego de ritmo** |  | 2026-10-01 → 2026-10-02 (+1d) | 14.88d → 9.38d | 43% → 100% |  |  |
| 37 | JB.1 — Crear prototipo de beatmap manual |  |  | 0d → 0.62d |  |  |  |
| 43 | JW.2 — Programar detección de golpes correctos |  |  |  |  | 42, JK — Crear sistema provisional de golpes utilizando teclado para desarrollar sin depender del VR → 42, 32 |  |
| 45 | JP.1 — Crear sistema básico de puntuación |  |  |  |  | 43, JW.3 — Programar detección de golpes anticipados, JW.4 — Programar detección de golpes atrasados, 44 → 43, 44 |  |
| 68 | **M. Música** |  |  | 19.75d → 9.62d | 7% → 100% |  |  |
| 71 | MP.1 — Crear o seleccionar primera pista musical de prueba | 2026-09-18 → 2026-09-14 (-4d) | 2026-09-22 → 2026-09-15 (-7d) |  |  | MR.4 — Definir estilos musicales que utilizará el proyecto, 69, MR.5 — Definir duración de las pistas musicales → 55, 69, 59 |  |
| 72 | MP.2 — Determinar BPM exacto de la primera pista | 2026-09-22 → 2026-09-15 (-7d) | 2026-09-22 → 2026-09-15 (-7d) |  |  |  |  |
| 73 | MP.3 — Identificar estructura musical de la primera pista | 2026-09-22 → 2026-09-15 (-7d) | 2026-09-22 → 2026-09-15 (-7d) |  |  |  |  |
| 74 | MB.1 — Crear patrón básico de batería para la primera pista | 2026-09-22 → 2026-09-16 (-6d) | 2026-09-24 → 2026-09-17 (-7d) | 1.75d → 1.38d |  |  |  |
| 75 | MB.4 — Convertir patrón rítmico en información utilizable para el beatmap | 2026-09-28 → 2026-09-17 (-11d) | 2026-09-29 → 2026-09-18 (-11d) | 0.88d → 0.62d |  | MB.3 — Crear versiones de dificultad Tutorial, Fácil e Intermedio del patrón, 72 → 74, 72 |  |
| 76 | **S. Sonido** |  | 2026-09-25 → 2026-09-21 (-4d) | 11d → 10.38d | 3% → 100% |  |  |
| 78 | SB.1 — Buscar sonido de kick | 2026-09-08 → 2026-09-07 (-1d) | 2026-09-08 → 2026-09-07 (-1d) |  |  | SP.2 — Investigar bancos de sonidos compatibles con la licencia del proyecto → 77 |  |
| 79 | SB.2 — Buscar sonido de snare | 2026-09-08 → 2026-09-07 (-1d) | 2026-09-08 → 2026-09-07 (-1d) |  |  | SP.2 — Investigar bancos de sonidos compatibles con la licencia del proyecto → 77 |  |
| 80 | SB.3 — Buscar sonidos de toms | 2026-09-08 → 2026-09-07 (-1d) | 2026-09-08 → 2026-09-07 (-1d) |  |  | SP.2 — Investigar bancos de sonidos compatibles con la licencia del proyecto → 77 |  |
| 81 | SB.4 — Buscar sonidos de hi-hat abierto y cerrado | 2026-09-08 → 2026-09-07 (-1d) | 2026-09-08 → 2026-09-07 (-1d) |  |  | SP.2 — Investigar bancos de sonidos compatibles con la licencia del proyecto → 77 |  |
| 82 | SB.5 — Buscar sonidos de crash y ride | 2026-09-08 → 2026-09-07 (-1d) | 2026-09-08 → 2026-09-07 (-1d) |  |  | SP.2 — Investigar bancos de sonidos compatibles con la licencia del proyecto → 77 |  |
| 86 | SE.4 — Exportar sonidos en formato apropiado para Unity |  |  |  |  | 85, SE.2 — Eliminar ruidos innecesarios de las muestras → 85, 83 |  |
| 91 | **I. Interfaz / UX/UI** |  | 2026-09-30 → 2026-09-24 (-6d) | 8.88d → 7.62d | 34% → 55% |  |  |
| 98 | IG.1 — Diseñar indicadores visuales de Perfect, Good y Miss |  |  |  |  | IE — Definir estilo visual general de la interfaz → 55 |  |
| 99 | IG.2 — Diseñar representación definitiva de las notas del juego |  |  |  |  | IE — Definir estilo visual general de la interfaz, 40 → 55, 40 |  |
| 101 | IT.1 — Diseñar tutorial visual sobre cómo sujetar las baquetas | 2026-09-11 → 2026-09-10 (-1d) | 2026-09-14 → 2026-09-10 (-4d) |  |  | DB.2 — Configurar las baquetas como objetos interactuables → 9, 11 |  |
| 102 | IT.2 — Diseñar tutorial para explicar cómo seguir el ritmo |  | 2026-09-14 → 2026-09-11 (-3d) | 0.5d → 0d |  |  |  |
| 105 | II.2 — Implementar menú principal dentro de Unity | 2026-09-22 → 2026-09-21 (-1d) | 2026-09-23 → 2026-09-22 (-1d) | 1d → 0.75d |  | II.1 — Importar recursos gráficos de Canva/Figma a Unity → 55, 95, 96, 62, 93, 97 |  |
| 106 | II.3 — Implementar interacción con botones utilizando controlador VR | 2026-09-23 → 2026-09-22 (-1d) | 2026-09-23 → 2026-09-22 (-1d) |  |  |  |  |
| 107 | II.6 — Implementar pantalla de resultados | 2026-09-22 → 2026-09-18 (-4d) | 2026-09-23 → 2026-09-22 (-1d) | 1.25d → 1.5d |  | JP.4 — Crear resumen de resultados al terminar una canción, IS.6 — Diseñar presentación de resultados finales → 45, 93, 46 |  |
| 108 | IR.1 — Revisar legibilidad de textos dentro del visor VR | 2026-09-23 → 2026-09-22 (-1d) | 2026-09-24 → 2026-09-23 (-1d) |  |  |  |  |
| 109 | IR.2 — Revisar tamaño, distancia y posición de paneles | 2026-09-24 → 2026-09-23 (-1d) | 2026-09-24 → 2026-09-23 (-1d) | 0.25d → 0d |  |  |  |
| 110 | **A. Entorno 3D y assets** | 2026-09-07 → 2026-09-14 (+7d) | 2026-10-06 → 2026-10-13 (+7d) | 16.88d → 6.5d | 4% → 100% |  |  |
| 111 | AA.3 — Buscar assets de entorno compatibles con el estilo elegido |  | 2026-09-17 → 2026-09-16 (-1d) | 2.75d → 2.38d |  | AA.1 — Crear lista de todos los assets 3D necesarios, AA.2 — Definir límites de polígonos y rendimiento adecuados para VR → 55, 54, 56, 6 |  |
| 112 | AA.4 — Revisar licencias de los assets seleccionados | 2026-09-17 → 2026-09-16 (-1d) | 2026-09-18 → 2026-09-17 (-1d) |  |  |  |  |
| 113 | AP.1 — Crear primera composición del escenario en Unity |  | 2026-09-22 → 2026-09-21 (-1d) | 1.88d → 1.38d |  |  |  |
| 114 | AL.1 — Configurar iluminación inicial considerando la paleta de colores establecida |  |  |  |  | 113, AP.3 — Aplicar la paleta de colores seleccionada a modelos, materiales y elementos principales del escenario → 113, 55, 54, 56 |  |
| 116 | AS — Crear límites visuales de seguridad del espacio de interacción | 2026-09-23 → 2026-09-21 (-2d) | 2026-09-24 → 2026-09-22 (-2d) |  |  | AP.2 — Determinar posición del jugador y batería dentro del escenario → 113, 59 |  |
| 117 | AO.5 — Evaluar FPS del escenario en el visor objetivo | 2026-09-30 → 2026-09-25 (-5d) | 2026-10-01 → 2026-09-28 (-3d) | 1.12d → 1d |  | AO.4 — Preparar iluminación horneada cuando sea conveniente, AO.2 — Configurar LOD en objetos que lo requieran → 115 |  |
| 118 | **Q. QA, documentación y gestión** |  | 2026-10-23 → 2026-10-21 (-2d) | 27.62d → 17d | 32% → 43% |  |  |
| 137 | QT.7 — Realizar pruebas del sistema de ritmo | 2026-09-30 → 2026-09-22 (-8d) | 2026-10-01 → 2026-09-22 (-9d) | 0.5d → 0d |  | JI.5 — Integrar juego de ritmo completo con flujo general de la experiencia, QT.2 — Crear plan de pruebas del juego de ritmo → 74, 45, 94, 64, 104, 36, 41, 47, 18, 43, 98, 77, 39, 31, 133 |  |
| 138 | QT.8 — Realizar pruebas con usuarios del prototipo integrado | 2026-09-09 → 2026-09-07 (-2d) | 2026-09-11 → 2026-09-08 (-3d) |  |  |  |  |
| 139 | QE.2 — Registrar errores, observaciones y sugerencias de usuarios | 2026-09-11 → 2026-09-09 (-2d) | 2026-09-14 → 2026-09-09 (-5d) |  |  |  |  |
| 140 | QE.3 — Clasificar errores por gravedad y prioridad | 2026-09-14 → 2026-09-09 (-5d) | 2026-09-14 → 2026-09-09 (-5d) |  |  |  |  |
| 141 | QE.4 — Asignar errores a las áreas correspondientes | 2026-09-14 → 2026-09-09 (-5d) | 2026-09-14 → 2026-09-09 (-5d) |  |  |  |  |
| 142 | QE.5 — Verificar corrección de errores críticos | 2026-09-14 → 2026-09-10 (-4d) | 2026-09-15 → 2026-09-10 (-5d) | 0.62d → 0.38d |  | 141, JW.6 — Ajustar ventanas de precisión después de pruebas de usuarios, IR.3 — Corregir problemas de navegación encontrados en pruebas → 141, 138 |  |
| 143 | QV.1 — Realizar prueba completa desde inicio hasta final de una sesión | 2026-09-15 → 2026-09-10 (-5d) | 2026-09-15 → 2026-09-11 (-4d) | 0.62d → 0.75d |  |  |  |
| 144 | QV.2 — Evaluar estabilidad y presencia de cierres inesperados | 2026-09-16 → 2026-09-11 (-5d) | 2026-09-16 → 2026-09-11 (-5d) | 0.38d → 0.12d |  |  |  |
| 145 | QV.3 — Medir FPS del proyecto en el visor objetivo |  |  |  |  | AO.3 — Revisar cantidad de luces en tiempo real, 143 → 115, 143 |  |
| 146 | QV.4 — Evaluar latencia entre golpe físico, sonido y detección |  |  |  |  | 28, 90, JY — Crear sistema de calibración de latencia entre golpe y música → 28, 90, 47 |  |
| 147 | QV.5 — Evaluar comodidad de la experiencia VR | 2026-09-11 → 2026-09-09 (-2d) | 2026-09-14 → 2026-09-09 (-5d) |  |  |  |  |
| 148 | QC.1 — Registrar versiones importantes del proyecto | 2026-09-09 → 2026-09-07 (-2d) | 2026-09-09 → 2026-09-07 (-2d) |  |  |  |  |
| 151 | QC.4 — Mantener registro de assets y sus licencias | 2026-09-09 → 2026-09-08 (-1d) | 2026-09-09 → 2026-09-08 (-1d) |  |  | AA.2 — Definir límites de polígonos y rendimiento adecuados para VR → 6 |  |
| 152 | QC.5 — Mantener registro de música y licencias utilizadas | 2026-09-09 → 2026-09-08 (-1d) | 2026-09-09 → 2026-09-08 (-1d) |  |  |  |  |
| 153 | QM.1 — Elaborar manual básico de usuario | 2026-09-16 → 2026-09-11 (-5d) | 2026-09-17 → 2026-09-14 (-3d) | 1.38d → 1.12d |  |  |  |
| 154 | QM.2 — Elaborar manual técnico de instalación y ejecución | 2026-09-16 → 2026-09-11 (-5d) | 2026-09-16 → 2026-09-11 (-5d) | 0.38d → 0.12d |  |  |  |
| 155 | QI.1 — Analizar resultados obtenidos durante las pruebas | 2026-09-14 → 2026-09-10 (-4d) | 2026-09-16 → 2026-09-11 (-5d) |  |  |  |  |
| 156 | QI.2 — Redactar apartado de resultados del proyecto | 2026-09-16 → 2026-09-14 (-2d) | 2026-09-18 → 2026-09-15 (-3d) |  |  |  |  |
| 157 | QI.3 — Redactar conclusiones y limitaciones | 2026-09-18 → 2026-09-16 (-2d) | 2026-09-21 → 2026-09-16 (-5d) |  |  |  |  |
| 158 | QI.4 — Integrar todas las secciones del informe final | 2026-10-08 → 2026-09-28 (-10d) | 2026-10-13 → 2026-09-30 (-13d) |  |  | 66, QD.1 — Crear documentación de arquitectura del software, 156, 157, 67, 129, 149, QD.2 — Crear diagrama del flujo general de la aplicación, QD.3 — Documentar funcionamiento del sistema de detección de golpes, QD.4 — Documentar funcionamiento del juego de ritmo, QD.5 — Documentar sistema de intensidad de los golpes, QD.6 — Documentar selección y fundamentación del entorno virtual, QD.7 — Documentar fundamentación de la música utilizada, QD.8 — Documentar diseño y funcionamiento de la interfaz → 66, 23, 74, 45, 94, 64, 104, 36, 41, 47, 18, 43, 98, 77, 39, 156, 157, 67, 129, 149, 93, 88, 117, 75, 109 | constraint none → start no later than 2026-09-28 |
| 159 | QI.5 — Revisar redacción, ortografía, referencias y formato | 2026-10-13 → 2026-10-01 (-12d) | 2026-10-15 → 2026-10-05 (-10d) | 2.12d → 2.38d |  |  |  |
| 161 | QB.2 — Probar build final en el visor VR objetivo |  | 2026-09-29 → 2026-09-30 (+1d) | 0.88d → 1d |  |  |  |
| 162 | QB.3 — Corregir errores críticos encontrados en build final |  |  | 0.38d → 0.12d |  |  |  |
| 164 | QX — Preparar presentación y demostración final del proyecto | 2026-10-15 → 2026-10-05 (-10d) | 2026-10-19 → 2026-10-06 (-13d) |  |  | 158, 163, 153, 154, QF.1 — Preparar capturas de pantalla del proyecto, QF.2 — Grabar evidencia en video del funcionamiento, 159 → 158, 163, 153, 154, 143, 159 |  |

## Version 11 (saved 2026-10-31, file Cronograma_ProjectLibre.xml)

Note of the change: docs: recalcular la ruta critica tras el recorte, y corregir el presupuesto del acta

Last finish 2026-10-21 → 2026-10-23 (+2d). Complete tasks 131 → 130.

Added:

| ID | Task | Duration | Start | Finish | Predecessors | Constraint | Resources |
| --- | --- | --- | --- | --- | --- | --- | --- |
| 11 | DO — Implementar sistema para agarrar y soltar objetos con los controles | 1d | 2026-09-10 | 2026-09-10 | 9 |  | Misael — Desarrollador de realidad virtual |
| 13 | DB.2 — Configurar las baquetas como objetos interactuables | 0.38d | 2026-09-11 | 2026-09-11 | 11, 12 |  | Misael — Desarrollador de realidad virtual |
| 17 | DT.3 — Configurar colliders para cada componente de la batería | 1d | 2026-09-10 | 2026-09-11 | 16 |  | Misael — Desarrollador de realidad virtual |
| 28 | DB.4 — Ajustar física de las baquetas para evitar vibraciones o movimientos extraños | 0.75d | 2026-09-14 | 2026-09-15 | 18 |  | Misael — Desarrollador de realidad virtual |
| 30 | DT.4 — Incorporar modelo 3D definitivo de la batería | 1d | 2026-09-18 | 2026-09-18 | 186, 29, 188 |  | Misael — Desarrollador de realidad virtual |
| 42 | JK — Crear sistema provisional de golpes utilizando teclado para desarrollar sin depender del VR | 1d | 2026-09-08 | 2026-09-09 | 37 |  | Benjamín — Desarrollador de gameplay |
| 50 | JW.3 — Programar detección de golpes anticipados | 0d | 2026-09-11 | 2026-09-11 | 49 |  | Benjamín — Desarrollador de gameplay |
| 51 | JW.4 — Programar detección de golpes atrasados | 0d | 2026-09-11 | 2026-09-11 | 49 |  | Benjamín — Desarrollador de gameplay |
| 54 | JP.2 — Crear sistema de combo o golpes consecutivos | 0d | 2026-09-14 | 2026-09-14 | 53 |  | Benjamín — Desarrollador de gameplay |
| 56 | JP.4 — Crear resumen de resultados al terminar una canción | 1.25d | 2026-09-22 | 2026-09-23 | 53, 154, 54, 55 |  | Benjamín — Desarrollador de gameplay |
| 58 | JI.2 — Sustituir controles provisionales de teclado por interacción VR | 1d | 2026-09-18 | 2026-09-21 | 57 |  | Benjamín — Desarrollador de gameplay |
| 59 | JI.3 — Implementar detección de intensidad del golpe dentro del juego | 1d | 2026-09-18 | 2026-09-21 | 21, 57 |  | Benjamín — Desarrollador de gameplay |
| 60 | JI.4 — Diseñar mecánicas en las que determinados golpes requieran distinta intensidad | 0.88d | 2026-09-25 | 2026-09-28 | 59, 107 | start no later than 2026-09-25 | Benjamín — Desarrollador de gameplay |
| 61 | JF.1 — Crear feedback visual inmediato de acierto o error | 0.5d | 2026-09-11 | 2026-09-14 | 49, 156 | start no later than 2026-09-14 | Benjamín — Desarrollador de gameplay |
| 62 | JF.2 — Crear feedback auditivo para aciertos, errores e interacción | 0d | 2026-09-11 | 2026-09-11 | 135, 49 |  | Benjamín — Desarrollador de gameplay |
| 63 | JC.1 — Implementar cuenta regresiva antes de iniciar una canción | 0.25d | 2026-09-10 | 2026-09-10 | 45 |  | Benjamín — Desarrollador de gameplay |
| 64 | JC.2 — Crear sistema de pausa y reanudación | 0.75d | 2026-09-21 | 2026-09-22 | 45, 152 |  | Benjamín — Desarrollador de gameplay |
| 65 | JC.3 — Crear sistema para reiniciar una actividad | 0.12d | 2026-09-22 | 2026-09-22 | 64 |  | Benjamín — Desarrollador de gameplay |
| 66 | JC.4 — Crear sistema para abandonar una actividad y regresar al menú | 0.12d | 2026-09-22 | 2026-09-22 | 64 |  | Benjamín — Desarrollador de gameplay |
| 67 | JL.1 — Crear diferentes niveles de dificultad | 0.88d | 2026-09-28 | 2026-09-29 | 108, 53 | start no later than 2026-09-28 | Benjamín — Desarrollador de gameplay |
| 68 | JL.2 — Programar selección de dificultad antes de iniciar | 0d | 2026-09-29 | 2026-09-29 | 67, 149 |  | Benjamín — Desarrollador de gameplay |
| 69 | JM.1 — Crear modo libre sin puntuación ni notas obligatorias | 0.75d | 2026-09-17 | 2026-09-18 | 26 |  | Benjamín — Desarrollador de gameplay |
| 70 | JM.2 — Permitir seleccionar música de fondo en modo libre | 1d | 2026-09-18 | 2026-09-21 | 69, 113 |  | Benjamín — Desarrollador de gameplay |
| 71 | JM.3 — Permitir tocar sin música en modo libre | 0d | 2026-09-18 | 2026-09-18 | 69 |  | Benjamín — Desarrollador de gameplay |
| 72 | JY — Crear sistema de calibración de latencia entre golpe y música | 0d | 2026-09-21 | 2026-09-21 | 57, 134 |  | Benjamín — Desarrollador de gameplay |
| 73 | JW.6 — Ajustar ventanas de precisión después de pruebas de usuarios | 1d | 2026-09-11 | 2026-09-14 | 229 |  | Benjamín — Desarrollador de gameplay |
| 74 | JI.5 — Integrar juego de ritmo completo con flujo general de la experiencia | 0.5d | 2026-09-29 | 2026-09-30 | 68, 91, 162, 41, 47, 58, 60, 61, 62, 63, 65, 66 |  | Benjamín — Desarrollador de gameplay |
| 96 | MR.1 — Investigar características musicales adecuadas para la experiencia planteada | 2d | 2026-09-14 | 2026-09-15 | 82 |  | Javier — Compositor y diseñador musical |
| 97 | MR.2 — Analizar BPM utilizados en las referencias encontradas | 1d | 2026-09-16 | 2026-09-16 | 96 |  | Javier — Compositor y diseñador musical |
| 98 | MR.3 — Analizar compases y patrones rítmicos apropiados para principiantes | 1d | 2026-09-16 | 2026-09-16 | 96 |  | Javier — Compositor y diseñador musical |
| 99 | MR.4 — Definir estilos musicales que utilizará el proyecto | 1d | 2026-09-17 | 2026-09-17 | 96, 97, 98 |  | Javier — Compositor y diseñador musical |
| 100 | MR.5 — Definir duración de las pistas musicales | 0.38d | 2026-09-18 | 2026-09-18 | 86, 99 |  | Javier — Compositor y diseñador musical |
| 107 | MB.2 — Definir momentos donde se utilizarán golpes suaves, medios o fuertes | 1.25d | 2026-09-24 | 2026-09-25 | 106 |  | Javier — Compositor y diseñador musical |
| 108 | MB.3 — Crear versiones de dificultad Tutorial, Fácil e Intermedio del patrón | 2.25d | 2026-09-24 | 2026-09-28 | 106 |  | Javier — Compositor y diseñador musical |
| 110 | MB.5 — Probar primer beatmap junto con el desarrollador | 0.62d | 2026-09-29 | 2026-09-30 | 45, 109 |  | Javier — Compositor y diseñador musical |
| 111 | MB.6 — Corregir patrones que resulten poco cómodos o confusos | 0.5d | 2026-09-30 | 2026-10-01 | 110 |  | Javier — Compositor y diseñador musical |
| 112 | MA.1 — Crear o seleccionar pistas adicionales | 2.88d | 2026-10-01 | 2026-10-06 | 111 | start no later than 2026-10-01 | Javier — Compositor y diseñador musical |
| 113 | MA.2 — Preparar pistas para modo libre | 1d | 2026-09-07 | 2026-09-07 |  |  | Javier — Compositor y diseñador musical |
| 114 | MN.1 — Normalizar formato, frecuencia de muestreo y volumen de todas las pistas | 1d | 2026-10-06 | 2026-10-07 | 112 |  | Javier — Compositor y diseñador musical |
| 115 | MN.2 — Documentar BPM, duración, compás y finalidad de cada pista | 0.25d | 2026-10-07 | 2026-10-07 | 114 |  | Javier — Compositor y diseñador musical |
| 118 | SP.2 — Investigar bancos de sonidos compatibles con la licencia del proyecto | 1d | 2026-09-07 | 2026-09-08 | 117 |  | Christian — Diseñador de audio |
| 126 | SE.2 — Eliminar ruidos innecesarios de las muestras | 1.25d | 2026-09-11 | 2026-09-14 | 124 |  | Christian — Diseñador de audio |
| 129 | SM.1 — Crear Audio Mixer dentro de Unity | 0d | 2026-09-15 | 2026-09-15 | 128 |  | Christian — Diseñador de audio |
| 130 | SM.2 — Separar canales de batería, música, ambiente e interfaz | 0.5d | 2026-09-15 | 2026-09-16 | 129 |  | Christian — Diseñador de audio |
| 135 | SU — Buscar y preparar sonidos para botones, aciertos y errores | 0d | 2026-09-08 | 2026-09-08 | 118 |  | Christian — Diseñador de audio |
| 136 | SA.1 — Buscar o producir sonidos ambientales para el escenario | 1.75d | 2026-09-14 | 2026-09-16 | 179 |  | Christian — Diseñador de audio |
| 137 | SA.2 — Integrar ambiente sonoro con escenario final | 0.5d | 2026-09-23 | 2026-09-24 | 136, 190 |  | Christian — Diseñador de audio |
| 138 | SC.1 — Crear controles independientes de volumen para música, batería y ambiente | 0d | 2026-09-22 | 2026-09-22 | 130, 151 |  | Christian — Diseñador de audio |
| 139 | SC.2 — Realizar mezcla general de audio | 0.88d | 2026-09-24 | 2026-09-25 | 137, 138, 133 | start no later than 2026-09-24 | Christian — Diseñador de audio |
| 146 | IW.4 — Crear wireframe del tutorial | 0.5d | 2026-09-18 | 2026-09-21 | 89, 142 |  | Sarai — Diseñador de interacción UX-XR |
| 148 | IW.6 — Crear wireframe de resultados | 0.5d | 2026-09-18 | 2026-09-21 | 142 |  | Sarai — Diseñador de interacción UX-XR |
| 149 | IS.1 — Crear interfaz para selección de canción y dificultad | 0.75d | 2026-09-21 | 2026-09-22 | 143 |  | Sarai — Diseñador de interacción UX-XR |
| 150 | IS.2 — Diseñar menú de configuración | 0.75d | 2026-09-21 | 2026-09-22 | 143 |  | Sarai — Diseñador de interacción UX-XR |
| 151 | IS.3 — Diseñar controles para volumen de música, batería y ambiente | 0d | 2026-09-22 | 2026-09-22 | 150 |  | Sarai — Diseñador de interacción UX-XR |
| 152 | IS.4 — Diseñar menú de pausa | 0d | 2026-09-21 | 2026-09-21 | 143 |  | Sarai — Diseñador de interacción UX-XR |
| 153 | IS.5 — Diseñar pantalla de confirmación para salir o reiniciar | 0.75d | 2026-09-21 | 2026-09-22 | 152 |  | Sarai — Diseñador de interacción UX-XR |
| 154 | IS.6 — Diseñar presentación de resultados finales | 1d | 2026-09-21 | 2026-09-22 | 148 |  | Sarai — Diseñador de interacción UX-XR |
| 155 | IE — Definir estilo visual general de la interfaz | 1d | 2026-09-11 | 2026-09-14 | 175 |  | Sarai — Diseñador de interacción UX-XR |
| 163 | II.1 — Importar recursos gráficos de Canva/Figma a Unity | 0.75d | 2026-09-21 | 2026-09-22 | 155, 144, 145, 146, 147 |  | Sarai — Diseñador de interacción UX-XR |
| 166 | II.4 — Implementar configuración de volumen | 0.75d | 2026-09-23 | 2026-09-24 | 138, 165 |  | Sarai — Diseñador de interacción UX-XR |
| 167 | II.5 — Implementar menú de pausa | 0.75d | 2026-09-23 | 2026-09-24 | 152, 165, 153 |  | Sarai — Diseñador de interacción UX-XR |
| 171 | IR.3 — Corregir problemas de navegación encontrados en pruebas | 1d | 2026-09-11 | 2026-09-14 | 229 |  | Sarai — Diseñador de interacción UX-XR |
| 173 | AE.1 — Investigar qué tipo de entorno puede favorecer la experiencia propuesta | 2d | 2026-09-14 | 2026-09-15 | 82 |  | Kimberly — Artista y modelador 3D |
| 174 | AE.2 — Comparar posibles ambientes: naturaleza, estudio musical, espacio minimalista y otros | 1d | 2026-09-07 | 2026-09-07 | 173 |  | Kimberly — Artista y modelador 3D |
| 175 | AE.3 — Definir dirección artística general del escenario | 1d | 2026-09-08 | 2026-09-08 | 174 |  | Kimberly — Artista y modelador 3D |
| 176 | AC.1 — Investigar teoría del color y su relación con la percepción emocional, concentración y confort visual dentro de entornos virtuales | 1d | 2026-09-10 | 2026-09-10 | 81 |  | Kimberly — Artista y modelador 3D |
| 177 | AC.2 — Definir paleta de colores y criterios para aplicarla en los modelos 3D y el entorno según la experiencia emocional propuesta | 0.38d | 2026-09-11 | 2026-09-11 | 175, 176, 83 |  | Kimberly — Artista y modelador 3D |
| 178 | AC.3 — Crear moodboard visual del escenario incorporando la dirección artística y la paleta de colores seleccionada | 1d | 2026-09-11 | 2026-09-14 | 175, 177 |  | Kimberly — Artista y modelador 3D |
| 179 | AA.1 — Crear lista de todos los assets 3D necesarios | 0d | 2026-09-14 | 2026-09-14 | 178 |  | Kimberly — Artista y modelador 3D |
| 180 | AA.2 — Definir límites de polígonos y rendimiento adecuados para VR | 0.75d | 2026-09-08 | 2026-09-09 | 6 |  | Kimberly — Artista y modelador 3D |
| 183 | AB.1 — Buscar modelo de batería adecuado | 1.75d | 2026-09-14 | 2026-09-16 | 179 |  | Kimberly — Artista y modelador 3D |
| 184 | AB.2 — Revisar licencia del modelo de batería | 0.25d | 2026-09-16 | 2026-09-16 | 183 |  | Kimberly — Artista y modelador 3D |
| 185 | AB.3 — Buscar o crear modelos definitivos de baquetas | 0.75d | 2026-09-14 | 2026-09-15 | 179 |  | Kimberly — Artista y modelador 3D |
| 186 | AB.4 — Optimizar modelo de batería para VR | 0d | 2026-09-16 | 2026-09-16 | 183, 184 |  | Kimberly — Artista y modelador 3D |
| 187 | AB.5 — Optimizar materiales y texturas de la batería considerando la paleta de colores establecida | 0.62d | 2026-09-16 | 2026-09-17 | 186, 177 |  | Kimberly — Artista y modelador 3D |
| 188 | AB.6 — Preparar batería definitiva para integración en Unity | 0.75d | 2026-09-17 | 2026-09-17 | 187 |  | Kimberly — Artista y modelador 3D |
| 190 | AP.2 — Determinar posición del jugador y batería dentro del escenario | 0.62d | 2026-09-22 | 2026-09-23 | 189, 86 |  | Kimberly — Artista y modelador 3D |
| 191 | AP.3 — Aplicar la paleta de colores seleccionada a modelos, materiales y elementos principales del escenario | 0.62d | 2026-09-22 | 2026-09-23 | 177, 189 |  | Kimberly — Artista y modelador 3D |
| 194 | AD.1 — Añadir elementos ambientales secundarios | 1d | 2026-09-25 | 2026-09-28 | 193 |  | Kimberly — Artista y modelador 3D |
| 195 | AD.2 — Reducir objetos que puedan distraer al usuario | 0d | 2026-09-28 | 2026-09-28 | 194 |  | Kimberly — Artista y modelador 3D |
| 197 | AO.1 — Optimizar texturas del escenario para VR | 0.25d | 2026-09-28 | 2026-09-28 | 194 |  | Kimberly — Artista y modelador 3D |
| 198 | AO.2 — Configurar LOD en objetos que lo requieran | 1.62d | 2026-09-28 | 2026-09-30 | 197 |  | Kimberly — Artista y modelador 3D |
| 199 | AO.3 — Revisar cantidad de luces en tiempo real | 0d | 2026-09-25 | 2026-09-25 | 193 |  | Kimberly — Artista y modelador 3D |
| 200 | AO.4 — Preparar iluminación horneada cuando sea conveniente | 0.62d | 2026-09-25 | 2026-09-25 | 199 |  | Kimberly — Artista y modelador 3D |
| 202 | AO.6 — Optimizar escenario hasta cumplir rendimiento esperado | 0.75d | 2026-10-01 | 2026-10-02 | 201 |  | Kimberly — Artista y modelador 3D |
| 203 | AR.1 — Revisar ambiente visual con el responsable de experiencia emocional para comprobar que colores, iluminación y escenario sean coherentes con la experiencia propuesta | 0d | 2026-09-25 | 2026-09-25 | 193, 89, 91 |  | Kimberly — Artista y modelador 3D |
| 204 | AR.2 — Realizar ajustes finales de ambientación | 0.25d | 2026-09-28 | 2026-09-28 | 203, 195 |  | Kimberly — Artista y modelador 3D |
| 223 | QT.2 — Crear plan de pruebas del juego de ritmo | 1d | 2026-09-16 | 2026-09-16 | 36, 220 |  | Diana — Analista de pruebas (QA) |
| 224 | QT.3 — Crear plan de pruebas de interfaz | 0d | 2026-09-18 | 2026-09-18 | 141, 220 |  | Diana — Analista de pruebas (QA) |
| 225 | QT.4 — Crear plan de pruebas de audio | 0.38d | 2026-09-16 | 2026-09-16 | 117, 220 |  | Diana — Analista de pruebas (QA) |
| 226 | QT.5 — Crear plan de pruebas de rendimiento VR | 1d | 2026-09-16 | 2026-09-16 | 178, 220 |  | Diana — Analista de pruebas (QA) |
| 244 | QD.1 — Crear documentación de arquitectura del software | 1.5d | 2026-09-30 | 2026-10-02 | 26, 74 |  | Diana — Redactor técnico |
| 245 | QD.2 — Crear diagrama del flujo general de la aplicación | 0.5d | 2026-09-18 | 2026-09-21 | 91, 142 |  | Diana — Redactor técnico |
| 246 | QD.3 — Documentar funcionamiento del sistema de detección de golpes | 0.75d | 2026-09-17 | 2026-09-18 | 26 |  | Diana — Redactor técnico |
| 247 | QD.4 — Documentar funcionamiento del juego de ritmo | 0.5d | 2026-09-30 | 2026-10-01 | 74 |  | Diana — Redactor técnico |
| 248 | QD.5 — Documentar sistema de intensidad de los golpes | 0d | 2026-09-21 | 2026-09-21 | 21, 132 |  | Diana — Redactor técnico |
| 249 | QD.6 — Documentar selección y fundamentación del entorno virtual | 0.75d | 2026-10-01 | 2026-10-02 | 201 |  | Diana — Redactor técnico |
| 250 | QD.7 — Documentar fundamentación de la música utilizada | 0.62d | 2026-10-07 | 2026-10-08 | 115 |  | Diana — Redactor técnico |
| 251 | QD.8 — Documentar diseño y funcionamiento de la interfaz | 0.5d | 2026-09-24 | 2026-09-25 | 170 |  | Diana — Redactor técnico |
| 254 | QF.1 — Preparar capturas de pantalla del proyecto | 0.38d | 2026-09-16 | 2026-09-16 | 234 |  | Diana — Redactor técnico |
| 255 | QF.2 — Grabar evidencia en video del funcionamiento | 0.38d | 2026-09-16 | 2026-09-16 | 234 |  | Diana — Redactor técnico |

Changed:

| ID | Task | Start | Finish | Duration | Complete | Predecessors | Other |
| --- | --- | --- | --- | --- | --- | --- | --- |
| 1 | **D. Desarrollo VR y batería** |  |  | 7.88d → 8.38d | 92% → 82% |  |  |
| 14 | DB.3 — Ajustar posición de agarre de cada baqueta en los controles VR |  |  |  |  | 9, 12 → 13 |  |
| 18 | DG.1 — Crear sistema general de detección de golpe entre baqueta y batería |  |  |  |  | 9, 12, 16 → 13, 17 |  |
| 29 | DG.9 — Ajustar sensibilidad de las colisiones de batería |  |  |  |  | 18 → 28 |  |
| 31 | DT.5 — Reconfigurar colliders utilizando el modelo definitivo | 2026-09-22 → 2026-09-07 (-15d) | 2026-09-22 → 2026-09-07 (-15d) | 0.5d → 0.38d | 100% → 0% | 34 → 30 | was named DM.1 — Exportar las métricas de sesión: precisión temporal y constancia; resources none → Misael — Desarrollador de realidad virtual |
| 32 | DT.6 — Ajustar posición y dimensiones de batería para una postura cómoda en VR |  |  |  |  | 82, 81, 83, 29, 87 → 31, 87 |  |
| 33 | DR.1 — Realizar primera prueba completa de interacción física de la batería |  |  |  |  | 32, 4, 10, 14, 23, 25, 27, 82, 81, 83 → 32, 4, 10, 14, 23, 25, 27, 185 |  |
| 35 | **J. Juego de ritmo** |  | 2026-10-02 → 2026-10-01 (-1d) | 9.38d → 14.88d | 100% → 43% |  |  |
| 43 | JB.1 — Crear prototipo de beatmap manual |  |  | 0.62d → 0d |  |  |  |
| 49 | JW.2 — Programar detección de golpes correctos |  |  |  |  | 48, 37 → 48, 42 |  |
| 53 | JP.1 — Crear sistema básico de puntuación |  |  |  |  | 49, 52 → 49, 50, 51, 52 |  |
| 95 | **M. Música** |  |  | 9.62d → 19.75d | 100% → 7% |  |  |
| 103 | MP.1 — Crear o seleccionar primera pista musical de prueba | 2026-09-14 → 2026-09-18 (+4d) | 2026-09-15 → 2026-09-22 (+7d) |  |  | 82, 101, 86 → 99, 101, 100 |  |
| 104 | MP.2 — Determinar BPM exacto de la primera pista | 2026-09-15 → 2026-09-22 (+7d) | 2026-09-15 → 2026-09-22 (+7d) |  |  |  |  |
| 105 | MP.3 — Identificar estructura musical de la primera pista | 2026-09-15 → 2026-09-22 (+7d) | 2026-09-15 → 2026-09-22 (+7d) |  |  |  |  |
| 106 | MB.1 — Crear patrón básico de batería para la primera pista | 2026-09-16 → 2026-09-22 (+6d) | 2026-09-17 → 2026-09-24 (+7d) | 1.38d → 1.75d |  |  |  |
| 109 | MB.4 — Convertir patrón rítmico en información utilizable para el beatmap | 2026-09-17 → 2026-09-28 (+11d) | 2026-09-18 → 2026-09-29 (+11d) | 0.62d → 0.88d |  | 106, 104 → 108, 104 |  |
| 116 | **S. Sonido** |  | 2026-09-21 → 2026-09-25 (+4d) | 10.38d → 11d | 100% → 3% |  |  |
| 119 | SB.1 — Buscar sonido de kick | 2026-09-07 → 2026-09-08 (+1d) | 2026-09-07 → 2026-09-08 (+1d) |  |  | 117 → 118 |  |
| 120 | SB.2 — Buscar sonido de snare | 2026-09-07 → 2026-09-08 (+1d) | 2026-09-07 → 2026-09-08 (+1d) |  |  | 117 → 118 |  |
| 121 | SB.3 — Buscar sonidos de toms | 2026-09-07 → 2026-09-08 (+1d) | 2026-09-07 → 2026-09-08 (+1d) |  |  | 117 → 118 |  |
| 122 | SB.4 — Buscar sonidos de hi-hat abierto y cerrado | 2026-09-07 → 2026-09-08 (+1d) | 2026-09-07 → 2026-09-08 (+1d) |  |  | 117 → 118 |  |
| 123 | SB.5 — Buscar sonidos de crash y ride | 2026-09-07 → 2026-09-08 (+1d) | 2026-09-07 → 2026-09-08 (+1d) |  |  | 117 → 118 |  |
| 128 | SE.4 — Exportar sonidos en formato apropiado para Unity |  |  |  |  | 127, 124 → 127, 126 |  |
| 140 | **I. Interfaz / UX/UI** |  | 2026-09-24 → 2026-09-30 (+6d) | 7.62d → 8.88d | 55% → 34% |  |  |
| 156 | IG.1 — Diseñar indicadores visuales de Perfect, Good y Miss |  |  |  |  | 82 → 155 |  |
| 157 | IG.2 — Diseñar representación definitiva de las notas del juego |  |  |  |  | 82, 46 → 155, 46 |  |
| 159 | IT.1 — Diseñar tutorial visual sobre cómo sujetar las baquetas | 2026-09-10 → 2026-09-11 (+1d) | 2026-09-10 → 2026-09-14 (+4d) |  |  | 9, 12 → 13 |  |
| 160 | IT.2 — Diseñar tutorial para explicar cómo seguir el ritmo |  | 2026-09-11 → 2026-09-14 (+3d) | 0d → 0.5d |  |  |  |
| 164 | II.2 — Implementar menú principal dentro de Unity | 2026-09-21 → 2026-09-22 (+1d) | 2026-09-22 → 2026-09-23 (+1d) | 0.75d → 1d |  | 82, 144, 145, 89, 142, 147 → 163 |  |
| 165 | II.3 — Implementar interacción con botones utilizando controlador VR | 2026-09-22 → 2026-09-23 (+1d) | 2026-09-22 → 2026-09-23 (+1d) |  |  |  |  |
| 168 | II.6 — Implementar pantalla de resultados | 2026-09-18 → 2026-09-22 (+4d) | 2026-09-22 → 2026-09-23 (+1d) | 1.5d → 1.25d |  | 53, 142, 55 → 56, 154 |  |
| 169 | IR.1 — Revisar legibilidad de textos dentro del visor VR | 2026-09-22 → 2026-09-23 (+1d) | 2026-09-23 → 2026-09-24 (+1d) |  |  |  |  |
| 170 | IR.2 — Revisar tamaño, distancia y posición de paneles | 2026-09-23 → 2026-09-24 (+1d) | 2026-09-23 → 2026-09-24 (+1d) | 0d → 0.25d |  |  |  |
| 172 | **A. Entorno 3D y assets** | 2026-09-14 → 2026-09-07 (-7d) | 2026-10-13 → 2026-10-06 (-7d) | 6.5d → 16.88d | 100% → 4% |  |  |
| 181 | AA.3 — Buscar assets de entorno compatibles con el estilo elegido |  | 2026-09-16 → 2026-09-17 (+1d) | 2.38d → 2.75d |  | 82, 81, 83, 6 → 179, 180 |  |
| 182 | AA.4 — Revisar licencias de los assets seleccionados | 2026-09-16 → 2026-09-17 (+1d) | 2026-09-17 → 2026-09-18 (+1d) |  |  |  |  |
| 189 | AP.1 — Crear primera composición del escenario en Unity |  | 2026-09-21 → 2026-09-22 (+1d) | 1.38d → 1.88d |  |  |  |
| 192 | AL.1 — Configurar iluminación inicial considerando la paleta de colores establecida |  |  |  |  | 189, 82, 81, 83 → 189, 191 |  |
| 196 | AS — Crear límites visuales de seguridad del espacio de interacción | 2026-09-21 → 2026-09-23 (+2d) | 2026-09-22 → 2026-09-24 (+2d) |  |  | 189, 86 → 190 |  |
| 201 | AO.5 — Evaluar FPS del escenario en el visor objetivo | 2026-09-25 → 2026-09-30 (+5d) | 2026-09-28 → 2026-10-01 (+3d) | 1d → 1.12d |  | 193 → 200, 198 |  |
| 205 | **Q. QA, documentación y gestión** |  | 2026-10-21 → 2026-10-23 (+2d) | 17d → 27.62d | 43% → 32% |  |  |
| 228 | QT.7 — Realizar pruebas del sistema de ritmo | 2026-09-22 → 2026-09-30 (+8d) | 2026-09-22 → 2026-10-01 (+9d) | 0d → 0.5d |  | 106, 53, 143, 91, 162, 41, 47, 57, 21, 49, 156, 117, 45, 36, 220 → 74, 223 |  |
| 229 | QT.8 — Realizar pruebas con usuarios del prototipo integrado | 2026-09-07 → 2026-09-09 (+2d) | 2026-09-08 → 2026-09-11 (+3d) |  |  |  |  |
| 230 | QE.2 — Registrar errores, observaciones y sugerencias de usuarios | 2026-09-09 → 2026-09-11 (+2d) | 2026-09-09 → 2026-09-14 (+5d) |  |  |  |  |
| 231 | QE.3 — Clasificar errores por gravedad y prioridad | 2026-09-09 → 2026-09-14 (+5d) | 2026-09-09 → 2026-09-14 (+5d) |  |  |  |  |
| 232 | QE.4 — Asignar errores a las áreas correspondientes | 2026-09-09 → 2026-09-14 (+5d) | 2026-09-09 → 2026-09-14 (+5d) |  |  |  |  |
| 233 | QE.5 — Verificar corrección de errores críticos | 2026-09-10 → 2026-09-14 (+4d) | 2026-09-10 → 2026-09-15 (+5d) | 0.38d → 0.62d |  | 232, 229 → 232, 73, 171 |  |
| 234 | QV.1 — Realizar prueba completa desde inicio hasta final de una sesión | 2026-09-10 → 2026-09-15 (+5d) | 2026-09-11 → 2026-09-15 (+4d) | 0.75d → 0.62d |  |  |  |
| 235 | QV.2 — Evaluar estabilidad y presencia de cierres inesperados | 2026-09-11 → 2026-09-16 (+5d) | 2026-09-11 → 2026-09-16 (+5d) | 0.12d → 0.38d |  |  |  |
| 236 | QV.3 — Medir FPS del proyecto en el visor objetivo |  |  |  |  | 193, 234 → 199, 234 |  |
| 237 | QV.4 — Evaluar latencia entre golpe físico, sonido y detección |  |  |  |  | 34, 134, 57 → 34, 134, 72 |  |
| 238 | QV.5 — Evaluar comodidad de la experiencia VR | 2026-09-09 → 2026-09-11 (+2d) | 2026-09-09 → 2026-09-14 (+5d) |  |  |  |  |
| 239 | QC.1 — Registrar versiones importantes del proyecto | 2026-09-07 → 2026-09-09 (+2d) | 2026-09-07 → 2026-09-09 (+2d) |  |  |  |  |
| 242 | QC.4 — Mantener registro de assets y sus licencias | 2026-09-08 → 2026-09-09 (+1d) | 2026-09-08 → 2026-09-09 (+1d) |  |  | 6 → 180 |  |
| 243 | QC.5 — Mantener registro de música y licencias utilizadas | 2026-09-08 → 2026-09-09 (+1d) | 2026-09-08 → 2026-09-09 (+1d) |  |  |  |  |
| 252 | QM.1 — Elaborar manual básico de usuario | 2026-09-11 → 2026-09-16 (+5d) | 2026-09-14 → 2026-09-17 (+3d) | 1.12d → 1.38d |  |  |  |
| 253 | QM.2 — Elaborar manual técnico de instalación y ejecución | 2026-09-11 → 2026-09-16 (+5d) | 2026-09-11 → 2026-09-16 (+5d) | 0.12d → 0.38d |  |  |  |
| 256 | QI.1 — Analizar resultados obtenidos durante las pruebas | 2026-09-10 → 2026-09-14 (+4d) | 2026-09-11 → 2026-09-16 (+5d) |  |  |  |  |
| 257 | QI.2 — Redactar apartado de resultados del proyecto | 2026-09-14 → 2026-09-16 (+2d) | 2026-09-15 → 2026-09-18 (+3d) |  |  |  |  |
| 258 | QI.3 — Redactar conclusiones y limitaciones | 2026-09-16 → 2026-09-18 (+2d) | 2026-09-16 → 2026-09-21 (+5d) |  |  |  |  |
| 259 | QI.4 — Integrar todas las secciones del informe final | 2026-09-28 → 2026-10-08 (+10d) | 2026-09-30 → 2026-10-13 (+13d) |  |  | 93, 26, 106, 53, 143, 91, 162, 41, 47, 57, 21, 49, 156, 117, 45, 257, 258, 94, 216, 240, 142, 132, 201, 109, 170 → 93, 244, 257, 258, 94, 216, 240, 245, 246, 247, 248, 249, 250, 251 | constraint start no later than 2026-09-28 → none |
| 260 | QI.5 — Revisar redacción, ortografía, referencias y formato | 2026-10-01 → 2026-10-13 (+12d) | 2026-10-05 → 2026-10-15 (+10d) | 2.38d → 2.12d |  |  |  |
| 262 | QB.2 — Probar build final en el visor VR objetivo |  | 2026-09-30 → 2026-09-29 (-1d) | 1d → 0.88d |  |  |  |
| 263 | QB.3 — Corregir errores críticos encontrados en build final |  |  | 0.12d → 0.38d |  |  |  |
| 265 | QX — Preparar presentación y demostración final del proyecto | 2026-10-05 → 2026-10-15 (+10d) | 2026-10-06 → 2026-10-19 (+13d) |  |  | 259, 264, 252, 253, 234, 260 → 259, 264, 252, 253, 254, 255, 260 |  |

## Version 12 (data date 2026-11-11, saved 2026-11-12, file Cronograma_Operativo.xml)

Note of the change: fix(cronograma): las fechas eran las del plan, no las reales

Last finish 2026-10-23 → 2026-11-20 (+28d). Complete tasks 130 → 135.

Removed: 11 DO — Implementar sistema para agarrar y soltar objetos con los controles; 13 DB.2 — Configurar las baquetas como objetos interactuables; 17 DT.3 — Configurar colliders para cada componente de la batería; 28 DB.4 — Ajustar física de las baquetas para evitar vibraciones o movimientos extraños; 30 DT.4 — Incorporar modelo 3D definitivo de la batería; 42 JK — Crear sistema provisional de golpes utilizando teclado para desarrollar sin depender del VR; 50 JW.3 — Programar detección de golpes anticipados; 51 JW.4 — Programar detección de golpes atrasados; 54 JP.2 — Crear sistema de combo o golpes consecutivos; 56 JP.4 — Crear resumen de resultados al terminar una canción; 58 JI.2 — Sustituir controles provisionales de teclado por interacción VR; 59 JI.3 — Implementar detección de intensidad del golpe dentro del juego; 60 JI.4 — Diseñar mecánicas en las que determinados golpes requieran distinta intensidad; 61 JF.1 — Crear feedback visual inmediato de acierto o error; 62 JF.2 — Crear feedback auditivo para aciertos, errores e interacción; 63 JC.1 — Implementar cuenta regresiva antes de iniciar una canción; 64 JC.2 — Crear sistema de pausa y reanudación; 65 JC.3 — Crear sistema para reiniciar una actividad; 66 JC.4 — Crear sistema para abandonar una actividad y regresar al menú; 67 JL.1 — Crear diferentes niveles de dificultad; 68 JL.2 — Programar selección de dificultad antes de iniciar; 69 JM.1 — Crear modo libre sin puntuación ni notas obligatorias; 70 JM.2 — Permitir seleccionar música de fondo en modo libre; 71 JM.3 — Permitir tocar sin música en modo libre; 72 JY — Crear sistema de calibración de latencia entre golpe y música; 73 JW.6 — Ajustar ventanas de precisión después de pruebas de usuarios; 74 JI.5 — Integrar juego de ritmo completo con flujo general de la experiencia; 96 MR.1 — Investigar características musicales adecuadas para la experiencia planteada; 97 MR.2 — Analizar BPM utilizados en las referencias encontradas; 98 MR.3 — Analizar compases y patrones rítmicos apropiados para principiantes; 99 MR.4 — Definir estilos musicales que utilizará el proyecto; 100 MR.5 — Definir duración de las pistas musicales; 107 MB.2 — Definir momentos donde se utilizarán golpes suaves, medios o fuertes; 108 MB.3 — Crear versiones de dificultad Tutorial, Fácil e Intermedio del patrón; 110 MB.5 — Probar primer beatmap junto con el desarrollador; 111 MB.6 — Corregir patrones que resulten poco cómodos o confusos; 112 MA.1 — Crear o seleccionar pistas adicionales; 113 MA.2 — Preparar pistas para modo libre; 114 MN.1 — Normalizar formato, frecuencia de muestreo y volumen de todas las pistas; 115 MN.2 — Documentar BPM, duración, compás y finalidad de cada pista; 118 SP.2 — Investigar bancos de sonidos compatibles con la licencia del proyecto; 126 SE.2 — Eliminar ruidos innecesarios de las muestras; 129 SM.1 — Crear Audio Mixer dentro de Unity; 130 SM.2 — Separar canales de batería, música, ambiente e interfaz; 135 SU — Buscar y preparar sonidos para botones, aciertos y errores; 136 SA.1 — Buscar o producir sonidos ambientales para el escenario; 137 SA.2 — Integrar ambiente sonoro con escenario final; 138 SC.1 — Crear controles independientes de volumen para música, batería y ambiente; 139 SC.2 — Realizar mezcla general de audio; 146 IW.4 — Crear wireframe del tutorial; 148 IW.6 — Crear wireframe de resultados; 149 IS.1 — Crear interfaz para selección de canción y dificultad; 150 IS.2 — Diseñar menú de configuración; 151 IS.3 — Diseñar controles para volumen de música, batería y ambiente; 152 IS.4 — Diseñar menú de pausa; 153 IS.5 — Diseñar pantalla de confirmación para salir o reiniciar; 154 IS.6 — Diseñar presentación de resultados finales; 155 IE — Definir estilo visual general de la interfaz; 163 II.1 — Importar recursos gráficos de Canva/Figma a Unity; 166 II.4 — Implementar configuración de volumen; 167 II.5 — Implementar menú de pausa; 171 IR.3 — Corregir problemas de navegación encontrados en pruebas; 173 AE.1 — Investigar qué tipo de entorno puede favorecer la experiencia propuesta; 174 AE.2 — Comparar posibles ambientes: naturaleza, estudio musical, espacio minimalista y otros; 175 AE.3 — Definir dirección artística general del escenario; 176 AC.1 — Investigar teoría del color y su relación con la percepción emocional, concentración y confort visual dentro de entornos virtuales; 177 AC.2 — Definir paleta de colores y criterios para aplicarla en los modelos 3D y el entorno según la experiencia emocional propuesta; 178 AC.3 — Crear moodboard visual del escenario incorporando la dirección artística y la paleta de colores seleccionada; 179 AA.1 — Crear lista de todos los assets 3D necesarios; 180 AA.2 — Definir límites de polígonos y rendimiento adecuados para VR; 183 AB.1 — Buscar modelo de batería adecuado; 184 AB.2 — Revisar licencia del modelo de batería; 185 AB.3 — Buscar o crear modelos definitivos de baquetas; 186 AB.4 — Optimizar modelo de batería para VR; 187 AB.5 — Optimizar materiales y texturas de la batería considerando la paleta de colores establecida; 188 AB.6 — Preparar batería definitiva para integración en Unity; 190 AP.2 — Determinar posición del jugador y batería dentro del escenario; 191 AP.3 — Aplicar la paleta de colores seleccionada a modelos, materiales y elementos principales del escenario; 194 AD.1 — Añadir elementos ambientales secundarios; 195 AD.2 — Reducir objetos que puedan distraer al usuario; 197 AO.1 — Optimizar texturas del escenario para VR; 198 AO.2 — Configurar LOD en objetos que lo requieran; 199 AO.3 — Revisar cantidad de luces en tiempo real; 200 AO.4 — Preparar iluminación horneada cuando sea conveniente; 202 AO.6 — Optimizar escenario hasta cumplir rendimiento esperado; 203 AR.1 — Revisar ambiente visual con el responsable de experiencia emocional para comprobar que colores, iluminación y escenario sean coherentes con la experiencia propuesta; 204 AR.2 — Realizar ajustes finales de ambientación; 223 QT.2 — Crear plan de pruebas del juego de ritmo; 224 QT.3 — Crear plan de pruebas de interfaz; 225 QT.4 — Crear plan de pruebas de audio; 226 QT.5 — Crear plan de pruebas de rendimiento VR; 244 QD.1 — Crear documentación de arquitectura del software; 245 QD.2 — Crear diagrama del flujo general de la aplicación; 246 QD.3 — Documentar funcionamiento del sistema de detección de golpes; 247 QD.4 — Documentar funcionamiento del juego de ritmo; 248 QD.5 — Documentar sistema de intensidad de los golpes; 249 QD.6 — Documentar selección y fundamentación del entorno virtual; 250 QD.7 — Documentar fundamentación de la música utilizada; 251 QD.8 — Documentar diseño y funcionamiento de la interfaz; 254 QF.1 — Preparar capturas de pantalla del proyecto; 255 QF.2 — Grabar evidencia en video del funcionamiento

Changed:

| ID | Task | Start | Finish | Duration | Complete | Predecessors | Other |
| --- | --- | --- | --- | --- | --- | --- | --- |
| 1 | **D. Desarrollo VR y batería** | 2026-09-07 → 2026-09-12 08:00 (+5d) | 2026-09-22 → 2026-10-18 17:00 (+26d) | 8.38d → 7.88d | 82% → 92% |  |  |
| 2 | DP.1 — Crear el proyecto base en Unity y definir la versión que utilizará todo el equipo | 2026-09-07 → 2026-09-16 08:00 A (+9d) | 2026-09-07 → 2026-09-16 17:00 A (+9d) |  |  |  | constraint none → start no earlier than 2026-09-16 08:00 |
| 3 | DP.2 — Configurar repositorio y estructura inicial de carpetas del proyecto | 2026-09-07 → 2026-09-16 08:00 A (+9d) | 2026-09-07 → 2026-09-16 17:00 A (+9d) |  |  |  | constraint none → start no earlier than 2026-09-16 08:00 |
| 4 | DP.3 — Configurar control de versiones y reglas para evitar conflictos entre desarrolladores | 2026-09-07 → 2026-09-17 08:00 A (+10d) | 2026-09-08 → 2026-09-17 17:00 A (+9d) |  |  |  | constraint none → start no earlier than 2026-09-17 08:00 |
| 5 | DX.1 — Instalar y configurar paquetes XR necesarios para realidad virtual | 2026-09-07 → 2026-09-16 08:00 A (+9d) | 2026-09-07 → 2026-09-16 17:00 A (+9d) |  |  |  | constraint none → start no earlier than 2026-09-16 08:00 |
| 6 | DX.2 — Configurar OpenXR y compatibilidad con el visor VR seleccionado | 2026-09-08 → 2026-09-16 08:00 A (+8d) | 2026-09-08 → 2026-09-16 17:00 A (+8d) |  |  |  | constraint none → start no earlier than 2026-09-16 08:00 |
| 7 | DX.3 — Crear escena técnica inicial para realizar pruebas de VR | 2026-09-08 → 2026-09-16 08:00 A (+8d) | 2026-09-08 → 2026-09-16 17:00 A (+8d) |  |  |  | constraint none → start no earlier than 2026-09-16 08:00 |
| 8 | DX.4 — Configurar XR Origin, cámara y seguimiento de cabeza | 2026-09-09 → 2026-09-16 08:00 A (+7d) | 2026-09-09 → 2026-09-16 17:00 A (+7d) |  |  |  | constraint none → start no earlier than 2026-09-16 08:00 |
| 9 | DX.5 — Configurar seguimiento de los controles derecho e izquierdo | 2026-09-09 → 2026-09-16 08:00 A (+7d) | 2026-09-09 → 2026-09-16 17:00 A (+7d) |  |  |  | constraint start no later than 2026-09-09 → start no earlier than 2026-09-16 08:00 |
| 10 | DX.6 — Comprobar escala, altura y posición del jugador dentro del entorno VR | 2026-09-09 → 2026-09-16 08:00 A (+7d) | 2026-09-09 → 2026-09-16 17:00 A (+7d) |  |  |  | constraint start no later than 2026-09-09 → start no earlier than 2026-09-16 08:00 |
| 11 | DB.1 — Crear versión provisional de las baquetas para pruebas | 2026-09-09 → 2026-09-16 08:00 A (+7d) | 2026-09-09 → 2026-09-16 17:00 A (+7d) |  |  |  | constraint none → start no earlier than 2026-09-16 08:00 |
| 12 | DB.3 — Ajustar posición de agarre de cada baqueta en los controles VR | 2026-09-11 → 2026-09-17 08:00 A (+6d) | 2026-09-14 → 2026-09-17 17:00 A (+3d) |  |  | DB.2 — Configurar las baquetas como objetos interactuables → 9, 11 | constraint none → start no earlier than 2026-09-17 08:00 |
| 13 | DT.1 — Crear batería provisional con objetos simples para comenzar pruebas | 2026-09-09 → 2026-09-16 08:00 A (+7d) | 2026-09-09 → 2026-09-16 17:00 A (+7d) |  |  |  | constraint none → start no earlier than 2026-09-16 08:00 |
| 14 | DT.2 — Definir todos los componentes interactivos de la batería: snare, kick, toms, hi-hat, crash y ride | 2026-09-09 → 2026-09-17 08:00 A (+8d) | 2026-09-10 → 2026-09-17 17:00 A (+7d) |  |  |  | constraint none → start no earlier than 2026-09-17 08:00 |
| 15 | DG.1 — Crear sistema general de detección de golpe entre baqueta y batería | 2026-09-11 → 2026-09-12 08:00 A (+1d) | 2026-09-14 → 2026-09-12 17:00 A (-2d) |  |  | DB.2 — Configurar las baquetas como objetos interactuables, DT.3 — Configurar colliders para cada componente de la batería → 9, 11, 14 | constraint none → start no earlier than 2026-09-12 08:00 |
| 16 | DG.2 — Identificar automáticamente qué pieza de la batería fue golpeada | 2026-09-14 → 2026-09-16 08:00 A (+2d) | 2026-09-15 → 2026-09-16 17:00 A (+1d) |  |  |  | constraint none → start no earlier than 2026-09-16 08:00 |
| 17 | DG.3 — Detectar velocidad de movimiento de la baqueta antes del impacto | 2026-09-14 → 2026-09-12 08:00 A (-2d) | 2026-09-15 → 2026-09-12 17:00 A (-3d) |  |  |  | constraint none → start no earlier than 2026-09-12 08:00 |
| 18 | DG.4 — Convertir la velocidad de la baqueta en un valor de intensidad de golpe | 2026-09-15 → 2026-09-16 08:00 A (+1d) | 2026-09-16 → 2026-09-16 17:00 A |  |  |  | constraint none → start no earlier than 2026-09-16 08:00 |
| 19 | DG.5 — Establecer niveles de intensidad suave, media y fuerte | 2026-09-16 → 2026-09-16 08:00 A | 2026-09-17 → 2026-09-16 17:00 A (-1d) |  |  |  | constraint none → start no earlier than 2026-09-16 08:00 |
| 20 | DG.6 — Implementar sistema para evitar golpes duplicados provocados por una misma colisión | 2026-09-14 → 2026-09-12 08:00 A (-2d) | 2026-09-15 → 2026-09-12 17:00 A (-3d) |  |  |  | constraint none → start no earlier than 2026-09-12 08:00 |
| 21 | DH.1 — Configurar vibración háptica del controlador al golpear la batería | 2026-09-14 → 2026-09-12 08:00 A (-2d) | 2026-09-15 → 2026-09-12 17:00 A (-3d) |  |  |  | constraint none → start no earlier than 2026-09-12 08:00 |
| 22 | DH.2 — Ajustar la intensidad háptica de acuerdo con la fuerza del golpe | 2026-09-16 → 2026-09-16 08:00 A | 2026-09-17 → 2026-09-16 17:00 A (-1d) |  |  |  | constraint none → start no earlier than 2026-09-16 08:00 |
| 23 | DG.7 — Crear evento general DrumHit que informe instrumento, intensidad y tiempo del golpe | 2026-09-16 → 2026-09-12 08:00 A (-4d) | 2026-09-17 → 2026-09-12 17:00 A (-5d) |  |  |  | constraint none → start no earlier than 2026-09-12 08:00 |
| 24 | DG.8 — Implementar soporte independiente para golpe con baqueta izquierda y derecha | 2026-09-17 → 2026-09-12 08:00 A (-5d) | 2026-09-18 → 2026-09-12 17:00 A (-6d) |  |  |  | constraint none → start no earlier than 2026-09-12 08:00 |
| 25 | DG.9 — Ajustar sensibilidad de las colisiones de batería | 2026-09-15 → 2026-09-16 08:00 A (+1d) | 2026-09-16 → 2026-09-16 17:00 A |  |  | DB.4 — Ajustar física de las baquetas para evitar vibraciones o movimientos extraños → 15 | constraint none → start no earlier than 2026-09-16 08:00 |
| 26 | DT.6 — Ajustar posición y dimensiones de batería para una postura cómoda en VR | 2026-09-14 → 2026-09-17 08:00 A (+3d) | 2026-09-14 → 2026-09-17 17:00 A (+3d) |  |  | 29, 60 → 55, 54, 56, 25, 60 | constraint none → start no earlier than 2026-09-17 08:00 |
| 27 | DR.1 — Realizar primera prueba completa de interacción física de la batería | 2026-09-18 → 2026-09-16 08:00 A (-2d) | 2026-09-21 → 2026-09-16 17:00 A (-5d) |  |  | 26, 4, 10, 12, 20, 22, 24, AB.3 — Buscar o crear modelos definitivos de baquetas → 26, 4, 10, 12, 20, 22, 24, 55, 54, 56 | constraint none → start no earlier than 2026-09-16 08:00 |
| 28 | DR.2 — Corregir errores detectados durante la primera prueba de batería | 2026-09-21 → 2026-09-17 08:00 A (-4d) | 2026-09-22 → 2026-09-17 17:00 A (-5d) |  |  |  | constraint none → start no earlier than 2026-09-17 08:00 |
| 29 | DM.1 — Exportar las métricas de sesión: precisión temporal y constancia | 2026-09-07 → 2026-10-18 08:00 A (+41d) | 2026-09-07 → 2026-10-18 17:00 A (+41d) | 0.38d → 0.5d | 0% → 100% | DT.4 — Incorporar modelo 3D definitivo de la batería → 28 | was named DT.5 — Reconfigurar colliders utilizando el modelo definitivo; constraint none → start no earlier than 2026-10-18 08:00; resources Misael — Desarrollador de realidad virtual → none |
| 30 | **J. Juego de ritmo** | 2026-09-07 → 2026-10-17 08:00 (+40d) | 2026-10-01 → 2026-10-17 17:00 (+16d) | 14.88d → 9.38d | 43% → 100% |  |  |
| 31 | JA.1 — Definir técnicamente cómo funcionará el juego de ritmo | 2026-09-07 → 2026-10-17 08:00 A (+40d) | 2026-09-07 → 2026-10-17 17:00 A (+40d) |  |  |  | constraint none → start no earlier than 2026-10-17 08:00 |
| 32 | JA.2 — Definir los datos necesarios para representar una nota musical dentro del juego | 2026-09-08 → 2026-10-17 08:00 A (+39d) | 2026-09-08 → 2026-10-17 17:00 A (+39d) |  |  |  | constraint none → start no earlier than 2026-10-17 08:00 |
| 33 | JA.3 — Diseñar estructura de datos para canciones y beatmaps | 2026-09-08 → 2026-10-17 08:00 A (+39d) | 2026-09-09 → 2026-10-17 17:00 A (+38d) |  |  |  | constraint none → start no earlier than 2026-10-17 08:00 |
| 34 | JT.1 — Crear sistema de reloj musical independiente de los FPS | 2026-09-08 → 2026-10-17 08:00 A (+39d) | 2026-09-08 → 2026-10-17 17:00 A (+39d) |  |  |  | constraint none → start no earlier than 2026-10-17 08:00 |
| 35 | JT.2 — Implementar cálculo de BPM y duración de cada beat | 2026-09-09 → 2026-10-17 08:00 A (+38d) | 2026-09-09 → 2026-10-17 17:00 A (+38d) |  |  |  | constraint none → start no earlier than 2026-10-17 08:00 |
| 36 | JT.3 — Implementar cálculo de compases y subdivisiones rítmicas | 2026-09-09 → 2026-10-17 08:00 A (+38d) | 2026-09-10 → 2026-10-17 17:00 A (+37d) |  |  |  | constraint none → start no earlier than 2026-10-17 08:00 |
| 37 | JB.1 — Crear prototipo de beatmap manual | 2026-09-09 → 2026-10-17 08:00 A (+38d) | 2026-09-09 → 2026-10-17 08:00 A (+38d) | 0d → 0.62d |  |  | constraint none → start no earlier than 2026-10-17 08:00 |
| 38 | JB.2 — Crear sistema que cargue un beatmap | 2026-09-09 → 2026-10-17 08:00 A (+38d) | 2026-09-09 → 2026-10-17 08:00 A (+38d) |  |  |  | constraint none → start no earlier than 2026-10-17 08:00 |
| 39 | JB.3 — Sincronizar beatmap con reproducción de música | 2026-09-09 → 2026-10-17 08:00 A (+38d) | 2026-09-10 → 2026-10-17 17:00 A (+37d) |  |  |  | constraint none → start no earlier than 2026-10-17 08:00 |
| 40 | JN.1 — Crear representación visual provisional de las notas | 2026-09-10 → 2026-10-17 08:00 A (+37d) | 2026-09-10 → 2026-10-17 17:00 A (+37d) |  |  |  | constraint none → start no earlier than 2026-10-17 08:00 |
| 41 | JN.2 — Crear sistema que indique qué componente de la batería debe golpearse | 2026-09-10 → 2026-10-17 08:00 A (+37d) | 2026-09-11 → 2026-10-17 17:00 A (+36d) |  |  |  | constraint none → start no earlier than 2026-10-17 08:00 |
| 42 | JW.1 — Definir ventanas temporales Perfect, Good y Miss | 2026-09-10 → 2026-10-17 08:00 A (+37d) | 2026-09-10 → 2026-10-17 17:00 A (+37d) |  |  |  | constraint none → start no earlier than 2026-10-17 08:00 |
| 43 | JW.2 — Programar detección de golpes correctos | 2026-09-10 → 2026-10-17 08:00 A (+37d) | 2026-09-11 → 2026-10-17 17:00 A (+36d) |  |  | 42, JK — Crear sistema provisional de golpes utilizando teclado para desarrollar sin depender del VR → 42, 32 | constraint none → start no earlier than 2026-10-17 08:00 |
| 44 | JW.5 — Programar detección de notas no golpeadas | 2026-09-11 → 2026-10-17 08:00 A (+36d) | 2026-09-11 → 2026-10-17 17:00 A (+36d) |  |  |  | constraint none → start no earlier than 2026-10-17 08:00 |
| 45 | JP.1 — Crear sistema básico de puntuación | 2026-09-11 → 2026-10-17 08:00 A (+36d) | 2026-09-14 → 2026-10-17 17:00 A (+33d) |  |  | 43, JW.3 — Programar detección de golpes anticipados, JW.4 — Programar detección de golpes atrasados, 44 → 43, 44 | constraint none → start no earlier than 2026-10-17 08:00 |
| 46 | JP.3 — Crear cálculo de precisión porcentual del usuario | 2026-09-14 → 2026-10-17 08:00 A (+33d) | 2026-09-14 → 2026-10-17 17:00 A (+33d) |  |  |  | constraint none → start no earlier than 2026-10-17 08:00 |
| 47 | JI.1 — Integrar evento DrumHit de la batería VR con el juego de ritmo | 2026-09-17 → 2026-10-17 08:00 A (+30d) | 2026-09-18 → 2026-10-17 17:00 A (+29d) |  |  |  | constraint none → start no earlier than 2026-10-17 08:00 |
| 48 | **E. Experiencia emocional** | 2026-09-07 → 2026-10-16 08:00 (+39d) | 2026-09-18 → 2026-11-16 17:00 (+59d) |  |  |  |  |
| 49 | EO.1 — Definir objetivo general de la experiencia emocional | 2026-09-07 → 2026-10-18 08:00 A (+41d) | 2026-09-07 → 2026-10-18 17:00 A (+41d) |  |  |  | constraint none → start no earlier than 2026-10-18 08:00 |
| 50 | EO.2 — Definir alcance y límites del proyecto respecto al concepto de terapia | 2026-09-07 → 2026-10-18 08:00 A (+41d) | 2026-09-07 → 2026-10-18 17:00 A (+41d) |  |  |  | constraint start no later than 2026-09-07 → start no earlier than 2026-10-18 08:00 |
| 51 | EB.1 — Buscar bibliografía científica sobre música y regulación emocional | 2026-09-07 → 2026-10-17 08:00 A (+40d) | 2026-09-08 → 2026-10-18 17:00 A (+40d) |  |  |  | constraint none → start no earlier than 2026-10-17 08:00 |
| 52 | EB.2 — Buscar bibliografía científica sobre percusión y expresión emocional | 2026-09-07 → 2026-10-17 08:00 A (+40d) | 2026-09-08 → 2026-10-18 17:00 A (+40d) |  |  |  | constraint none → start no earlier than 2026-10-17 08:00 |
| 53 | EB.3 — Buscar investigaciones sobre juegos de ritmo relacionados con bienestar y expresión emocional | 2026-09-07 → 2026-10-18 08:00 A (+41d) | 2026-09-07 → 2026-10-18 17:00 A (+41d) |  |  |  | constraint none → start no earlier than 2026-10-18 08:00 |
| 54 | EB.4 — Seleccionar estudios científicos que realmente sustentarán el proyecto | 2026-09-09 → 2026-10-18 08:00 A (+39d) | 2026-09-09 → 2026-10-18 17:00 A (+39d) |  |  |  | constraint none → start no earlier than 2026-10-18 08:00 |
| 55 | EB.5 — Crear matriz bibliográfica de artículos, objetivo, metodología y resultados | 2026-09-10 → 2026-10-17 08:00 A (+37d) | 2026-09-11 → 2026-10-18 17:00 A (+37d) |  |  |  | constraint none → start no earlier than 2026-10-17 08:00 |
| 56 | EE.1 — Definir qué emociones serán abordadas dentro de la simulación | 2026-09-10 → 2026-10-18 08:00 A (+38d) | 2026-09-10 → 2026-10-18 17:00 A (+38d) |  |  |  | constraint none → start no earlier than 2026-10-18 08:00 |
| 57 | EE.2 — Definir qué actividades se relacionarán con cada emoción | 2026-09-11 → 2026-10-18 08:00 A (+37d) | 2026-09-11 → 2026-10-18 17:00 A (+37d) |  |  |  | constraint none → start no earlier than 2026-10-18 08:00 |
| 58 | EE.3 — Determinar duración aproximada de una sesión | 2026-09-14 → 2026-10-18 08:00 A (+34d) | 2026-09-14 → 2026-10-18 17:00 A (+34d) |  |  |  | constraint none → start no earlier than 2026-10-18 08:00 |
| 59 | ER — Investigar postura, comodidad y ergonomía durante actividades de percusión VR | 2026-09-10 → 2026-10-18 08:00 A (+38d) | 2026-09-10 → 2026-10-18 17:00 A (+38d) |  |  |  | constraint none → start no earlier than 2026-10-18 08:00 |
| 60 | EG.1 — Redactar el guion de introducción general de la terapia | 2026-09-11 → 2026-10-18 08:00 A (+37d) | 2026-09-11 → 2026-10-18 17:00 A (+37d) |  |  |  | constraint none → start no earlier than 2026-10-18 08:00 |
| 61 | EG.2 — Redactar las instrucciones específicas de la actividad terapéutica | 2026-09-14 → 2026-10-18 08:00 A (+34d) | 2026-09-14 → 2026-10-18 17:00 A (+34d) |  |  |  | constraint none → start no earlier than 2026-10-18 08:00 |
| 62 | EF — Diseñar flujo completo de experiencia desde ingreso hasta finalización | 2026-09-15 → 2026-10-18 08:00 A (+33d) | 2026-09-16 → 2026-10-19 17:00 A (+33d) |  |  |  | constraint none → start no earlier than 2026-10-18 08:00 |
| 63 | EG.3 — Redactar el guion del tutorial introductorio | 2026-09-17 → 2026-10-18 08:00 A (+31d) | 2026-09-17 → 2026-10-18 17:00 A (+31d) |  |  |  | constraint none → start no earlier than 2026-10-18 08:00 |
| 64 | EI — Definir cómo se utilizarán el ritmo y la intensidad de los golpes para expresar las emociones seleccionadas | 2026-09-14 → 2026-10-18 08:00 A (+34d) | 2026-09-14 → 2026-10-18 17:00 A (+34d) |  |  |  | constraint none → start no earlier than 2026-10-18 08:00 |
| 65 | EG.4 — Redactar el guion de cierre de la experiencia terapéutica | 2026-09-17 → 2026-10-19 08:00 A (+32d) | 2026-09-17 → 2026-10-19 17:00 A (+32d) |  |  |  | constraint none → start no earlier than 2026-10-19 08:00 |
| 66 | ET.1 — Redactar la fundamentación teórica de la propuesta terapéutica | 2026-09-15 → 2026-10-16 08:00 A (+31d) | 2026-09-17 → 2026-10-18 17:00 A (+31d) |  |  |  | constraint none → start no earlier than 2026-10-16 08:00 |
| 67 | ET.2 — Revisar y actualizar la fundamentación según el funcionamiento final del prototipo | 2026-09-18 → 2026-11-16 08:00 (+59d) | 2026-09-18 → 2026-11-16 17:00 (+59d) |  |  |  | constraint none → start no earlier than 2026-11-16 08:00 |
| 68 | **M. Música** | 2026-09-07 → 2026-10-17 08:00 (+40d) | 2026-10-09 → 2026-10-18 17:00 (+9d) | 19.75d → 9.62d | 7% → 100% |  |  |
| 69 | ML.1 — Determinar si se utilizará música original, libre de derechos o licenciada | 2026-09-07 → 2026-10-18 08:00 A (+41d) | 2026-09-07 → 2026-10-18 17:00 A (+41d) |  |  |  | constraint none → start no earlier than 2026-10-18 08:00 |
| 70 | ML.2 — Investigar licencias de las pistas o recursos musicales considerados | 2026-09-07 → 2026-10-18 08:00 A (+41d) | 2026-09-08 → 2026-10-18 17:00 A (+40d) |  |  |  | constraint start no later than 2026-09-07 → start no earlier than 2026-10-18 08:00 |

| ID | Task | Start | Finish | Duration | Complete | Predecessors | Other |
| --- | --- | --- | --- | --- | --- | --- | --- |
| 71 | MP.1 — Crear o seleccionar primera pista musical de prueba | 2026-09-18 → 2026-10-17 08:00 A (+29d) | 2026-09-22 → 2026-10-18 17:00 A (+26d) |  |  | MR.4 — Definir estilos musicales que utilizará el proyecto, 69, MR.5 — Definir duración de las pistas musicales → 55, 69, 59 | constraint none → start no earlier than 2026-10-17 08:00 |
| 72 | MP.2 — Determinar BPM exacto de la primera pista | 2026-09-22 → 2026-10-18 08:00 A (+26d) | 2026-09-22 → 2026-10-18 17:00 A (+26d) |  |  |  | constraint none → start no earlier than 2026-10-18 08:00 |
| 73 | MP.3 — Identificar estructura musical de la primera pista | 2026-09-22 → 2026-10-18 08:00 A (+26d) | 2026-09-22 → 2026-10-18 17:00 A (+26d) |  |  |  | constraint none → start no earlier than 2026-10-18 08:00 |
| 74 | MB.1 — Crear patrón básico de batería para la primera pista | 2026-09-22 → 2026-10-18 08:00 A (+26d) | 2026-09-24 → 2026-10-18 17:00 A (+24d) | 1.75d → 1.38d |  |  | constraint none → start no earlier than 2026-10-18 08:00 |
| 75 | MB.4 — Convertir patrón rítmico en información utilizable para el beatmap | 2026-09-28 → 2026-10-18 08:00 A (+20d) | 2026-09-29 → 2026-10-18 17:00 A (+19d) | 0.88d → 0.62d |  | MB.3 — Crear versiones de dificultad Tutorial, Fácil e Intermedio del patrón, 72 → 74, 72 | constraint start no later than 2026-09-28 → start no earlier than 2026-10-18 08:00 |
| 76 | **S. Sonido** | 2026-09-07 → 2026-09-15 08:00 (+8d) | 2026-09-25 → 2026-10-19 17:00 (+24d) | 11d → 10.38d | 3% → 100% |  |  |
| 77 | SP.1 — Crear lista de todos los sonidos necesarios para el proyecto | 2026-09-07 → 2026-09-16 08:00 A (+9d) | 2026-09-07 → 2026-09-16 17:00 A (+9d) |  |  |  | constraint none → start no earlier than 2026-09-16 08:00 |
| 78 | SB.1 — Buscar sonido de kick | 2026-09-08 → 2026-09-16 08:00 A (+8d) | 2026-09-08 → 2026-09-16 17:00 A (+8d) |  |  | SP.2 — Investigar bancos de sonidos compatibles con la licencia del proyecto → 77 | constraint none → start no earlier than 2026-09-16 08:00 |
| 79 | SB.2 — Buscar sonido de snare | 2026-09-08 → 2026-09-16 08:00 A (+8d) | 2026-09-08 → 2026-09-16 17:00 A (+8d) |  |  | SP.2 — Investigar bancos de sonidos compatibles con la licencia del proyecto → 77 | constraint none → start no earlier than 2026-09-16 08:00 |
| 80 | SB.3 — Buscar sonidos de toms | 2026-09-08 → 2026-09-16 08:00 A (+8d) | 2026-09-08 → 2026-09-16 17:00 A (+8d) |  |  | SP.2 — Investigar bancos de sonidos compatibles con la licencia del proyecto → 77 | constraint none → start no earlier than 2026-09-16 08:00 |
| 81 | SB.4 — Buscar sonidos de hi-hat abierto y cerrado | 2026-09-08 → 2026-09-16 08:00 A (+8d) | 2026-09-08 → 2026-09-16 17:00 A (+8d) |  |  | SP.2 — Investigar bancos de sonidos compatibles con la licencia del proyecto → 77 | constraint none → start no earlier than 2026-09-16 08:00 |
| 82 | SB.5 — Buscar sonidos de crash y ride | 2026-09-08 → 2026-10-19 08:00 A (+41d) | 2026-09-08 → 2026-10-19 17:00 A (+41d) |  |  | SP.2 — Investigar bancos de sonidos compatibles con la licencia del proyecto → 77 | constraint none → start no earlier than 2026-10-19 08:00 |
| 83 | SB.6 — Seleccionar tres niveles de intensidad para cada componente principal | 2026-09-08 → 2026-09-15 08:00 A (+7d) | 2026-09-11 → 2026-09-16 17:00 A (+5d) |  |  |  | constraint none → start no earlier than 2026-09-15 08:00 |
| 84 | SE.1 — Editar inicio y final de cada muestra para evitar retrasos | 2026-09-11 → 2026-09-16 08:00 A (+5d) | 2026-09-14 → 2026-09-16 17:00 A (+2d) |  |  |  | constraint none → start no earlier than 2026-09-16 08:00 |
| 85 | SE.3 — Normalizar volumen de las muestras de batería | 2026-09-14 → 2026-09-16 08:00 A (+2d) | 2026-09-15 → 2026-09-16 17:00 A (+1d) |  |  |  | constraint none → start no earlier than 2026-09-16 08:00 |
| 86 | SE.4 — Exportar sonidos en formato apropiado para Unity | 2026-09-15 → 2026-09-16 08:00 A (+1d) | 2026-09-15 → 2026-09-16 17:00 A (+1d) |  |  | 85, SE.2 — Eliminar ruidos innecesarios de las muestras → 85, 83 | constraint none → start no earlier than 2026-09-16 08:00 |
| 87 | SI.1 — Integrar sonidos de batería con sistema DrumHit | 2026-09-17 → 2026-09-16 08:00 A (-1d) | 2026-09-18 → 2026-09-16 17:00 A (-2d) |  |  |  | constraint none → start no earlier than 2026-09-16 08:00 |
| 88 | SI.2 — Asignar sonidos diferentes según intensidad del golpe | 2026-09-18 → 2026-09-16 08:00 A (-2d) | 2026-09-21 → 2026-09-16 17:00 A (-5d) |  |  |  | constraint none → start no earlier than 2026-09-16 08:00 |
| 89 | SI.3 — Configurar volumen espacial de la batería dentro del entorno VR | 2026-09-18 → 2026-09-17 08:00 A (-1d) | 2026-09-21 → 2026-09-17 17:00 A (-4d) |  |  |  | constraint none → start no earlier than 2026-09-17 08:00 |
| 90 | SI.4 — Medir retraso perceptible entre impacto y reproducción del sonido | 2026-09-18 → 2026-10-17 08:00 A (+29d) | 2026-09-21 → 2026-10-17 17:00 A (+26d) |  |  |  | constraint none → start no earlier than 2026-10-17 08:00 |
| 91 | **I. Interfaz / UX/UI** | 2026-09-10 → 2026-10-17 08:00 (+37d) | 2026-09-30 → 2026-11-12 17:00 (+43d) | 8.88d → 7.62d | 34% → 55% |  |  |
| 92 | IM.1 — Definir mapa completo de pantallas de la aplicación | 2026-09-17 → 2026-10-19 08:00 A (+32d) | 2026-09-18 → 2026-10-19 17:00 A (+31d) |  |  |  | constraint none → start no earlier than 2026-10-19 08:00 |
| 93 | IM.2 — Definir navegación entre menú, experiencia guiada, juego y modo libre | 2026-09-18 → 2026-10-19 08:00 A (+31d) | 2026-09-18 → 2026-10-19 17:00 A (+31d) |  |  |  | constraint none → start no earlier than 2026-10-19 08:00 |
| 94 | IW.1 — Crear wireframe del menú principal | 2026-09-18 → 2026-10-19 08:00 A (+31d) | 2026-09-21 → 2026-10-19 17:00 A (+28d) |  |  |  | constraint none → start no earlier than 2026-10-19 08:00 |
| 95 | IW.2 — Crear wireframe de selección de modo | 2026-09-18 → 2026-10-19 08:00 A (+31d) | 2026-09-21 → 2026-10-19 17:00 A (+28d) |  |  |  | constraint none → start no earlier than 2026-10-19 08:00 |
| 96 | IW.3 — Crear wireframe de selección emocional | 2026-09-18 → 2026-10-19 08:00 A (+31d) | 2026-09-21 → 2026-10-19 17:00 A (+28d) |  |  |  | constraint none → start no earlier than 2026-10-19 08:00 |
| 97 | IW.5 — Crear wireframe de pantalla previa al juego | 2026-09-18 → 2026-10-19 08:00 A (+31d) | 2026-09-21 → 2026-10-19 17:00 A (+28d) |  |  |  | constraint none → start no earlier than 2026-10-19 08:00 |
| 98 | IG.1 — Diseñar indicadores visuales de Perfect, Good y Miss | 2026-09-10 → 2026-10-17 08:00 A (+37d) | 2026-09-10 → 2026-10-17 17:00 A (+37d) |  |  | IE — Definir estilo visual general de la interfaz → 55 | constraint none → start no earlier than 2026-10-17 08:00 |
| 99 | IG.2 — Diseñar representación definitiva de las notas del juego | 2026-09-11 → 2026-10-21 08:00 A (+40d) | 2026-09-15 → 2026-10-21 17:00 A (+36d) |  |  | IE — Definir estilo visual general de la interfaz, 40 → 55, 40 | constraint none → start no earlier than 2026-10-21 08:00 |
| 100 | IG.3 — Diseñar indicadores para señalar el tambor que debe golpearse | 2026-09-14 → 2026-10-21 08:00 A (+37d) | 2026-09-14 → 2026-10-21 17:00 A (+37d) |  |  |  | constraint none → start no earlier than 2026-10-21 08:00 |
| 101 | IT.1 — Diseñar tutorial visual sobre cómo sujetar las baquetas | 2026-09-11 → 2026-11-12 08:00 (+62d) | 2026-09-14 → 2026-11-12 17:00 (+59d) |  |  | DB.2 — Configurar las baquetas como objetos interactuables → 9, 11 | constraint none → start no earlier than 2026-11-12 08:00 |
| 102 | IT.2 — Diseñar tutorial para explicar cómo seguir el ritmo | 2026-09-11 → 2026-10-20 08:00 A (+39d) | 2026-09-14 → 2026-10-20 17:00 A (+36d) | 0.5d → 0d |  |  | constraint start no later than 2026-09-14 → start no earlier than 2026-10-20 08:00 |
| 103 | IT.3 — Diseñar tutorial para explicar la intensidad de los golpes | 2026-09-17 → 2026-10-20 08:00 A (+33d) | 2026-09-18 → 2026-10-20 17:00 A (+32d) |  |  |  | constraint none → start no earlier than 2026-10-20 08:00 |
| 104 | IT.4 — Implementar flujo del tutorial completo | 2026-09-18 → 2026-10-19 08:00 A (+31d) | 2026-09-22 → 2026-10-20 17:00 A (+28d) |  |  |  | constraint start no later than 2026-09-18 → start no earlier than 2026-10-19 08:00 |
| 105 | II.2 — Implementar menú principal dentro de Unity | 2026-09-22 → 2026-10-20 08:00 A (+28d) | 2026-09-23 → 2026-10-20 17:00 A (+27d) | 1d → 0.75d |  | II.1 — Importar recursos gráficos de Canva/Figma a Unity → 55, 95, 96, 62, 93, 97 | constraint none → start no earlier than 2026-10-20 08:00 |
| 106 | II.3 — Implementar interacción con botones utilizando controlador VR | 2026-09-23 → 2026-10-20 08:00 A (+27d) | 2026-09-23 → 2026-10-20 17:00 A (+27d) |  |  |  | constraint none → start no earlier than 2026-10-20 08:00 |
| 107 | II.6 — Implementar pantalla de resultados | 2026-09-22 → 2026-10-20 08:00 A (+28d) | 2026-09-23 → 2026-10-20 17:00 A (+27d) | 1.25d → 1.5d |  | JP.4 — Crear resumen de resultados al terminar una canción, IS.6 — Diseñar presentación de resultados finales → 45, 93, 46 | constraint none → start no earlier than 2026-10-20 08:00 |
| 108 | IR.1 — Revisar legibilidad de textos dentro del visor VR | 2026-09-23 → 2026-10-20 08:00 A (+27d) | 2026-09-24 → 2026-10-20 17:00 A (+26d) |  |  |  | constraint none → start no earlier than 2026-10-20 08:00 |
| 109 | IR.2 — Revisar tamaño, distancia y posición de paneles | 2026-09-24 → 2026-10-20 08:00 A (+26d) | 2026-09-24 → 2026-10-20 17:00 A (+26d) | 0.25d → 0d |  |  | constraint none → start no earlier than 2026-10-20 08:00 |
| 110 | **A. Entorno 3D y assets** | 2026-09-07 → 2026-10-17 08:00 (+40d) | 2026-10-06 → 2026-10-18 17:00 (+12d) | 16.88d → 6.5d | 4% → 100% |  |  |
| 111 | AA.3 — Buscar assets de entorno compatibles con el estilo elegido | 2026-09-14 → 2026-10-17 08:00 A (+33d) | 2026-09-17 → 2026-10-18 17:00 A (+31d) | 2.75d → 2.38d |  | AA.1 — Crear lista de todos los assets 3D necesarios, AA.2 — Definir límites de polígonos y rendimiento adecuados para VR → 55, 54, 56, 6 | constraint none → start no earlier than 2026-10-17 08:00 |
| 112 | AA.4 — Revisar licencias de los assets seleccionados | 2026-09-17 → 2026-10-18 08:00 A (+31d) | 2026-09-18 → 2026-10-18 17:00 A (+30d) |  |  |  | constraint none → start no earlier than 2026-10-18 08:00 |
| 113 | AP.1 — Crear primera composición del escenario en Unity | 2026-09-18 → 2026-10-17 08:00 A (+29d) | 2026-09-22 → 2026-10-18 17:00 A (+26d) | 1.88d → 1.38d |  |  | constraint start no later than 2026-09-18 → start no earlier than 2026-10-17 08:00 |
| 114 | AL.1 — Configurar iluminación inicial considerando la paleta de colores establecida | 2026-09-23 → 2026-10-18 08:00 A (+25d) | 2026-09-24 → 2026-10-18 17:00 A (+24d) |  |  | 113, AP.3 — Aplicar la paleta de colores seleccionada a modelos, materiales y elementos principales del escenario → 113, 55, 54, 56 | constraint none → start no earlier than 2026-10-18 08:00 |
| 115 | AL.2 — Configurar iluminación definitiva y ambiente visual | 2026-09-24 → 2026-10-18 08:00 A (+24d) | 2026-09-25 → 2026-10-18 17:00 A (+23d) |  |  |  | constraint start no later than 2026-09-24 → start no earlier than 2026-10-18 08:00 |
| 116 | AS — Crear límites visuales de seguridad del espacio de interacción | 2026-09-23 → 2026-10-18 08:00 A (+25d) | 2026-09-24 → 2026-10-18 17:00 A (+24d) |  |  | AP.2 — Determinar posición del jugador y batería dentro del escenario → 113, 59 | constraint none → start no earlier than 2026-10-18 08:00 |
| 117 | AO.5 — Evaluar FPS del escenario en el visor objetivo | 2026-09-30 → 2026-10-18 08:00 A (+18d) | 2026-10-01 → 2026-10-18 17:00 A (+17d) | 1.12d → 1d |  | AO.4 — Preparar iluminación horneada cuando sea conveniente, AO.2 — Configurar LOD en objetos que lo requieran → 115 | constraint none → start no earlier than 2026-10-18 08:00 |
| 118 | **Q. QA, documentación y gestión** | 2026-09-07 → 2026-09-02 08:00 (-5d) | 2026-10-23 → 2026-11-20 17:00 (+28d) | 27.62d → 17d | 32% → 43% |  |  |
| 119 | QP.1 — Definir alcance general del proyecto | 2026-09-07 → 2026-09-03 08:00 A (-4d) | 2026-09-07 → 2026-09-03 17:00 A (-4d) |  |  |  | constraint none → start no earlier than 2026-09-03 08:00 |
| 120 | QP.2 — Definir objetivos generales y específicos | 2026-09-08 → 2026-09-03 08:00 A (-5d) | 2026-09-08 → 2026-09-03 17:00 A (-5d) |  |  |  | constraint none → start no earlier than 2026-09-03 08:00 |
| 121 | QP.3 — Identificar entregables principales del proyecto | 2026-09-09 → 2026-09-03 08:00 A (-6d) | 2026-09-09 → 2026-09-03 17:00 A (-6d) |  |  |  | constraint none → start no earlier than 2026-09-03 08:00 |
| 122 | QP.4 — Elaborar EDT/WBS completa de tareas | 2026-09-09 → 2026-09-02 08:00 A (-7d) | 2026-09-11 → 2026-09-03 17:00 A (-8d) |  |  |  | constraint none → start no earlier than 2026-09-02 08:00 |
| 123 | QP.5 — Asignar responsables principales para cada tarea | 2026-09-11 → 2026-09-03 08:00 A (-8d) | 2026-09-11 → 2026-09-03 17:00 A (-8d) |  |  |  | constraint none → start no earlier than 2026-09-03 08:00 |
| 124 | QP.6 — Establecer dependencias entre tareas | 2026-09-11 → 2026-09-03 08:00 A (-8d) | 2026-09-11 → 2026-09-03 17:00 A (-8d) |  |  |  | constraint none → start no earlier than 2026-09-03 08:00 |
| 125 | QP.7 — Crear cronograma inicial del proyecto | 2026-09-11 → 2026-09-09 08:00 A (-2d) | 2026-09-14 → 2026-09-09 17:00 A (-5d) |  |  |  | constraint none → start no earlier than 2026-09-09 08:00 |
| 126 | QP.8 — Crear diagrama de Gantt | 2026-09-14 → 2026-09-09 08:00 A (-5d) | 2026-09-15 → 2026-09-09 17:00 A (-6d) |  |  |  | constraint none → start no earlier than 2026-09-09 08:00 |
| 127 | QP.9 — Identificar ruta crítica del proyecto | 2026-09-15 → 2026-09-09 08:00 A (-6d) | 2026-09-16 → 2026-09-09 17:00 A (-7d) |  |  |  | constraint none → start no earlier than 2026-09-09 08:00 |
| 128 | QG.1 — Crear lista de riesgos técnicos, académicos y de tiempo | 2026-09-16 → 2026-09-18 08:00 A (+2d) | 2026-09-16 → 2026-09-18 17:00 A (+2d) |  |  |  | constraint none → start no earlier than 2026-09-18 08:00 |
| 129 | QG.2 — Definir acciones de mitigación para cada riesgo | 2026-09-16 → 2026-09-18 08:00 A (+2d) | 2026-09-17 → 2026-09-18 17:00 A (+1d) |  | 0% → 100% |  | constraint none → start no earlier than 2026-09-18 08:00 |
| 130 | QR.1 — Definir requisitos funcionales de la simulación | 2026-09-08 → 2026-09-02 08:00 A (-6d) | 2026-09-09 → 2026-09-03 17:00 A (-6d) |  |  |  | constraint none → start no earlier than 2026-09-02 08:00 |
| 131 | QR.2 — Definir requisitos no funcionales | 2026-09-10 → 2026-09-03 08:00 A (-7d) | 2026-09-10 → 2026-09-03 17:00 A (-7d) |  |  |  | constraint none → start no earlier than 2026-09-03 08:00 |
| 132 | QR.3 — Crear criterios de aceptación para cada requisito | 2026-09-11 → 2026-09-02 08:00 A (-9d) | 2026-09-14 → 2026-09-03 17:00 A (-11d) |  |  |  | constraint none → start no earlier than 2026-09-02 08:00 |
| 133 | QR.4 — Crear matriz de trazabilidad entre requisitos y funcionalidades | 2026-09-15 → 2026-09-21 08:00 A (+6d) | 2026-09-15 → 2026-09-21 17:00 A (+6d) |  |  |  | constraint none → start no earlier than 2026-09-21 08:00 |
| 134 | QE.1 — Establecer formato para documentar errores | 2026-09-07 → 2026-09-18 08:00 A (+11d) | 2026-09-07 → 2026-09-18 17:00 A (+11d) |  |  |  | constraint none → start no earlier than 2026-09-18 08:00 |
| 135 | QT.1 — Crear plan de pruebas de batería VR | 2026-09-16 → 2026-09-18 08:00 A (+2d) | 2026-09-16 → 2026-09-18 17:00 A (+2d) |  | 0% → 100% |  | constraint none → start no earlier than 2026-09-18 08:00 |
| 136 | QT.6 — Realizar pruebas unitarias de batería | 2026-09-21 → 2026-10-17 08:00 A (+26d) | 2026-09-22 → 2026-10-17 17:00 A (+25d) |  |  |  | constraint none → start no earlier than 2026-10-17 08:00 |
| 137 | QT.7 — Realizar pruebas del sistema de ritmo | 2026-09-30 → 2026-10-17 08:00 A (+17d) | 2026-10-01 → 2026-10-17 17:00 A (+16d) | 0.5d → 0d |  | JI.5 — Integrar juego de ritmo completo con flujo general de la experiencia, QT.2 — Crear plan de pruebas del juego de ritmo → 74, 45, 94, 64, 104, 36, 41, 47, 18, 43, 98, 77, 39, 31, 133 | constraint none → start no earlier than 2026-10-17 08:00 |
| 138 | QT.8 — Realizar pruebas con usuarios del prototipo integrado | 2026-09-09 → 2026-11-12 08:00 (+64d) | 2026-09-11 → 2026-11-13 17:00 (+63d) |  |  |  | constraint none → start no earlier than 2026-11-12 08:00 |
| 139 | QE.2 — Registrar errores, observaciones y sugerencias de usuarios | 2026-09-11 → 2026-11-13 08:00 (+63d) | 2026-09-14 → 2026-11-13 17:00 (+60d) |  |  |  | constraint none → start no earlier than 2026-11-13 08:00 |
| 140 | QE.3 — Clasificar errores por gravedad y prioridad | 2026-09-14 → 2026-11-16 08:00 (+63d) | 2026-09-14 → 2026-11-16 17:00 (+63d) |  |  |  | constraint none → start no earlier than 2026-11-16 08:00 |

| ID | Task | Start | Finish | Duration | Complete | Predecessors | Other |
| --- | --- | --- | --- | --- | --- | --- | --- |
| 141 | QE.4 — Asignar errores a las áreas correspondientes | 2026-09-14 → 2026-11-16 08:00 (+63d) | 2026-09-14 → 2026-11-16 17:00 (+63d) |  |  |  | constraint none → start no earlier than 2026-11-16 08:00 |
| 142 | QE.5 — Verificar corrección de errores críticos | 2026-09-14 → 2026-11-17 08:00 (+64d) | 2026-09-15 → 2026-11-17 17:00 (+63d) | 0.62d → 0.38d |  | 141, JW.6 — Ajustar ventanas de precisión después de pruebas de usuarios, IR.3 — Corregir problemas de navegación encontrados en pruebas → 141, 138 | constraint none → start no earlier than 2026-11-17 08:00 |
| 143 | QV.1 — Realizar prueba completa desde inicio hasta final de una sesión | 2026-09-15 → 2026-11-18 08:00 (+64d) | 2026-09-15 → 2026-11-18 17:00 (+64d) | 0.62d → 0.75d |  |  | constraint none → start no earlier than 2026-11-18 08:00 |
| 144 | QV.2 — Evaluar estabilidad y presencia de cierres inesperados | 2026-09-16 → 2026-11-18 08:00 (+63d) | 2026-09-16 → 2026-11-18 17:00 (+63d) | 0.38d → 0.12d |  |  | constraint none → start no earlier than 2026-11-18 08:00 |
| 145 | QV.3 — Medir FPS del proyecto en el visor objetivo | 2026-09-25 → 2026-10-18 08:00 A (+23d) | 2026-09-25 → 2026-10-18 17:00 A (+23d) |  |  | AO.3 — Revisar cantidad de luces en tiempo real, 143 → 115, 143 | constraint none → start no earlier than 2026-10-18 08:00 |
| 146 | QV.4 — Evaluar latencia entre golpe físico, sonido y detección | 2026-09-22 → 2026-10-17 08:00 A (+25d) | 2026-09-23 → 2026-10-17 17:00 A (+24d) |  |  | 28, 90, JY — Crear sistema de calibración de latencia entre golpe y música → 28, 90, 47 | constraint none → start no earlier than 2026-10-17 08:00 |
| 147 | QV.5 — Evaluar comodidad de la experiencia VR | 2026-09-11 → 2026-11-13 08:00 (+63d) | 2026-09-14 → 2026-11-13 17:00 (+60d) |  |  |  | constraint none → start no earlier than 2026-11-13 08:00 |
| 148 | QC.1 — Registrar versiones importantes del proyecto | 2026-09-09 → 2026-11-10 08:00 A (+62d) | 2026-09-09 → 2026-11-10 08:00 A (+62d) |  | 0% → 100% |  | constraint none → start no earlier than 2026-11-10 08:00 |
| 149 | QC.2 — Documentar avances semanales | 2026-09-07 → 2026-10-21 08:00 A (+44d) | 2026-09-07 → 2026-10-21 17:00 A (+44d) |  |  |  | constraint none → start no earlier than 2026-10-21 08:00 |
| 150 | QC.3 — Mantener actualizada la bibliografía del proyecto | 2026-09-09 → 2026-10-18 08:00 A (+39d) | 2026-09-09 → 2026-10-18 17:00 A (+39d) |  |  |  | constraint none → start no earlier than 2026-10-18 08:00 |
| 151 | QC.4 — Mantener registro de assets y sus licencias | 2026-09-09 → 2026-10-18 08:00 A (+39d) | 2026-09-09 → 2026-10-18 17:00 A (+39d) |  |  | AA.2 — Definir límites de polígonos y rendimiento adecuados para VR → 6 | constraint none → start no earlier than 2026-10-18 08:00 |
| 152 | QC.5 — Mantener registro de música y licencias utilizadas | 2026-09-09 → 2026-10-18 08:00 A (+39d) | 2026-09-09 → 2026-10-18 17:00 A (+39d) |  |  |  | constraint none → start no earlier than 2026-10-18 08:00 |
| 153 | QM.1 — Elaborar manual básico de usuario | 2026-09-16 → 2026-11-19 08:00 (+64d) | 2026-09-17 → 2026-11-20 17:00 (+64d) | 1.38d → 1.12d |  |  | constraint none → start no earlier than 2026-11-19 08:00 |
| 154 | QM.2 — Elaborar manual técnico de instalación y ejecución | 2026-09-16 → 2026-10-21 08:00 A (+35d) | 2026-09-16 → 2026-10-21 17:00 A (+35d) | 0.38d → 0.12d | 0% → 100% |  | constraint none → start no earlier than 2026-10-21 08:00 |
| 155 | QI.1 — Analizar resultados obtenidos durante las pruebas | 2026-09-14 → 2026-11-13 08:00 (+60d) | 2026-09-16 → 2026-11-16 17:00 (+61d) |  |  |  | constraint none → start no earlier than 2026-11-13 08:00 |
| 156 | QI.2 — Redactar apartado de resultados del proyecto | 2026-09-16 → 2026-11-16 08:00 (+61d) | 2026-09-18 → 2026-11-17 17:00 (+60d) |  |  |  | constraint none → start no earlier than 2026-11-16 08:00 |
| 157 | QI.3 — Redactar conclusiones y limitaciones | 2026-09-18 → 2026-11-17 08:00 (+60d) | 2026-09-21 → 2026-11-17 17:00 (+57d) |  |  |  | constraint none → start no earlier than 2026-11-17 08:00 |
| 158 | QI.4 — Integrar todas las secciones del informe final | 2026-10-08 → 2026-11-18 08:00 (+41d) | 2026-10-13 → 2026-11-19 17:00 (+37d) |  |  | 66, QD.1 — Crear documentación de arquitectura del software, 156, 157, 67, 129, 149, QD.2 — Crear diagrama del flujo general de la aplicación, QD.3 — Documentar funcionamiento del sistema de detección de golpes, QD.4 — Documentar funcionamiento del juego de ritmo, QD.5 — Documentar sistema de intensidad de los golpes, QD.6 — Documentar selección y fundamentación del entorno virtual, QD.7 — Documentar fundamentación de la música utilizada, QD.8 — Documentar diseño y funcionamiento de la interfaz → 66, 23, 74, 45, 94, 64, 104, 36, 41, 47, 18, 43, 98, 77, 39, 156, 157, 67, 129, 149, 93, 88, 117, 75, 109 | constraint none → start no earlier than 2026-11-18 08:00 |
| 159 | QI.5 — Revisar redacción, ortografía, referencias y formato | 2026-10-13 → 2026-11-19 08:00 (+37d) | 2026-10-15 → 2026-11-20 17:00 (+36d) | 2.12d → 2.38d |  |  | constraint none → start no earlier than 2026-11-19 08:00 |
| 160 | QB.1 — Generar build candidata a versión final | 2026-09-28 → 2026-11-18 08:00 (+51d) | 2026-09-29 → 2026-11-18 17:00 (+50d) |  |  |  | constraint start no later than 2026-09-28 → start no earlier than 2026-11-18 08:00 |
| 161 | QB.2 — Probar build final en el visor VR objetivo | 2026-09-29 → 2026-11-19 08:00 (+51d) | 2026-09-29 → 2026-11-19 17:00 (+51d) | 0.88d → 1d |  |  | constraint start no later than 2026-09-29 → start no earlier than 2026-11-19 08:00 |
| 162 | QB.3 — Corregir errores críticos encontrados en build final | 2026-09-30 → 2026-11-19 08:00 (+50d) | 2026-09-30 → 2026-11-19 17:00 (+50d) | 0.38d → 0.12d |  |  | constraint start no later than 2026-09-30 → start no earlier than 2026-11-19 08:00 |
| 163 | QB.4 — Generar versión definitiva del videojuego | 2026-09-30 → 2026-11-19 08:00 (+50d) | 2026-09-30 → 2026-11-19 17:00 (+50d) |  |  |  | constraint start no later than 2026-10-01 → start no earlier than 2026-11-19 08:00 |
| 164 | QX — Preparar presentación y demostración final del proyecto | 2026-10-15 → 2026-11-19 08:00 (+35d) | 2026-10-19 → 2026-11-20 17:00 (+32d) |  |  | 158, 163, 153, 154, QF.1 — Preparar capturas de pantalla del proyecto, QF.2 — Grabar evidencia en video del funcionamiento, 159 → 158, 163, 153, 154, 143, 159 | constraint start no later than 2026-10-15 → start no earlier than 2026-11-19 08:00 |

## Version 13 (data date 2026-11-11, saved 2026-11-12, file Cronograma_ProjectLibre.xml)

Note of the change: fix(cronograma): las fechas eran las del plan, no las reales

Last finish stays 2026-11-20. Complete tasks 135 → 134.

Added:

| ID | Task | Duration | Start | Finish | Predecessors | Constraint | Resources |
| --- | --- | --- | --- | --- | --- | --- | --- |
| 11 | DO — Implementar sistema para agarrar y soltar objetos con los controles | 1d | 2026-09-10 08:00 | 2026-09-10 17:00 | 9 |  | Misael — Desarrollador de realidad virtual |
| 13 | DB.2 — Configurar las baquetas como objetos interactuables | 0.38d | 2026-09-11 08:00 | 2026-09-11 11:00 | 11, 12 |  | Misael — Desarrollador de realidad virtual |
| 17 | DT.3 — Configurar colliders para cada componente de la batería | 1d | 2026-09-10 11:00 | 2026-09-11 11:00 | 16 |  | Misael — Desarrollador de realidad virtual |
| 28 | DB.4 — Ajustar física de las baquetas para evitar vibraciones o movimientos extraños | 0.75d | 2026-09-14 14:00 | 2026-09-15 11:00 | 18 |  | Misael — Desarrollador de realidad virtual |
| 30 | DT.4 — Incorporar modelo 3D definitivo de la batería | 1d | 2026-09-18 08:00 | 2026-09-18 17:00 | 186, 29, 188 |  | Misael — Desarrollador de realidad virtual |
| 42 | JK — Crear sistema provisional de golpes utilizando teclado para desarrollar sin depender del VR | 1d | 2026-09-08 11:00 | 2026-09-09 11:00 | 37 |  | Benjamín — Desarrollador de gameplay |
| 50 | JW.3 — Programar detección de golpes anticipados | 0d | 2026-09-11 16:00 | 2026-09-11 16:00 | 49 |  | Benjamín — Desarrollador de gameplay |
| 51 | JW.4 — Programar detección de golpes atrasados | 0d | 2026-09-11 16:00 | 2026-09-11 16:00 | 49 |  | Benjamín — Desarrollador de gameplay |
| 54 | JP.2 — Crear sistema de combo o golpes consecutivos | 0d | 2026-09-14 14:00 | 2026-09-14 14:00 | 53 |  | Benjamín — Desarrollador de gameplay |
| 56 | JP.4 — Crear resumen de resultados al terminar una canción | 1.25d | 2026-09-22 09:00 | 2026-09-23 11:00 | 53, 154, 54, 55 |  | Benjamín — Desarrollador de gameplay |
| 58 | JI.2 — Sustituir controles provisionales de teclado por interacción VR | 1d | 2026-09-18 11:00 | 2026-09-21 11:00 | 57 |  | Benjamín — Desarrollador de gameplay |
| 59 | JI.3 — Implementar detección de intensidad del golpe dentro del juego | 1d | 2026-09-18 11:00 | 2026-09-21 11:00 | 21, 57 |  | Benjamín — Desarrollador de gameplay |
| 60 | JI.4 — Diseñar mecánicas en las que determinados golpes requieran distinta intensidad | 0.88d | 2026-09-25 13:00 | 2026-09-28 11:00 | 59, 107 | start no later than 2026-09-25 12:00 | Benjamín — Desarrollador de gameplay |
| 61 | JF.1 — Crear feedback visual inmediato de acierto o error | 0.5d | 2026-09-11 16:00 | 2026-09-14 11:00 | 49, 156 | start no later than 2026-09-14 12:00 | Benjamín — Desarrollador de gameplay |
| 62 | JF.2 — Crear feedback auditivo para aciertos, errores e interacción | 0d | 2026-09-11 16:00 | 2026-09-11 16:00 | 135, 49 |  | Benjamín — Desarrollador de gameplay |
| 63 | JC.1 — Implementar cuenta regresiva antes de iniciar una canción | 0.25d | 2026-09-10 09:00 | 2026-09-10 11:00 | 45 |  | Benjamín — Desarrollador de gameplay |
| 64 | JC.2 — Crear sistema de pausa y reanudación | 0.75d | 2026-09-21 14:00 | 2026-09-22 11:00 | 45, 152 |  | Benjamín — Desarrollador de gameplay |
| 65 | JC.3 — Crear sistema para reiniciar una actividad | 0.12d | 2026-09-22 10:00 | 2026-09-22 11:00 | 64 |  | Benjamín — Desarrollador de gameplay |
| 66 | JC.4 — Crear sistema para abandonar una actividad y regresar al menú | 0.12d | 2026-09-22 10:00 | 2026-09-22 11:00 | 64 |  | Benjamín — Desarrollador de gameplay |
| 67 | JL.1 — Crear diferentes niveles de dificultad | 0.88d | 2026-09-28 13:00 | 2026-09-29 11:00 | 108, 53 | start no later than 2026-09-28 12:00 | Benjamín — Desarrollador de gameplay |
| 68 | JL.2 — Programar selección de dificultad antes de iniciar | 0d | 2026-09-29 15:00 | 2026-09-29 15:00 | 67, 149 |  | Benjamín — Desarrollador de gameplay |
| 69 | JM.1 — Crear modo libre sin puntuación ni notas obligatorias | 0.75d | 2026-09-17 14:00 | 2026-09-18 11:00 | 26 |  | Benjamín — Desarrollador de gameplay |
| 70 | JM.2 — Permitir seleccionar música de fondo en modo libre | 1d | 2026-09-18 11:00 | 2026-09-21 11:00 | 69, 113 |  | Benjamín — Desarrollador de gameplay |
| 71 | JM.3 — Permitir tocar sin música en modo libre | 0d | 2026-09-18 11:00 | 2026-09-18 11:00 | 69 |  | Benjamín — Desarrollador de gameplay |
| 72 | JY — Crear sistema de calibración de latencia entre golpe y música | 0d | 2026-09-21 11:00 | 2026-09-21 11:00 | 57, 134 |  | Benjamín — Desarrollador de gameplay |
| 73 | JW.6 — Ajustar ventanas de precisión después de pruebas de usuarios | 1d | 2026-09-11 11:00 | 2026-09-14 11:00 | 229 |  | Benjamín — Desarrollador de gameplay |
| 74 | JI.5 — Integrar juego de ritmo completo con flujo general de la experiencia | 0.5d | 2026-09-29 16:00 | 2026-09-30 11:00 | 68, 91, 162, 41, 47, 58, 60, 61, 62, 63, 65, 66 |  | Benjamín — Desarrollador de gameplay |
| 96 | MR.1 — Investigar características musicales adecuadas para la experiencia planteada | 2d | 2026-09-14 08:00 | 2026-09-15 17:00 | 82 |  | Javier — Compositor y diseñador musical |
| 97 | MR.2 — Analizar BPM utilizados en las referencias encontradas | 1d | 2026-09-16 08:00 | 2026-09-16 17:00 | 96 |  | Javier — Compositor y diseñador musical |
| 98 | MR.3 — Analizar compases y patrones rítmicos apropiados para principiantes | 1d | 2026-09-16 08:00 | 2026-09-16 17:00 | 96 |  | Javier — Compositor y diseñador musical |
| 99 | MR.4 — Definir estilos musicales que utilizará el proyecto | 1d | 2026-09-17 08:00 | 2026-09-17 17:00 | 96, 97, 98 |  | Javier — Compositor y diseñador musical |
| 100 | MR.5 — Definir duración de las pistas musicales | 0.38d | 2026-09-18 08:00 | 2026-09-18 11:00 | 86, 99 |  | Javier — Compositor y diseñador musical |
| 107 | MB.2 — Definir momentos donde se utilizarán golpes suaves, medios o fuertes | 1.25d | 2026-09-24 09:00 | 2026-09-25 11:00 | 106 |  | Javier — Compositor y diseñador musical |
| 108 | MB.3 — Crear versiones de dificultad Tutorial, Fácil e Intermedio del patrón | 2.25d | 2026-09-24 09:00 | 2026-09-28 11:00 | 106 |  | Javier — Compositor y diseñador musical |
| 110 | MB.5 — Probar primer beatmap junto con el desarrollador | 0.62d | 2026-09-29 15:00 | 2026-09-30 11:00 | 45, 109 |  | Javier — Compositor y diseñador musical |
| 111 | MB.6 — Corregir patrones que resulten poco cómodos o confusos | 0.5d | 2026-09-30 16:00 | 2026-10-01 11:00 | 110 |  | Javier — Compositor y diseñador musical |
| 112 | MA.1 — Crear o seleccionar pistas adicionales | 2.88d | 2026-10-01 12:00 | 2026-10-06 11:00 | 111 | start no later than 2026-10-01 12:00 | Javier — Compositor y diseñador musical |
| 113 | MA.2 — Preparar pistas para modo libre | 1d | 2026-09-07 08:00 | 2026-09-07 17:00 |  |  | Javier — Compositor y diseñador musical |
| 114 | MN.1 — Normalizar formato, frecuencia de muestreo y volumen de todas las pistas | 1d | 2026-10-06 11:00 | 2026-10-07 11:00 | 112 |  | Javier — Compositor y diseñador musical |
| 115 | MN.2 — Documentar BPM, duración, compás y finalidad de cada pista | 0.25d | 2026-10-07 09:00 | 2026-10-07 11:00 | 114 |  | Javier — Compositor y diseñador musical |
| 118 | SP.2 — Investigar bancos de sonidos compatibles con la licencia del proyecto | 1d | 2026-09-07 11:00 | 2026-09-08 11:00 | 117 |  | Christian — Diseñador de audio |
| 126 | SE.2 — Eliminar ruidos innecesarios de las muestras | 1.25d | 2026-09-11 09:00 | 2026-09-14 11:00 | 124 |  | Christian — Diseñador de audio |
| 129 | SM.1 — Crear Audio Mixer dentro de Unity | 0d | 2026-09-15 11:00 | 2026-09-15 11:00 | 128 |  | Christian — Diseñador de audio |
| 130 | SM.2 — Separar canales de batería, música, ambiente e interfaz | 0.5d | 2026-09-15 16:00 | 2026-09-16 11:00 | 129 |  | Christian — Diseñador de audio |
| 135 | SU — Buscar y preparar sonidos para botones, aciertos y errores | 0d | 2026-09-08 11:00 | 2026-09-08 11:00 | 118 |  | Christian — Diseñador de audio |
| 136 | SA.1 — Buscar o producir sonidos ambientales para el escenario | 1.75d | 2026-09-14 14:00 | 2026-09-16 11:00 | 179 |  | Christian — Diseñador de audio |
| 137 | SA.2 — Integrar ambiente sonoro con escenario final | 0.5d | 2026-09-23 16:00 | 2026-09-24 11:00 | 136, 190 |  | Christian — Diseñador de audio |
| 138 | SC.1 — Crear controles independientes de volumen para música, batería y ambiente | 0d | 2026-09-22 11:00 | 2026-09-22 11:00 | 130, 151 |  | Christian — Diseñador de audio |
| 139 | SC.2 — Realizar mezcla general de audio | 0.88d | 2026-09-24 12:00 | 2026-09-25 11:00 | 137, 138, 133 | start no later than 2026-09-24 12:00 | Christian — Diseñador de audio |
| 146 | IW.4 — Crear wireframe del tutorial | 0.5d | 2026-09-18 16:00 | 2026-09-21 11:00 | 89, 142 |  | Sarai — Diseñador de interacción UX-XR |
| 148 | IW.6 — Crear wireframe de resultados | 0.5d | 2026-09-18 16:00 | 2026-09-21 11:00 | 142 |  | Sarai — Diseñador de interacción UX-XR |
| 149 | IS.1 — Crear interfaz para selección de canción y dificultad | 0.75d | 2026-09-21 14:00 | 2026-09-22 11:00 | 143 |  | Sarai — Diseñador de interacción UX-XR |
| 150 | IS.2 — Diseñar menú de configuración | 0.75d | 2026-09-21 14:00 | 2026-09-22 11:00 | 143 |  | Sarai — Diseñador de interacción UX-XR |
| 151 | IS.3 — Diseñar controles para volumen de música, batería y ambiente | 0d | 2026-09-22 11:00 | 2026-09-22 11:00 | 150 |  | Sarai — Diseñador de interacción UX-XR |
| 152 | IS.4 — Diseñar menú de pausa | 0d | 2026-09-21 14:00 | 2026-09-21 14:00 | 143 |  | Sarai — Diseñador de interacción UX-XR |
| 153 | IS.5 — Diseñar pantalla de confirmación para salir o reiniciar | 0.75d | 2026-09-21 14:00 | 2026-09-22 11:00 | 152 |  | Sarai — Diseñador de interacción UX-XR |
| 154 | IS.6 — Diseñar presentación de resultados finales | 1d | 2026-09-21 11:00 | 2026-09-22 11:00 | 148 |  | Sarai — Diseñador de interacción UX-XR |
| 155 | IE — Definir estilo visual general de la interfaz | 1d | 2026-09-11 11:00 | 2026-09-14 11:00 | 175 |  | Sarai — Diseñador de interacción UX-XR |
| 163 | II.1 — Importar recursos gráficos de Canva/Figma a Unity | 0.75d | 2026-09-21 14:00 | 2026-09-22 11:00 | 155, 144, 145, 146, 147 |  | Sarai — Diseñador de interacción UX-XR |
| 166 | II.4 — Implementar configuración de volumen | 0.75d | 2026-09-23 14:00 | 2026-09-24 11:00 | 138, 165 |  | Sarai — Diseñador de interacción UX-XR |
| 167 | II.5 — Implementar menú de pausa | 0.75d | 2026-09-23 14:00 | 2026-09-24 11:00 | 152, 165, 153 |  | Sarai — Diseñador de interacción UX-XR |
| 171 | IR.3 — Corregir problemas de navegación encontrados en pruebas | 1d | 2026-09-11 11:00 | 2026-09-14 11:00 | 229 |  | Sarai — Diseñador de interacción UX-XR |
| 173 | AE.1 — Investigar qué tipo de entorno puede favorecer la experiencia propuesta | 2d | 2026-09-14 08:00 | 2026-09-15 17:00 | 82 |  | Kimberly — Artista y modelador 3D |
| 174 | AE.2 — Comparar posibles ambientes: naturaleza, estudio musical, espacio minimalista y otros | 1d | 2026-09-07 08:00 | 2026-09-07 17:00 | 173 |  | Kimberly — Artista y modelador 3D |
| 175 | AE.3 — Definir dirección artística general del escenario | 1d | 2026-09-08 08:00 | 2026-09-08 17:00 | 174 |  | Kimberly — Artista y modelador 3D |
| 176 | AC.1 — Investigar teoría del color y su relación con la percepción emocional, concentración y confort visual dentro de entornos virtuales | 1d | 2026-09-10 08:00 | 2026-09-10 17:00 | 81 |  | Kimberly — Artista y modelador 3D |
| 177 | AC.2 — Definir paleta de colores y criterios para aplicarla en los modelos 3D y el entorno según la experiencia emocional propuesta | 0.38d | 2026-09-11 08:00 | 2026-09-11 11:00 | 175, 176, 83 |  | Kimberly — Artista y modelador 3D |
| 178 | AC.3 — Crear moodboard visual del escenario incorporando la dirección artística y la paleta de colores seleccionada | 1d | 2026-09-11 11:00 | 2026-09-14 11:00 | 175, 177 |  | Kimberly — Artista y modelador 3D |
| 179 | AA.1 — Crear lista de todos los assets 3D necesarios | 0d | 2026-09-14 11:00 | 2026-09-14 11:00 | 178 |  | Kimberly — Artista y modelador 3D |
| 180 | AA.2 — Definir límites de polígonos y rendimiento adecuados para VR | 0.75d | 2026-09-08 14:00 | 2026-09-09 11:00 | 6 |  | Kimberly — Artista y modelador 3D |
| 183 | AB.1 — Buscar modelo de batería adecuado | 1.75d | 2026-09-14 14:00 | 2026-09-16 11:00 | 179 |  | Kimberly — Artista y modelador 3D |
| 184 | AB.2 — Revisar licencia del modelo de batería | 0.25d | 2026-09-16 09:00 | 2026-09-16 11:00 | 183 |  | Kimberly — Artista y modelador 3D |
| 185 | AB.3 — Buscar o crear modelos definitivos de baquetas | 0.75d | 2026-09-14 14:00 | 2026-09-15 11:00 | 179 |  | Kimberly — Artista y modelador 3D |
| 186 | AB.4 — Optimizar modelo de batería para VR | 0d | 2026-09-16 13:00 | 2026-09-16 13:00 | 183, 184 |  | Kimberly — Artista y modelador 3D |
| 187 | AB.5 — Optimizar materiales y texturas de la batería considerando la paleta de colores establecida | 0.62d | 2026-09-16 15:00 | 2026-09-17 11:00 | 186, 177 |  | Kimberly — Artista y modelador 3D |
| 188 | AB.6 — Preparar batería definitiva para integración en Unity | 0.75d | 2026-09-17 10:00 | 2026-09-17 17:00 | 187 |  | Kimberly — Artista y modelador 3D |
| 190 | AP.2 — Determinar posición del jugador y batería dentro del escenario | 0.62d | 2026-09-22 15:00 | 2026-09-23 11:00 | 189, 86 |  | Kimberly — Artista y modelador 3D |
| 191 | AP.3 — Aplicar la paleta de colores seleccionada a modelos, materiales y elementos principales del escenario | 0.62d | 2026-09-22 15:00 | 2026-09-23 11:00 | 177, 189 |  | Kimberly — Artista y modelador 3D |
| 194 | AD.1 — Añadir elementos ambientales secundarios | 1d | 2026-09-25 11:00 | 2026-09-28 11:00 | 193 |  | Kimberly — Artista y modelador 3D |
| 195 | AD.2 — Reducir objetos que puedan distraer al usuario | 0d | 2026-09-28 09:00 | 2026-09-28 09:00 | 194 |  | Kimberly — Artista y modelador 3D |
| 197 | AO.1 — Optimizar texturas del escenario para VR | 0.25d | 2026-09-28 09:00 | 2026-09-28 11:00 | 194 |  | Kimberly — Artista y modelador 3D |
| 198 | AO.2 — Configurar LOD en objetos que lo requieran | 1.62d | 2026-09-28 15:00 | 2026-09-30 11:00 | 197 |  | Kimberly — Artista y modelador 3D |
| 199 | AO.3 — Revisar cantidad de luces en tiempo real | 0d | 2026-09-25 11:00 | 2026-09-25 11:00 | 193 |  | Kimberly — Artista y modelador 3D |
| 200 | AO.4 — Preparar iluminación horneada cuando sea conveniente | 0.62d | 2026-09-25 11:00 | 2026-09-25 17:00 | 199 |  | Kimberly — Artista y modelador 3D |
| 202 | AO.6 — Optimizar escenario hasta cumplir rendimiento esperado | 0.75d | 2026-10-01 14:00 | 2026-10-02 11:00 | 201 |  | Kimberly — Artista y modelador 3D |
| 203 | AR.1 — Revisar ambiente visual con el responsable de experiencia emocional para comprobar que colores, iluminación y escenario sean coherentes con la experiencia propuesta | 0d | 2026-09-25 11:00 | 2026-09-25 11:00 | 193, 89, 91 |  | Kimberly — Artista y modelador 3D |
| 204 | AR.2 — Realizar ajustes finales de ambientación | 0.25d | 2026-09-28 09:00 | 2026-09-28 11:00 | 203, 195 |  | Kimberly — Artista y modelador 3D |
| 223 | QT.2 — Crear plan de pruebas del juego de ritmo | 1d | 2026-09-16 08:00 | 2026-09-16 17:00 | 36, 220 |  | Diana — Analista de pruebas (QA) |
| 224 | QT.3 — Crear plan de pruebas de interfaz | 0d | 2026-09-18 11:00 | 2026-09-18 11:00 | 141, 220 |  | Diana — Analista de pruebas (QA) |
| 225 | QT.4 — Crear plan de pruebas de audio | 0.38d | 2026-09-16 08:00 | 2026-09-16 11:00 | 117, 220 |  | Diana — Analista de pruebas (QA) |
| 226 | QT.5 — Crear plan de pruebas de rendimiento VR | 1d | 2026-09-16 08:00 | 2026-09-16 17:00 | 178, 220 |  | Diana — Analista de pruebas (QA) |
| 244 | QD.1 — Crear documentación de arquitectura del software | 1.5d | 2026-09-30 16:00 | 2026-10-02 11:00 | 26, 74 |  | Diana — Redactor técnico |
| 245 | QD.2 — Crear diagrama del flujo general de la aplicación | 0.5d | 2026-09-18 16:00 | 2026-09-21 11:00 | 91, 142 |  | Diana — Redactor técnico |
| 246 | QD.3 — Documentar funcionamiento del sistema de detección de golpes | 0.75d | 2026-09-17 14:00 | 2026-09-18 11:00 | 26 |  | Diana — Redactor técnico |
| 247 | QD.4 — Documentar funcionamiento del juego de ritmo | 0.5d | 2026-09-30 16:00 | 2026-10-01 11:00 | 74 |  | Diana — Redactor técnico |
| 248 | QD.5 — Documentar sistema de intensidad de los golpes | 0d | 2026-09-21 11:00 | 2026-09-21 11:00 | 21, 132 |  | Diana — Redactor técnico |
| 249 | QD.6 — Documentar selección y fundamentación del entorno virtual | 0.75d | 2026-10-01 14:00 | 2026-10-02 11:00 | 201 |  | Diana — Redactor técnico |
| 250 | QD.7 — Documentar fundamentación de la música utilizada | 0.62d | 2026-10-07 15:00 | 2026-10-08 11:00 | 115 |  | Diana — Redactor técnico |
| 251 | QD.8 — Documentar diseño y funcionamiento de la interfaz | 0.5d | 2026-09-24 16:00 | 2026-09-25 11:00 | 170 |  | Diana — Redactor técnico |
| 254 | QF.1 — Preparar capturas de pantalla del proyecto | 0.38d | 2026-09-16 08:00 | 2026-09-16 11:00 | 234 |  | Diana — Redactor técnico |
| 255 | QF.2 — Grabar evidencia en video del funcionamiento | 0.38d | 2026-09-16 08:00 | 2026-09-16 11:00 | 234 |  | Diana — Redactor técnico |

Changed:

| ID | Task | Start | Finish | Duration | Complete | Predecessors | Other |
| --- | --- | --- | --- | --- | --- | --- | --- |
| 1 | **D. Desarrollo VR y batería** | 2026-09-12 08:00 → 2026-09-07 08:00 (-5d) | 2026-10-18 17:00 → 2026-09-18 17:00 (-30d) | 7.88d → 8.38d | 92% → 82% |  |  |
| 14 | DB.3 — Ajustar posición de agarre de cada baqueta en los controles VR |  |  |  |  | 9, 12 → 13 |  |
| 18 | DG.1 — Crear sistema general de detección de golpe entre baqueta y batería |  |  |  |  | 9, 12, 16 → 13, 17 |  |
| 29 | DG.9 — Ajustar sensibilidad de las colisiones de batería |  |  |  |  | 18 → 28 |  |
| 31 | DT.5 — Reconfigurar colliders utilizando el modelo definitivo | 2026-10-18 08:00 A → 2026-09-07 08:00 (-41d) | 2026-10-18 17:00 A → 2026-09-07 11:00 (-41d) | 0.5d → 0.38d | 100% → 0% | 34 → 30 | was named DM.1 — Exportar las métricas de sesión: precisión temporal y constancia; constraint start no earlier than 2026-10-18 08:00 → none; resources none → Misael — Desarrollador de realidad virtual |
| 32 | DT.6 — Ajustar posición y dimensiones de batería para una postura cómoda en VR |  |  |  |  | 82, 81, 83, 29, 87 → 31, 87 |  |
| 33 | DR.1 — Realizar primera prueba completa de interacción física de la batería |  |  |  |  | 32, 4, 10, 14, 23, 25, 27, 82, 81, 83 → 32, 4, 10, 14, 23, 25, 27, 185 |  |
| 35 | **J. Juego de ritmo** | 2026-10-17 08:00 → 2026-09-08 11:00 (-39d) |  | 9.38d → 14.88d | 100% → 43% |  |  |
| 43 | JB.1 — Crear prototipo de beatmap manual |  | 2026-10-17 08:00 A → 2026-10-17 17:00 A | 0.62d → 0d |  |  |  |
| 44 | JB.2 — Crear sistema que cargue un beatmap |  | 2026-10-17 08:00 A → 2026-10-17 17:00 A |  |  |  |  |
| 49 | JW.2 — Programar detección de golpes correctos |  |  |  |  | 48, 37 → 48, 42 |  |
| 53 | JP.1 — Crear sistema básico de puntuación |  |  |  |  | 49, 52 → 49, 50, 51, 52 |  |
| 95 | **M. Música** | 2026-10-17 08:00 → 2026-09-07 08:00 (-40d) |  | 9.62d → 19.75d | 100% → 7% |  |  |
| 103 | MP.1 — Crear o seleccionar primera pista musical de prueba |  |  |  |  | 82, 101, 86 → 99, 101, 100 |  |
| 106 | MB.1 — Crear patrón básico de batería para la primera pista |  |  | 1.38d → 1.75d |  |  |  |
| 109 | MB.4 — Convertir patrón rítmico en información utilizable para el beatmap |  |  | 0.62d → 0.88d |  | 106, 104 → 108, 104 |  |
| 116 | **S. Sonido** | 2026-09-15 08:00 → 2026-09-07 11:00 (-8d) |  | 10.38d → 11d | 100% → 3% |  |  |
| 119 | SB.1 — Buscar sonido de kick |  |  |  |  | 117 → 118 |  |
| 120 | SB.2 — Buscar sonido de snare |  |  |  |  | 117 → 118 |  |
| 121 | SB.3 — Buscar sonidos de toms |  |  |  |  | 117 → 118 |  |
| 122 | SB.4 — Buscar sonidos de hi-hat abierto y cerrado |  |  |  |  | 117 → 118 |  |
| 123 | SB.5 — Buscar sonidos de crash y ride |  |  |  |  | 117 → 118 |  |
| 128 | SE.4 — Exportar sonidos en formato apropiado para Unity |  |  |  |  | 127, 124 → 127, 126 |  |
| 140 | **I. Interfaz / UX/UI** | 2026-10-17 08:00 → 2026-09-11 11:00 (-36d) |  | 7.62d → 8.88d | 55% → 34% |  |  |
| 156 | IG.1 — Diseñar indicadores visuales de Perfect, Good y Miss |  |  |  |  | 82 → 155 |  |
| 157 | IG.2 — Diseñar representación definitiva de las notas del juego |  |  |  |  | 82, 46 → 155, 46 |  |
| 159 | IT.1 — Diseñar tutorial visual sobre cómo sujetar las baquetas |  |  |  |  | 9, 12 → 13 |  |
| 160 | IT.2 — Diseñar tutorial para explicar cómo seguir el ritmo |  |  | 0d → 0.5d |  |  |  |
| 164 | II.2 — Implementar menú principal dentro de Unity |  |  | 0.75d → 1d |  | 82, 144, 145, 89, 142, 147 → 163 |  |
| 168 | II.6 — Implementar pantalla de resultados |  |  | 1.5d → 1.25d |  | 53, 142, 55 → 56, 154 |  |
| 170 | IR.2 — Revisar tamaño, distancia y posición de paneles |  |  | 0d → 0.25d |  |  |  |
| 172 | **A. Entorno 3D y assets** | 2026-10-17 08:00 → 2026-09-07 08:00 (-40d) |  | 6.5d → 16.88d | 100% → 4% |  |  |
| 181 | AA.3 — Buscar assets de entorno compatibles con el estilo elegido |  |  | 2.38d → 2.75d |  | 82, 81, 83, 6 → 179, 180 |  |
| 189 | AP.1 — Crear primera composición del escenario en Unity |  |  | 1.38d → 1.88d |  |  |  |
| 192 | AL.1 — Configurar iluminación inicial considerando la paleta de colores establecida |  |  |  |  | 189, 82, 81, 83 → 189, 191 |  |
| 196 | AS — Crear límites visuales de seguridad del espacio de interacción |  |  |  |  | 189, 86 → 190 |  |
| 201 | AO.5 — Evaluar FPS del escenario en el visor objetivo |  |  | 1d → 1.12d |  | 193 → 200, 198 |  |
| 205 | **Q. QA, documentación y gestión** |  |  | 17d → 27.62d | 43% → 32% |  |  |
| 228 | QT.7 — Realizar pruebas del sistema de ritmo |  |  | 0d → 0.5d |  | 106, 53, 143, 91, 162, 41, 47, 57, 21, 49, 156, 117, 45, 36, 220 → 74, 223 |  |
| 233 | QE.5 — Verificar corrección de errores críticos |  |  | 0.38d → 0.62d |  | 232, 229 → 232, 73, 171 |  |
| 234 | QV.1 — Realizar prueba completa desde inicio hasta final de una sesión |  |  | 0.75d → 0.62d |  |  |  |
| 235 | QV.2 — Evaluar estabilidad y presencia de cierres inesperados |  |  | 0.12d → 0.38d |  |  |  |
| 236 | QV.3 — Medir FPS del proyecto en el visor objetivo |  |  |  |  | 193, 234 → 199, 234 |  |
| 237 | QV.4 — Evaluar latencia entre golpe físico, sonido y detección |  |  |  |  | 34, 134, 57 → 34, 134, 72 |  |
| 242 | QC.4 — Mantener registro de assets y sus licencias |  |  |  |  | 6 → 180 |  |
| 252 | QM.1 — Elaborar manual básico de usuario |  |  | 1.12d → 1.38d |  |  |  |
| 253 | QM.2 — Elaborar manual técnico de instalación y ejecución |  |  | 0.12d → 0.38d |  |  |  |
| 259 | QI.4 — Integrar todas las secciones del informe final |  |  |  |  | 93, 26, 106, 53, 143, 91, 162, 41, 47, 57, 21, 49, 156, 117, 45, 257, 258, 94, 216, 240, 142, 132, 201, 109, 170 → 93, 244, 257, 258, 94, 216, 240, 245, 246, 247, 248, 249, 250, 251 |  |
| 260 | QI.5 — Revisar redacción, ortografía, referencias y formato |  |  | 2.38d → 2.12d |  |  |  |
| 262 | QB.2 — Probar build final en el visor VR objetivo |  |  | 1d → 0.88d |  |  |  |
| 263 | QB.3 — Corregir errores críticos encontrados en build final |  |  | 0.12d → 0.38d |  |  |  |
| 265 | QX — Preparar presentación y demostración final del proyecto |  |  |  |  | 259, 264, 252, 253, 234, 260 → 259, 264, 252, 253, 254, 255, 260 |  |

## Version 14 (data date 2026-11-18, saved 2026-11-18, file Cronograma_ProjectLibre.xml)

Note of the change: docs: ET.2 y QB.1 cerradas, con la revision de la fundamentacion

Last finish 2026-11-20 → 2026-11-26 (+6d). Complete tasks 134 → 137.

Changed:

| ID | Task | Start | Finish | Complete | Other |
| --- | --- | --- | --- | --- | --- |
| 75 | **E. Experiencia emocional** |  | 2026-11-16 17:00 → 2026-11-18 17:00 (+2d) |  |  |
| 94 | ET.2 — Revisar y actualizar la fundamentación según el funcionamiento final del prototipo | 2026-11-16 08:00 → 2026-11-18 08:00 A (+2d) | 2026-11-16 17:00 → 2026-11-18 17:00 A (+2d) | 0% → 100% | constraint start no earlier than 2026-11-16 08:00 → start no earlier than 2026-11-18 08:00 |
| 140 | **I. Interfaz / UX/UI** |  | 2026-11-12 17:00 → 2026-11-18 17:00 (+6d) |  |  |
| 159 | IT.1 — Diseñar tutorial visual sobre cómo sujetar las baquetas | 2026-11-12 08:00 → 2026-11-18 08:00 (+6d) | 2026-11-12 17:00 → 2026-11-18 17:00 (+6d) |  | constraint start no earlier than 2026-11-12 08:00 → start no earlier than 2026-11-18 08:00 |
| 205 | **Q. QA, documentación y gestión** |  | 2026-11-20 17:00 → 2026-11-26 17:00 (+6d) |  |  |
| 229 | QT.8 — Realizar pruebas con usuarios del prototipo integrado | 2026-11-12 08:00 → 2026-11-18 08:00 (+6d) | 2026-11-13 17:00 → 2026-11-19 17:00 (+6d) |  | constraint start no earlier than 2026-11-12 08:00 → start no earlier than 2026-11-18 08:00 |
| 230 | QE.2 — Registrar errores, observaciones y sugerencias de usuarios | 2026-11-13 08:00 → 2026-11-19 08:00 (+6d) | 2026-11-13 17:00 → 2026-11-19 17:00 (+6d) |  | constraint start no earlier than 2026-11-13 08:00 → start no earlier than 2026-11-19 08:00 |
| 231 | QE.3 — Clasificar errores por gravedad y prioridad | 2026-11-16 08:00 → 2026-11-20 08:00 (+4d) | 2026-11-16 17:00 → 2026-11-20 17:00 (+4d) |  | constraint start no earlier than 2026-11-16 08:00 → start no earlier than 2026-11-20 08:00 |
| 232 | QE.4 — Asignar errores a las áreas correspondientes | 2026-11-16 08:00 → 2026-11-20 08:00 (+4d) | 2026-11-16 17:00 → 2026-11-20 17:00 (+4d) |  | constraint start no earlier than 2026-11-16 08:00 → start no earlier than 2026-11-20 08:00 |
| 233 | QE.5 — Verificar corrección de errores críticos | 2026-11-17 08:00 → 2026-11-23 08:00 (+6d) | 2026-11-17 17:00 → 2026-11-23 17:00 (+6d) |  | constraint start no earlier than 2026-11-17 08:00 → start no earlier than 2026-11-23 08:00 |
| 234 | QV.1 — Realizar prueba completa desde inicio hasta final de una sesión | 2026-11-18 08:00 → 2026-11-24 08:00 (+6d) | 2026-11-18 17:00 → 2026-11-24 17:00 (+6d) |  | constraint start no earlier than 2026-11-18 08:00 → start no earlier than 2026-11-24 08:00 |
| 235 | QV.2 — Evaluar estabilidad y presencia de cierres inesperados | 2026-11-18 08:00 → 2026-11-24 08:00 (+6d) | 2026-11-18 17:00 → 2026-11-24 17:00 (+6d) |  | constraint start no earlier than 2026-11-18 08:00 → start no earlier than 2026-11-24 08:00 |
| 238 | QV.5 — Evaluar comodidad de la experiencia VR | 2026-11-13 08:00 → 2026-11-19 08:00 (+6d) | 2026-11-13 17:00 → 2026-11-19 17:00 (+6d) |  | constraint start no earlier than 2026-11-13 08:00 → start no earlier than 2026-11-19 08:00 |
| 252 | QM.1 — Elaborar manual básico de usuario | 2026-11-19 08:00 → 2026-11-17 08:00 A (-2d) | 2026-11-20 17:00 → 2026-11-18 17:00 A (-2d) | 0% → 100% | constraint start no earlier than 2026-11-19 08:00 → start no earlier than 2026-11-17 08:00 |
| 253 | QM.2 — Elaborar manual técnico de instalación y ejecución | 2026-10-21 08:00 A → 2026-11-18 08:00 A (+28d) | 2026-10-21 17:00 A → 2026-11-18 17:00 A (+28d) |  | constraint start no earlier than 2026-10-21 08:00 → start no earlier than 2026-11-18 08:00 |
| 256 | QI.1 — Analizar resultados obtenidos durante las pruebas | 2026-11-13 08:00 → 2026-11-19 08:00 (+6d) | 2026-11-16 17:00 → 2026-11-20 17:00 (+4d) |  | constraint start no earlier than 2026-11-13 08:00 → start no earlier than 2026-11-19 08:00 |
| 257 | QI.2 — Redactar apartado de resultados del proyecto | 2026-11-16 08:00 → 2026-11-20 08:00 (+4d) | 2026-11-17 17:00 → 2026-11-23 17:00 (+6d) |  | constraint start no earlier than 2026-11-16 08:00 → start no earlier than 2026-11-20 08:00 |
| 258 | QI.3 — Redactar conclusiones y limitaciones | 2026-11-17 08:00 → 2026-11-23 08:00 (+6d) | 2026-11-17 17:00 → 2026-11-23 17:00 (+6d) |  | constraint start no earlier than 2026-11-17 08:00 → start no earlier than 2026-11-23 08:00 |
| 259 | QI.4 — Integrar todas las secciones del informe final | 2026-11-18 08:00 → 2026-11-24 08:00 (+6d) | 2026-11-19 17:00 → 2026-11-25 17:00 (+6d) |  | constraint start no earlier than 2026-11-18 08:00 → start no earlier than 2026-11-24 08:00 |
| 260 | QI.5 — Revisar redacción, ortografía, referencias y formato | 2026-11-19 08:00 → 2026-11-25 08:00 (+6d) | 2026-11-20 17:00 → 2026-11-26 17:00 (+6d) |  | constraint start no earlier than 2026-11-19 08:00 → start no earlier than 2026-11-25 08:00 |
| 261 | QB.1 — Generar build candidata a versión final | 2026-11-18 08:00 A | 2026-11-18 17:00 A | 0% → 100% |  |
| 262 | QB.2 — Probar build final en el visor VR objetivo | 2026-11-19 08:00 → 2026-11-18 08:00 (-1d) | 2026-11-19 17:00 → 2026-11-18 17:00 (-1d) |  | constraint start no earlier than 2026-11-19 08:00 → start no earlier than 2026-11-18 08:00 |
| 263 | QB.3 — Corregir errores críticos encontrados en build final | 2026-11-19 08:00 → 2026-11-18 08:00 (-1d) | 2026-11-19 17:00 → 2026-11-18 17:00 (-1d) |  | constraint start no earlier than 2026-11-19 08:00 → start no earlier than 2026-11-18 08:00 |
| 264 | QB.4 — Generar versión definitiva del videojuego | 2026-11-19 08:00 → 2026-11-18 08:00 (-1d) | 2026-11-19 17:00 → 2026-11-18 17:00 (-1d) |  | constraint start no earlier than 2026-11-19 08:00 → start no earlier than 2026-11-18 08:00 |
| 265 | QX — Preparar presentación y demostración final del proyecto | 2026-11-19 08:00 → 2026-11-25 08:00 (+6d) | 2026-11-20 17:00 → 2026-11-26 17:00 (+6d) |  | constraint start no earlier than 2026-11-19 08:00 → start no earlier than 2026-11-25 08:00 |

## Version 15 (data date 2026-11-18, saved 2026-11-18, file Cronograma_Operativo.xml)

Note of the change: docs: ET.2 y QB.1 cerradas, con la revision de la fundamentacion

Last finish stays 2026-11-26. Complete tasks 137 → 138.

Removed: 11 DO — Implementar sistema para agarrar y soltar objetos con los controles; 13 DB.2 — Configurar las baquetas como objetos interactuables; 17 DT.3 — Configurar colliders para cada componente de la batería; 28 DB.4 — Ajustar física de las baquetas para evitar vibraciones o movimientos extraños; 30 DT.4 — Incorporar modelo 3D definitivo de la batería; 42 JK — Crear sistema provisional de golpes utilizando teclado para desarrollar sin depender del VR; 50 JW.3 — Programar detección de golpes anticipados; 51 JW.4 — Programar detección de golpes atrasados; 54 JP.2 — Crear sistema de combo o golpes consecutivos; 56 JP.4 — Crear resumen de resultados al terminar una canción; 58 JI.2 — Sustituir controles provisionales de teclado por interacción VR; 59 JI.3 — Implementar detección de intensidad del golpe dentro del juego; 60 JI.4 — Diseñar mecánicas en las que determinados golpes requieran distinta intensidad; 61 JF.1 — Crear feedback visual inmediato de acierto o error; 62 JF.2 — Crear feedback auditivo para aciertos, errores e interacción; 63 JC.1 — Implementar cuenta regresiva antes de iniciar una canción; 64 JC.2 — Crear sistema de pausa y reanudación; 65 JC.3 — Crear sistema para reiniciar una actividad; 66 JC.4 — Crear sistema para abandonar una actividad y regresar al menú; 67 JL.1 — Crear diferentes niveles de dificultad; 68 JL.2 — Programar selección de dificultad antes de iniciar; 69 JM.1 — Crear modo libre sin puntuación ni notas obligatorias; 70 JM.2 — Permitir seleccionar música de fondo en modo libre; 71 JM.3 — Permitir tocar sin música en modo libre; 72 JY — Crear sistema de calibración de latencia entre golpe y música; 73 JW.6 — Ajustar ventanas de precisión después de pruebas de usuarios; 74 JI.5 — Integrar juego de ritmo completo con flujo general de la experiencia; 96 MR.1 — Investigar características musicales adecuadas para la experiencia planteada; 97 MR.2 — Analizar BPM utilizados en las referencias encontradas; 98 MR.3 — Analizar compases y patrones rítmicos apropiados para principiantes; 99 MR.4 — Definir estilos musicales que utilizará el proyecto; 100 MR.5 — Definir duración de las pistas musicales; 107 MB.2 — Definir momentos donde se utilizarán golpes suaves, medios o fuertes; 108 MB.3 — Crear versiones de dificultad Tutorial, Fácil e Intermedio del patrón; 110 MB.5 — Probar primer beatmap junto con el desarrollador; 111 MB.6 — Corregir patrones que resulten poco cómodos o confusos; 112 MA.1 — Crear o seleccionar pistas adicionales; 113 MA.2 — Preparar pistas para modo libre; 114 MN.1 — Normalizar formato, frecuencia de muestreo y volumen de todas las pistas; 115 MN.2 — Documentar BPM, duración, compás y finalidad de cada pista; 118 SP.2 — Investigar bancos de sonidos compatibles con la licencia del proyecto; 126 SE.2 — Eliminar ruidos innecesarios de las muestras; 129 SM.1 — Crear Audio Mixer dentro de Unity; 130 SM.2 — Separar canales de batería, música, ambiente e interfaz; 135 SU — Buscar y preparar sonidos para botones, aciertos y errores; 136 SA.1 — Buscar o producir sonidos ambientales para el escenario; 137 SA.2 — Integrar ambiente sonoro con escenario final; 138 SC.1 — Crear controles independientes de volumen para música, batería y ambiente; 139 SC.2 — Realizar mezcla general de audio; 146 IW.4 — Crear wireframe del tutorial; 148 IW.6 — Crear wireframe de resultados; 149 IS.1 — Crear interfaz para selección de canción y dificultad; 150 IS.2 — Diseñar menú de configuración; 151 IS.3 — Diseñar controles para volumen de música, batería y ambiente; 152 IS.4 — Diseñar menú de pausa; 153 IS.5 — Diseñar pantalla de confirmación para salir o reiniciar; 154 IS.6 — Diseñar presentación de resultados finales; 155 IE — Definir estilo visual general de la interfaz; 159 IT.1 — Diseñar tutorial visual sobre cómo sujetar las baquetas; 163 II.1 — Importar recursos gráficos de Canva/Figma a Unity; 166 II.4 — Implementar configuración de volumen; 167 II.5 — Implementar menú de pausa; 171 IR.3 — Corregir problemas de navegación encontrados en pruebas; 173 AE.1 — Investigar qué tipo de entorno puede favorecer la experiencia propuesta; 174 AE.2 — Comparar posibles ambientes: naturaleza, estudio musical, espacio minimalista y otros; 175 AE.3 — Definir dirección artística general del escenario; 176 AC.1 — Investigar teoría del color y su relación con la percepción emocional, concentración y confort visual dentro de entornos virtuales; 177 AC.2 — Definir paleta de colores y criterios para aplicarla en los modelos 3D y el entorno según la experiencia emocional propuesta; 178 AC.3 — Crear moodboard visual del escenario incorporando la dirección artística y la paleta de colores seleccionada; 179 AA.1 — Crear lista de todos los assets 3D necesarios; 180 AA.2 — Definir límites de polígonos y rendimiento adecuados para VR; 183 AB.1 — Buscar modelo de batería adecuado; 184 AB.2 — Revisar licencia del modelo de batería; 185 AB.3 — Buscar o crear modelos definitivos de baquetas; 186 AB.4 — Optimizar modelo de batería para VR; 187 AB.5 — Optimizar materiales y texturas de la batería considerando la paleta de colores establecida; 188 AB.6 — Preparar batería definitiva para integración en Unity; 190 AP.2 — Determinar posición del jugador y batería dentro del escenario; 191 AP.3 — Aplicar la paleta de colores seleccionada a modelos, materiales y elementos principales del escenario; 194 AD.1 — Añadir elementos ambientales secundarios; 195 AD.2 — Reducir objetos que puedan distraer al usuario; 197 AO.1 — Optimizar texturas del escenario para VR; 198 AO.2 — Configurar LOD en objetos que lo requieran; 199 AO.3 — Revisar cantidad de luces en tiempo real; 200 AO.4 — Preparar iluminación horneada cuando sea conveniente; 202 AO.6 — Optimizar escenario hasta cumplir rendimiento esperado; 203 AR.1 — Revisar ambiente visual con el responsable de experiencia emocional para comprobar que colores, iluminación y escenario sean coherentes con la experiencia propuesta; 204 AR.2 — Realizar ajustes finales de ambientación; 223 QT.2 — Crear plan de pruebas del juego de ritmo; 224 QT.3 — Crear plan de pruebas de interfaz; 225 QT.4 — Crear plan de pruebas de audio; 226 QT.5 — Crear plan de pruebas de rendimiento VR; 244 QD.1 — Crear documentación de arquitectura del software; 245 QD.2 — Crear diagrama del flujo general de la aplicación; 246 QD.3 — Documentar funcionamiento del sistema de detección de golpes; 247 QD.4 — Documentar funcionamiento del juego de ritmo; 248 QD.5 — Documentar sistema de intensidad de los golpes; 249 QD.6 — Documentar selección y fundamentación del entorno virtual; 250 QD.7 — Documentar fundamentación de la música utilizada; 251 QD.8 — Documentar diseño y funcionamiento de la interfaz; 254 QF.1 — Preparar capturas de pantalla del proyecto; 255 QF.2 — Grabar evidencia en video del funcionamiento

Changed:

| ID | Task | Start | Finish | Duration | Complete | Predecessors | Other |
| --- | --- | --- | --- | --- | --- | --- | --- |
| 1 | **D. Desarrollo VR y batería** | 2026-09-07 08:00 → 2026-09-12 08:00 (+5d) | 2026-09-18 17:00 → 2026-10-18 17:00 (+30d) | 8.38d → 7.88d | 82% → 92% |  |  |
| 12 | DB.3 — Ajustar posición de agarre de cada baqueta en los controles VR |  |  |  |  | DB.2 — Configurar las baquetas como objetos interactuables → 9, 11 |  |
| 15 | DG.1 — Crear sistema general de detección de golpe entre baqueta y batería |  |  |  |  | DB.2 — Configurar las baquetas como objetos interactuables, DT.3 — Configurar colliders para cada componente de la batería → 9, 11, 14 |  |
| 25 | DG.9 — Ajustar sensibilidad de las colisiones de batería |  |  |  |  | DB.4 — Ajustar física de las baquetas para evitar vibraciones o movimientos extraños → 15 |  |
| 26 | DT.6 — Ajustar posición y dimensiones de batería para una postura cómoda en VR |  |  |  |  | 29, 60 → 55, 54, 56, 25, 60 |  |
| 27 | DR.1 — Realizar primera prueba completa de interacción física de la batería |  |  |  |  | 26, 4, 10, 12, 20, 22, 24, AB.3 — Buscar o crear modelos definitivos de baquetas → 26, 4, 10, 12, 20, 22, 24, 55, 54, 56 |  |
| 29 | DM.1 — Exportar las métricas de sesión: precisión temporal y constancia | 2026-09-07 08:00 → 2026-10-18 08:00 A (+41d) | 2026-09-07 11:00 → 2026-10-18 17:00 A (+41d) | 0.38d → 0.5d | 0% → 100% | DT.4 — Incorporar modelo 3D definitivo de la batería → 28 | was named DT.5 — Reconfigurar colliders utilizando el modelo definitivo; constraint none → start no earlier than 2026-10-18 08:00; resources Misael — Desarrollador de realidad virtual → none |
| 30 | **J. Juego de ritmo** | 2026-09-08 11:00 → 2026-10-17 08:00 (+39d) |  | 14.88d → 9.38d | 43% → 100% |  |  |
| 37 | JB.1 — Crear prototipo de beatmap manual |  | 2026-10-17 17:00 A → 2026-10-17 08:00 A | 0d → 0.62d |  |  |  |
| 38 | JB.2 — Crear sistema que cargue un beatmap |  | 2026-10-17 17:00 A → 2026-10-17 08:00 A |  |  |  |  |
| 43 | JW.2 — Programar detección de golpes correctos |  |  |  |  | 42, JK — Crear sistema provisional de golpes utilizando teclado para desarrollar sin depender del VR → 42, 32 |  |
| 45 | JP.1 — Crear sistema básico de puntuación |  |  |  |  | 43, JW.3 — Programar detección de golpes anticipados, JW.4 — Programar detección de golpes atrasados, 44 → 43, 44 |  |
| 68 | **M. Música** | 2026-09-07 08:00 → 2026-10-17 08:00 (+40d) |  | 19.75d → 9.62d | 7% → 100% |  |  |
| 71 | MP.1 — Crear o seleccionar primera pista musical de prueba |  |  |  |  | MR.4 — Definir estilos musicales que utilizará el proyecto, 69, MR.5 — Definir duración de las pistas musicales → 55, 69, 59 |  |
| 74 | MB.1 — Crear patrón básico de batería para la primera pista |  |  | 1.75d → 1.38d |  |  |  |
| 75 | MB.4 — Convertir patrón rítmico en información utilizable para el beatmap |  |  | 0.88d → 0.62d |  | MB.3 — Crear versiones de dificultad Tutorial, Fácil e Intermedio del patrón, 72 → 74, 72 |  |
| 76 | **S. Sonido** | 2026-09-07 11:00 → 2026-09-15 08:00 (+8d) |  | 11d → 10.38d | 3% → 100% |  |  |
| 78 | SB.1 — Buscar sonido de kick |  |  |  |  | SP.2 — Investigar bancos de sonidos compatibles con la licencia del proyecto → 77 |  |
| 79 | SB.2 — Buscar sonido de snare |  |  |  |  | SP.2 — Investigar bancos de sonidos compatibles con la licencia del proyecto → 77 |  |
| 80 | SB.3 — Buscar sonidos de toms |  |  |  |  | SP.2 — Investigar bancos de sonidos compatibles con la licencia del proyecto → 77 |  |
| 81 | SB.4 — Buscar sonidos de hi-hat abierto y cerrado |  |  |  |  | SP.2 — Investigar bancos de sonidos compatibles con la licencia del proyecto → 77 |  |
| 82 | SB.5 — Buscar sonidos de crash y ride |  |  |  |  | SP.2 — Investigar bancos de sonidos compatibles con la licencia del proyecto → 77 |  |
| 86 | SE.4 — Exportar sonidos en formato apropiado para Unity |  |  |  |  | 85, SE.2 — Eliminar ruidos innecesarios de las muestras → 85, 83 |  |
| 91 | **I. Interfaz / UX/UI** | 2026-09-11 11:00 → 2026-10-17 08:00 (+36d) | 2026-11-18 17:00 → 2026-10-21 17:00 (-28d) | 8.88d → 7.62d | 34% → 55% |  |  |
| 98 | IG.1 — Diseñar indicadores visuales de Perfect, Good y Miss |  |  |  |  | IE — Definir estilo visual general de la interfaz → 55 |  |
| 99 | IG.2 — Diseñar representación definitiva de las notas del juego |  |  |  |  | IE — Definir estilo visual general de la interfaz, 40 → 55, 40 |  |
| 101 | IT.2 — Diseñar tutorial para explicar cómo seguir el ritmo |  |  | 0.5d → 0d |  |  |  |
| 103 | IT.4 — Implementar flujo del tutorial completo |  |  |  |  | IT.1 — Diseñar tutorial visual sobre cómo sujetar las baquetas, 102, 63 → 102, 63 |  |
| 104 | II.2 — Implementar menú principal dentro de Unity |  |  | 1d → 0.75d |  | II.1 — Importar recursos gráficos de Canva/Figma a Unity → 55, 95, 96, 62, 93, 97 |  |
| 106 | II.6 — Implementar pantalla de resultados |  |  | 1.25d → 1.5d |  | JP.4 — Crear resumen de resultados al terminar una canción, IS.6 — Diseñar presentación de resultados finales → 45, 93, 46 |  |
| 108 | IR.2 — Revisar tamaño, distancia y posición de paneles |  |  | 0.25d → 0d |  |  |  |
| 109 | **A. Entorno 3D y assets** | 2026-09-07 08:00 → 2026-10-17 08:00 (+40d) |  | 16.88d → 6.5d | 4% → 100% |  |  |
| 110 | AA.3 — Buscar assets de entorno compatibles con el estilo elegido |  |  | 2.75d → 2.38d |  | AA.1 — Crear lista de todos los assets 3D necesarios, AA.2 — Definir límites de polígonos y rendimiento adecuados para VR → 55, 54, 56, 6 |  |
| 112 | AP.1 — Crear primera composición del escenario en Unity |  |  | 1.88d → 1.38d |  |  |  |
| 113 | AL.1 — Configurar iluminación inicial considerando la paleta de colores establecida |  |  |  |  | 112, AP.3 — Aplicar la paleta de colores seleccionada a modelos, materiales y elementos principales del escenario → 112, 55, 54, 56 |  |
| 115 | AS — Crear límites visuales de seguridad del espacio de interacción |  |  |  |  | AP.2 — Determinar posición del jugador y batería dentro del escenario → 112, 59 |  |
| 116 | AO.5 — Evaluar FPS del escenario en el visor objetivo |  |  | 1.12d → 1d |  | AO.4 — Preparar iluminación horneada cuando sea conveniente, AO.2 — Configurar LOD en objetos que lo requieran → 114 |  |
| 117 | **Q. QA, documentación y gestión** |  |  | 27.62d → 17d | 32% → 43% |  |  |
| 136 | QT.7 — Realizar pruebas del sistema de ritmo |  |  | 0.5d → 0d |  | JI.5 — Integrar juego de ritmo completo con flujo general de la experiencia, QT.2 — Crear plan de pruebas del juego de ritmo → 74, 45, 94, 64, 103, 36, 41, 47, 18, 43, 98, 77, 39, 31, 132 |  |
| 141 | QE.5 — Verificar corrección de errores críticos |  |  | 0.62d → 0.38d |  | 140, JW.6 — Ajustar ventanas de precisión después de pruebas de usuarios, IR.3 — Corregir problemas de navegación encontrados en pruebas → 140, 137 |  |
| 142 | QV.1 — Realizar prueba completa desde inicio hasta final de una sesión |  |  | 0.62d → 0.75d |  |  |  |
| 143 | QV.2 — Evaluar estabilidad y presencia de cierres inesperados |  |  | 0.38d → 0.12d |  |  |  |
| 144 | QV.3 — Medir FPS del proyecto en el visor objetivo |  |  |  |  | AO.3 — Revisar cantidad de luces en tiempo real, 142 → 114, 142 |  |
| 145 | QV.4 — Evaluar latencia entre golpe físico, sonido y detección |  |  |  |  | 28, 90, JY — Crear sistema de calibración de latencia entre golpe y música → 28, 90, 47 |  |
| 150 | QC.4 — Mantener registro de assets y sus licencias |  |  |  |  | AA.2 — Definir límites de polígonos y rendimiento adecuados para VR → 6 |  |
| 152 | QM.1 — Elaborar manual básico de usuario |  |  | 1.38d → 1.12d |  |  |  |
| 153 | QM.2 — Elaborar manual técnico de instalación y ejecución |  |  | 0.38d → 0.12d |  |  |  |
| 157 | QI.4 — Integrar todas las secciones del informe final |  |  |  |  | 66, QD.1 — Crear documentación de arquitectura del software, 155, 156, 67, 128, 148, QD.2 — Crear diagrama del flujo general de la aplicación, QD.3 — Documentar funcionamiento del sistema de detección de golpes, QD.4 — Documentar funcionamiento del juego de ritmo, QD.5 — Documentar sistema de intensidad de los golpes, QD.6 — Documentar selección y fundamentación del entorno virtual, QD.7 — Documentar fundamentación de la música utilizada, QD.8 — Documentar diseño y funcionamiento de la interfaz → 66, 23, 74, 45, 94, 64, 103, 36, 41, 47, 18, 43, 98, 77, 39, 155, 156, 67, 128, 148, 93, 88, 116, 75, 108 |  |
| 158 | QI.5 — Revisar redacción, ortografía, referencias y formato |  |  | 2.12d → 2.38d |  |  |  |
| 160 | QB.2 — Probar build final en el visor VR objetivo |  |  | 0.88d → 1d |  |  |  |
| 161 | QB.3 — Corregir errores críticos encontrados en build final |  |  | 0.38d → 0.12d |  |  |  |
| 163 | QX — Preparar presentación y demostración final del proyecto |  |  |  |  | 157, 162, 152, 153, QF.1 — Preparar capturas de pantalla del proyecto, QF.2 — Grabar evidencia en video del funcionamiento, 158 → 157, 162, 152, 153, 142, 158 |  |
